# 协同办公时程评估

Schedule from MS Project, 2012-04-18 to 2012-06-05.
微软中国

## Calendars

- 标准: Mon-Fri 08:00-12:00, 13:00-17:00; Sat-Sun off.

## Resources

| Resource |
| --- |
| 甘志杰 |

## Schedule

| ID | WBS | Task | Duration | Start | Finish | Predecessors | Total slack | Free slack | Constraint |
| --- | --- | --- | --- | --- | --- | --- | --- | --- | --- |
| 1 | 1 | **招聘系统开发计划** | 35d? | 2012-04-18 08:00 | 2012-06-05 17:00 |  | 0d |  |  |
| 2 | 1.1 | **招聘系统初版开发** | 25.2d? | 2012-04-18 08:00 | 2012-05-23 09:36 |  | 0d |  |  |
| 3 | 1.1.1 | 详细设计 | 6d | 2012-04-18 08:00 | 2012-04-25 17:00 |  | 0d |  | start no earlier than 2012-04-18 08:00 |
| 4 | 1.1.2 | **招聘需求** | 2.4d | 2012-04-26 08:00 | 2012-04-30 11:12 | 3 | 0d |  |  |
| 5 | 1.1.2.1 | 编码 | 2d | 2012-04-26 08:00 | 2012-04-27 17:00 |  | 0d |  | finish no earlier than 2012-02-07 17:00 |
| 6 | 1.1.2.2 | 测试、排错 | 0.4d | 2012-04-30 08:00 | 2012-04-30 11:12 | 5 | 0d |  |  |
| 7 | 1.1.3 | **招聘设置-招聘负责人设定** | 1.2d | 2012-04-26 08:00 | 2012-04-27 09:36 | 3 | 4.8d | 0d |  |
| 8 | 1.1.3.1 | 编码 | 1d | 2012-04-26 08:00 | 2012-04-26 17:00 |  | 4.8d | 0d | finish no earlier than 2012-02-07 17:00 |
| 9 | 1.1.3.2 | 测试、排错 | 0.2d | 2012-04-27 08:00 | 2012-04-27 09:36 | 8 | 4.8d |  |  |
| 10 | 1.1.4 | **招聘设置-招聘渠道定义** | 1.2d | 2012-04-26 08:00 | 2012-04-27 09:36 | 3 | 1.2d | 0d |  |
| 11 | 1.1.4.1 | 编码 | 1d | 2012-04-26 08:00 | 2012-04-26 17:00 |  | 1.2d | 0d | finish no earlier than 2012-02-07 17:00 |
| 12 | 1.1.4.2 | 测试、排错 | 0.2d | 2012-04-27 08:00 | 2012-04-27 09:36 | 11 | 1.2d |  |  |
| 13 | 1.1.5 | **招聘需求汇总** | 2.4d | 2012-04-30 11:12 | 2012-05-02 15:24 | 4 | 0d |  |  |
| 14 | 1.1.5.1 | 编码 | 2d | 2012-04-30 11:12 | 2012-05-02 11:12 |  | 0d |  | finish no earlier than 2012-02-07 17:00 |
| 15 | 1.1.5.2 | 测试、排错 | 0.4d | 2012-05-02 11:12 | 2012-05-02 15:24 | 14 | 0d |  |  |
| 16 | 1.1.6 | **招聘计划-制定招聘计划** | 2.4d | 2012-04-27 09:36 | 2012-05-01 13:48 | 7 | 4.8d | 0d |  |
| 17 | 1.1.6.1 | 编码 | 2d | 2012-04-27 09:36 | 2012-05-01 09:36 |  | 4.8d | 0d | finish no earlier than 2012-02-07 17:00 |
| 18 | 1.1.6.2 | 测试、排错 | 0.4d | 2012-05-01 09:36 | 2012-05-01 13:48 | 17 | 4.8d |  |  |
| 19 | 1.1.7 | **面试人员简历** | 3.6d | 2012-04-27 09:36 | 2012-05-02 15:24 | 10 | 1.2d | 0d |  |
| 20 | 1.1.7.1 | 编码 | 3d | 2012-04-27 09:36 | 2012-05-02 09:36 |  | 1.2d | 0d | finish no earlier than 2012-02-07 17:00 |
| 21 | 1.1.7.2 | 测试、排错 | 0.6d | 2012-05-02 09:36 | 2012-05-02 15:24 | 20 | 1.2d |  |  |
| 22 | 1.1.8 | **招聘计划执行** | 2.4d | 2012-05-02 15:24 | 2012-05-07 09:36 | 13 | 0d |  |  |
| 23 | 1.1.8.1 | 编码 | 2d | 2012-05-02 15:24 | 2012-05-04 15:24 |  | 0d |  | finish no earlier than 2012-02-07 17:00 |
| 24 | 1.1.8.2 | 测试、排错 | 0.4d | 2012-05-04 15:24 | 2012-05-07 09:36 | 23 | 0d |  |  |

| ID | WBS | Task | Duration | Start | Finish | Predecessors | Total slack | Free slack | Constraint |
| --- | --- | --- | --- | --- | --- | --- | --- | --- | --- |
| 25 | 1.1.9 | **简历复选** | 1.2d? | 2012-05-01 13:48 | 2012-05-02 15:24 | 16 | 4.8d | 0d |  |
| 26 | 1.1.9.1 | 编码 | 1d? | 2012-05-01 13:48 | 2012-05-02 13:48 |  | 4.8d | 0d | finish no earlier than 2012-02-07 17:00 |
| 27 | 1.1.9.2 | 测试、排错 | 0.2d | 2012-05-02 13:48 | 2012-05-02 15:24 | 26 | 4.8d |  |  |
| 28 | 1.1.10 | **面试管理-电话初试** | 2.4d | 2012-05-02 15:24 | 2012-05-07 09:36 | 19 | 1.2d | 0d |  |
| 29 | 1.1.10.1 | 编码 | 2d | 2012-05-02 15:24 | 2012-05-04 15:24 |  | 1.2d | 0d | finish no earlier than 2012-02-07 17:00 |
| 30 | 1.1.10.2 | 测试、排错 | 0.4d | 2012-05-04 15:24 | 2012-05-07 09:36 | 29 | 1.2d |  |  |
| 31 | 1.1.11 | **招聘设置-人才类型设置** | 1.2d | 2012-05-07 09:36 | 2012-05-08 11:12 | 22 | 0d |  |  |
| 32 | 1.1.11.1 | 编码 | 1d | 2012-05-07 09:36 | 2012-05-08 09:36 |  | 0d |  | finish no earlier than 2012-02-07 17:00 |
| 33 | 1.1.11.2 | 测试、排错 | 0.2d | 2012-05-08 09:36 | 2012-05-08 11:12 | 32 | 0d |  |  |
| 34 | 1.1.12 | **招聘设置-通知模板编辑** | 2.4d | 2012-05-02 15:24 | 2012-05-07 09:36 | 25 | 4.8d | 0d |  |
| 35 | 1.1.12.1 | 编码 | 2d | 2012-05-02 15:24 | 2012-05-04 15:24 |  | 4.8d | 0d | finish no earlier than 2012-02-07 17:00 |
| 36 | 1.1.12.2 | 测试、排错 | 0.4d | 2012-05-04 15:24 | 2012-05-07 09:36 | 35 | 4.8d |  |  |
| 37 | 1.1.13 | **面试管理-面试安排** | 3.6d | 2012-05-07 09:36 | 2012-05-10 15:24 | 28 | 1.2d | 0d |  |
| 38 | 1.1.13.1 | 编码 | 3d | 2012-05-07 09:36 | 2012-05-10 09:36 |  | 1.2d | 0d | finish no earlier than 2012-02-07 17:00 |
| 39 | 1.1.13.2 | 测试、排错 | 0.6d | 2012-05-10 09:36 | 2012-05-10 15:24 | 38 | 1.2d |  |  |
| 40 | 1.1.14 | **前台接待** | 4.8d | 2012-05-08 11:12 | 2012-05-15 09:36 | 31 | 0d |  |  |
| 41 | 1.1.14.1 | 编码 | 4d | 2012-05-08 11:12 | 2012-05-14 11:12 |  | 0d |  | finish no earlier than 2012-02-07 17:00 |
| 42 | 1.1.14.2 | 测试、排错 | 0.8d | 2012-05-14 11:12 | 2012-05-15 09:36 | 41 | 0d |  |  |
| 43 | 1.1.15 | **面试管理-面试执行** | 3.6d | 2012-05-07 09:36 | 2012-05-10 15:24 | 34 | 4.8d | 0d |  |
| 44 | 1.1.15.1 | 编码 | 3d | 2012-05-07 09:36 | 2012-05-10 09:36 |  | 4.8d | 0d | finish no earlier than 2012-02-07 17:00 |
| 45 | 1.1.15.2 | 测试、排错 | 0.6d | 2012-05-10 09:36 | 2012-05-10 15:24 | 44 | 4.8d |  |  |
| 46 | 1.1.16 | **面试管理-拟录用** | 4.8d | 2012-05-10 15:24 | 2012-05-17 13:48 | 37 | 1.2d | 0d |  |
| 47 | 1.1.16.1 | 编码 | 4d | 2012-05-10 15:24 | 2012-05-16 15:24 |  | 1.2d | 0d | finish no earlier than 2012-02-07 17:00 |
| 48 | 1.1.16.2 | 测试、排错 | 0.8d | 2012-05-16 15:24 | 2012-05-17 13:48 | 47 | 1.2d |  |  |

| ID | WBS | Task | Duration | Start | Finish | Predecessors | Total slack | Free slack | Constraint |
| --- | --- | --- | --- | --- | --- | --- | --- | --- | --- |
| 49 | 1.1.17 | **面试管理-背景调查** | 2.4d | 2012-05-15 09:36 | 2012-05-17 13:48 | 40 | 0d |  |  |
| 50 | 1.1.17.1 | 编码 | 2d | 2012-05-15 09:36 | 2012-05-17 09:36 |  | 0d |  | finish no earlier than 2012-02-07 17:00 |
| 51 | 1.1.17.2 | 测试、排错 | 0.4d | 2012-05-17 09:36 | 2012-05-17 13:48 | 50 | 0d |  |  |
| 52 | 1.1.18 | **入职手续-背景调查问题设定** | 2.4d | 2012-05-10 15:24 | 2012-05-15 09:36 | 43 | 4.8d | 0d |  |
| 53 | 1.1.18.1 | 编码 | 2d | 2012-05-10 15:24 | 2012-05-14 15:24 |  | 4.8d | 0d | finish no earlier than 2012-02-07 17:00 |
| 54 | 1.1.18.2 | 测试、排错 | 0.4d | 2012-05-14 15:24 | 2012-05-15 09:36 | 53 | 4.8d |  |  |
| 55 | 1.1.19 | **入职手续-入职手续** | 1.2d? | 2012-05-17 13:48 | 2012-05-18 15:24 | 46 | 1.2d | 0d |  |
| 56 | 1.1.19.1 | 编码 | 1d? | 2012-05-17 13:48 | 2012-05-18 13:48 |  | 1.2d | 0d | finish no earlier than 2012-02-07 17:00 |
| 57 | 1.1.19.2 | 测试、排错 | 0.2d | 2012-05-18 13:48 | 2012-05-18 15:24 | 56 | 1.2d |  |  |
| 58 | 1.1.20 | **入职手续-体检明细表** | 1.2d? | 2012-05-17 13:48 | 2012-05-18 15:24 | 49 | 0d |  |  |
| 59 | 1.1.20.1 | 编码 | 1d? | 2012-05-17 13:48 | 2012-05-18 13:48 |  | 0d |  | finish no earlier than 2012-02-07 17:00 |
| 60 | 1.1.20.2 | 测试、排错 | 0.2d | 2012-05-18 13:48 | 2012-05-18 15:24 | 59 | 0d |  |  |
| 61 | 1.1.21 | **入职手续-离职证明** | 1.2d? | 2012-05-15 09:36 | 2012-05-16 11:12 | 52 | 4.8d |  |  |
| 62 | 1.1.21.1 | 编码 | 1d? | 2012-05-15 09:36 | 2012-05-16 09:36 |  | 4.8d | 0d | finish no earlier than 2012-02-07 17:00 |
| 63 | 1.1.21.2 | 测试、排错 | 0.2d | 2012-05-16 09:36 | 2012-05-16 11:12 | 62 | 4.8d |  |  |
| 64 | 1.1.22 | **入职手续-入职** | 1.2d | 2012-05-18 15:24 | 2012-05-21 17:00 | 55 | 1.2d |  |  |
| 65 | 1.1.22.1 | 编码 | 1d | 2012-05-18 15:24 | 2012-05-21 15:24 |  | 1.2d | 0d | finish no earlier than 2012-02-07 17:00 |
| 66 | 1.1.22.2 | 测试、排错 | 0.2d | 2012-05-21 15:24 | 2012-05-21 17:00 | 65 | 1.2d |  |  |
| 67 | 1.1.23 | **简历管理-面试简历统计** | 2.4d | 2012-05-18 15:24 | 2012-05-23 09:36 | 58 | 0d |  |  |
| 68 | 1.1.23.1 | 编码 | 2d | 2012-05-18 15:24 | 2012-05-22 15:24 |  | 0d |  | finish no earlier than 2012-02-07 17:00 |
| 69 | 1.1.23.2 | 测试、排错 | 0.4d | 2012-05-22 15:24 | 2012-05-23 09:36 | 68 | 0d |  |  |
| 70 | 1.2 | 招聘系统反馈修改 | 9.8d | 2012-05-23 09:36 | 2012-06-05 17:00 | 2 | 0d |  |  |
| 71 | 1.3 | 招聘系统文档 | 10d | 2012-04-26 08:00 | 2012-05-09 17:00 | 3 | 19d |  |  |
