# RM项目1.0

Schedule from MS Project, 2010-04-27 to 2012-07-03, status date 2012-06-29, A marks actual dates.

## Calendars

- 标准: Mon-Fri 09:00-12:00, 13:00-18:00; Sat-Sun off. Exceptions (off unless hours are given): 2011-10-03 to 2011-10-07, 2011-10-08 to 2011-10-09 08:00-12:00, 13:00-17:00, 2012-05-12 08:00-12:00, 13:00-17:00, 2012-05-19 08:00-12:00, 13:00-17:00, 2012-05-26 to 2012-05-27 08:00-12:00, 13:00-17:00, 2012-06-02 08:00-12:00, 13:00-17:00, 2012-06-09 08:00-12:00, 13:00-17:00, 2012-06-16 08:00-12:00, 13:00-17:00.

## Resources

| Resource |
| --- |
| 李国艺 |
| 戴金平 |
| 甘志杰 |
| 梁朋 |
| 黄新龙 |
| 潘总 |
| 江岱伟 |
| 小唐 |
| 傅意成 |
| 小邱 |
| 小陆 |
| 小赵 |
| 王军武 |
| 测试组 |
| 项目经理 |

## Schedule

| ID | WBS | Task | Type | Duration | Start | Finish | Predecessors | Complete | Remaining | Total slack | Constraint | Resources | Work | Actual work | 配置项名称 | 项目标题 | 任务 | 交付件名称 | 是否工作包 | 新产品可裁剪 | 产品升级可裁剪 | 评审人员 | 评审方式 |
| --- | --- | --- | --- | --- | --- | --- | --- | --- | --- | --- | --- | --- | --- | --- | --- | --- | --- | --- | --- | --- | --- | --- | --- |
| 1 | 1 | **立项** |  | 9.5d | 2012-01-01 08:00 A | 2012-01-13 14:00 A |  | 100% |  |  |  |  | 84h | 84h | RM项目1.0- | RM项目1.0 | 1-立项 |  |  |  |  |  |  |
| 2 | 1.1 | 制定产品概念阶段进度计划 |  | 0.5d | 2012-01-02 08:00 A | 2012-01-02 14:00 A |  | 100% |  |  |  | 李国艺 | 4h | 4h | RM项目1.0-项目综合表 | RM项目1.0 | 2-制定产品概念阶段进度计划 | 项目综合表 | ܁@ | ܁Y | ܁[ |  |  |
| 3 | 1.2 | 市场可行性分析 | milestone | 0d | 2012-01-01 08:00 A | 2012-01-01 08:00 A |  | 100% |  |  | start no earlier than 2011-08-26 08:00 |  |  |  | RM项目1.0-市场可行性分析报告 | RM项目1.0 | 3-市场可行性分析 | 市场可行性分析报告 | ܁@ | ܁Z | ܁\ | 系统针对集团协同办公平台，不针对外部市场客户 |  |
| 4 | 1.3 | 技术可行性分析 |  | 0.5d | 2012-01-02 08:00 A | 2012-01-02 14:00 A |  | 100% |  |  | finish no earlier than 2012-01-03 17:00 | 戴金平 | 4h | 4h | RM项目1.0-技术可行性分析报告 | RM项目1.0 | 4-技术可行性分析 | 技术可行性分析报告 | ܁@ | ܁Y | ܁\ |  |  |
| 5 | 1.4 | 用户需求调研 |  | 3d | 2012-01-02 09:00 A | 2012-01-04 18:00 A | 3 | 100% |  |  | start no earlier than 2012-01-02 08:00 | 甘志杰 | 24h | 24h | RM项目1.0- | RM项目1.0 | 5-用户需求调研 |  |  |  |  |  |  |
| 6 | 1.5 | 用户需求分析 |  | 2d | 2012-01-04 08:00 A | 2012-01-06 17:00 A |  | 100% |  |  | finish no earlier than 2012-01-06 17:00 | 甘志杰 [150%] | 24h | 24h | RM项目1.0-客户需求分析表，用户故事列表 | RM项目1.0 | 6-用户需求分析 | 客户需求分析表，用户故事列表 | ܁@ |  |  | 不要求 |  |
| 7 | 1.6 | 用户需求确认 | milestone | 0d | 2012-01-09 08:00 A | 2012-01-09 08:00 A |  | 100% |  |  | start no earlier than 2011-08-29 08:00 | 甘志杰 |  |  | RM项目1.0-需求确认报告 | RM项目1.0 | 7-用户需求确认 | 需求确认报告 | ܁@ |  |  | 集团内部项目，了解需求的同时也相当于确认了 |  |
| 8 | 1.7 | 项目立项报告 |  | 0.5d | 2012-01-09 08:00 A | 2012-01-09 14:00 A |  | 100% |  |  | start no earlier than 2010-07-08 08:00 | 李国艺 | 4h | 4h | RM项目1.0-项目立项报告 | RM项目1.0 | 8-项目立项报告 | 项目立项报告 | ܁@ | ܁Y | ܁[ |  |  |
| 9 | 1.8 | 项目立项评审 |  | 0.5d | 2012-01-10 08:00 A | 2012-01-10 14:00 A |  | 100% |  |  | start no earlier than 2010-07-09 08:00 | 李国艺 | 4h | 4h | RM项目1.0- | RM项目1.0 | 9-项目立项评审 |  |  | ܁Y | ܁[ |  | ܁j |
| 10 | 1.9 | 项目启动会 | milestone | 0d | 2012-01-10 08:00 A | 2012-01-10 08:00 A |  | 100% |  |  | start no earlier than 2011-09-01 08:00 | 李国艺 |  |  | RM项目1.0-项目启动会议纪要 | RM项目1.0 | 10-项目启动会 | 项目启动会议纪要 | ܁@ | ܁Y | ܁\ | 单独沟通 |  |
| 11 | 1.10 | 项目策划 |  | 1d | 2012-01-11 08:00 A | 2012-01-11 18:00 A |  | 100% |  |  | finish no earlier than 2012-01-11 17:00 | 李国艺 | 8h | 8h | RM项目1.0-项目策划书 | RM项目1.0 | 11-项目策划 | 项目策划书 | ܁@ |  |  |  |  |
| 12 | 1.11 | 项目策划评审 |  | 0.5d | 2012-01-12 08:00 A | 2012-01-12 14:00 A | 11 | 100% |  |  |  | 李国艺 | 4h | 4h | RM项目1.0-评审报告 | RM项目1.0 | 12-项目策划评审 | 评审报告 | ܁@ |  |  | 现在已经是开发阶段 | ܁i |
| 13 | 1.12 | 立项阶段报告编制 |  | 0.5d | 2012-01-12 08:00 A | 2012-01-12 14:00 A |  | 100% |  |  | finish no earlier than 2010-07-16 17:00 | 李国艺 | 4h | 4h | RM项目1.0-迭代总结报告 | RM项目1.0 | 13-立项阶段报告编制 | 迭代总结报告 | ܁@ | ܁Y | ܁[ | 现在已经是开发阶段 |  |
| 14 | 1.13 | 立项阶段评审 |  | 0.5d | 2012-01-13 08:00 A | 2012-01-13 14:00 A |  | 100% |  |  | start no earlier than 2011-09-06 08:00 | 李国艺 | 4h | 4h | RM项目1.0- | RM项目1.0 | 14-立项阶段评审 |  |  | ܁Y | ܁[ | 现在已经是开发阶段 | ܁j |
| 15 | 2 | **供应商选择** |  | 88d? | 2012-01-02 09:00 A | 2012-05-02 18:00 |  | 82% | 16d? | 51d |  |  | 24h |  | RM项目1.0- | RM项目1.0 | 15-供应商选择 |  |  |  |  |  |  |
| 16 | 2.1 | 项目发包规划 |  | 1d? | 2012-01-02 09:00 A | 2012-01-02 18:00 A |  | 100% |  |  |  |  |  |  | RM项目1.0-系统开发招标文档 | RM项目1.0 | 16-项目发包规划 | 系统开发招标文档 |  |  |  |  |  |
| 17 | 2.2 | 寻找供应商 |  | 1d? | 2012-01-02 09:00 A | 2012-01-02 18:00 A |  | 100% |  |  |  |  |  |  | RM项目1.0- | RM项目1.0 | 17-寻找供应商 |  |  |  |  |  |  |
| 18 | 2.3 | 评估供应商 |  | 1d? | 2012-01-02 09:00 A | 2012-01-02 18:00 A |  | 100% |  |  |  |  |  |  | RM项目1.0- | RM项目1.0 | 18-评估供应商 |  |  |  |  |  |  |
| 19 | 2.4 | 初步需求沟通 |  | 1d? | 2012-01-02 09:00 A | 2012-01-02 18:00 A |  | 100% |  |  |  |  |  |  | RM项目1.0- | RM项目1.0 | 19-初步需求沟通 |  |  |  |  |  |  |
| 20 | 2.5 | 供应商系统DEMO演示 |  | 1d? | 2012-01-02 09:00 A | 2012-01-02 18:00 A |  | 100% |  |  |  |  |  |  | RM项目1.0- | RM项目1.0 | 20-供应商系统DEMO演示 |  |  |  |  |  |  |
| 21 | 2.6 | 供应商系统DEMO评审 |  | 1d? | 2012-01-02 09:00 A | 2012-01-02 18:00 A |  | 100% |  |  |  |  |  |  | RM项目1.0- | RM项目1.0 | 21-供应商系统DEMO评审 |  |  |  |  |  |  |
| 22 | 2.7 | 商务谈判 |  | 1d? | 2012-01-02 09:00 A | 2012-01-02 18:00 A |  | 100% |  |  |  |  |  |  | RM项目1.0-项目报价方案 | RM项目1.0 | 22-商务谈判 | 项目报价方案 |  |  |  |  |  |
| 23 | 2.8 | 编写外包合同 |  | 1d? | 2012-01-02 09:00 A | 2012-01-02 18:00 A |  | 100% |  |  |  |  |  |  | RM项目1.0-外包开发合同 | RM项目1.0 | 23-编写外包合同 | 外包开发合同 |  |  |  |  |  |
| 24 | 2.9 | 外包合同评审 |  | 1d? | 2012-01-02 09:00 | 2012-01-02 18:00 |  |  |  | 138d |  | 甘志杰 | 8h |  | RM项目1.0- | RM项目1.0 | 24-外包合同评审 |  |  |  |  |  |  |
| 25 | 2.10 | 外包合同签订 |  | 1d? | 2012-05-02 09:00 | 2012-05-02 18:00 |  |  |  | 51d | start no earlier than 2012-05-02 08:00 | 甘志杰; 潘总 | 16h |  | RM项目1.0- | RM项目1.0 | 25-外包合同签订 |  |  |  |  |  |  |
| 26 | 2.11 | 项目预付款 |  | 1d? | 2012-05-02 09:00 A | 2012-05-02 18:00 A |  | 100% |  |  | start no earlier than 2012-05-02 08:00 |  |  |  | RM项目1.0- | RM项目1.0 | 26-项目预付款 |  |  |  |  |  |  |

| ID | WBS | Task | Type | Duration | Start | Finish | Predecessors | Complete | Remaining | Total slack | Free slack | Constraint | Resources | Work | Actual work | 配置项名称 | 项目标题 | 任务 | 交付件名称 | 是否工作包 | 新产品可裁剪 | 产品升级可裁剪 | 评审人员 | 评审方式 |
| --- | --- | --- | --- | --- | --- | --- | --- | --- | --- | --- | --- | --- | --- | --- | --- | --- | --- | --- | --- | --- | --- | --- | --- | --- |
| 27 | 3 | **迭代开发** |  | 58d? | 2012-04-20 08:00 A | 2012-06-29 18:00 |  | 40% | 34.62d? | 2d |  |  |  | 3164h | 1889h | RM项目1.0- | RM项目1.0 | 27-迭代开发 |  |  |  |  |  |  |
| 28 | 3.1 | **第1迭代** |  | 44d? | 2012-04-20 08:00 A | 2012-06-12 18:00 |  | 46% | 23.88d? | 16d |  |  |  | 1455.48h | 1072.3h | RM项目1.0- | RM项目1.0 | 28-第1迭代 |  |  |  |  |  |  |
| 29 | 3.1.1 | **项目管理** |  | 32.5d | 2012-04-24 08:00 A | 2012-06-01 14:00 |  |  | 32.35d | 25.5d |  |  |  | 70.5h | 4h | RM项目1.0- | RM项目1.0 | 29-项目管理 |  |  |  |  |  |  |
| 30 | 3.1.1.1 | 迭代计划制定（迭代的裁剪、估算、计划、评审、配置） |  | 0.5d | 2012-04-24 08:00 A | 2012-04-24 14:00 A |  | 100% |  |  |  | start no earlier than 2011-09-07 08:00 | 李国艺 | 4h | 4h | RM项目1.0-项目综合表 | RM项目1.0 | 30-迭代计划制定（迭代的裁剪、估算、计划、评审、配置） | 项目综合表 | ܁@ |  |  |  |  |
| 31 | 3.1.1.2 | **监控** |  | 30.88d | 2012-04-25 09:00 | 2012-05-31 17:00 |  |  |  | 26.12d |  |  |  | 34.5h |  | RM项目1.0- | RM项目1.0 | 31-监控 |  |  |  |  |  |  |
| 32 | 3.1.1.2.1 | 周例会（完成功能确认） |  | 21d | 2012-05-08 17:00 | 2012-05-31 17:00 |  |  |  | 26.12d |  | finish no earlier than 2012-05-31 17:00 | 李国艺 [1.5%] | 2.5h |  | RM项目1.0-会议纪要 | RM项目1.0 | 32-周例会（完成功能确认） | 会议纪要 | ܁@ | ܁Y | ܁[ |  |  |
| 33 | 3.1.1.2.2 | 项目周报编制 |  | 21d | 2012-05-08 17:00 | 2012-05-31 17:00 |  |  |  | 26.12d |  | finish no earlier than 2012-05-31 17:00 | 李国艺 [1.2%] | 2h |  | RM项目1.0-项目周报 | RM项目1.0 | 33-项目周报编制 | 项目周报 | ܁@ | ܁Y | ܁[ |  |  |
| 34 | 3.1.1.2.3 | 偏差、风险、问题识别与跟踪 |  | 30d | 2012-04-25 09:00 | 2012-05-30 18:00 |  |  |  | 27d |  | start no earlier than 2012-04-25 08:00 | 李国艺 [10%] | 24h |  | RM项目1.0-项目周报 | RM项目1.0 | 34-偏差、风险、问题识别与跟踪 | 项目周报 | ܁@ | ܁Y | ܁[ |  |  |
| 35 | 3.1.1.2.4 | 项目月报的编制 |  | 0.25d | 2012-05-31 15:00 | 2012-05-31 17:00 |  |  |  | 26.12d |  | finish no earlier than 2012-05-31 17:00 | 李国艺 | 2h |  | RM项目1.0-项目月报 | RM项目1.0 | 35-项目月报的编制 | 项目月报 | ܁@ | ܁Y | ܁[ | 迭代总结报告代替 |  |
| 36 | 3.1.1.2.5 | 变更管理 |  | 25d | 2012-05-02 09:00 | 2012-05-30 18:00 |  |  |  | 27d |  | start no earlier than 2012-05-02 08:00 | 李国艺 [2%] | 4h |  | RM项目1.0-变更控制表 | RM项目1.0 | 36-变更管理 | 变更控制表 | ܁@ | ܁Y | ܁[ |  |  |
| 37 | 3.1.1.3 | 外部接口协调 |  | 7.88d | 2012-05-02 09:00 | 2012-05-11 17:00 |  |  |  | 43.62d | 17.5d | finish no earlier than 2012-05-11 17:00 | 李国艺 [6.1%]; 傅意成 [38%] | 24h |  | RM项目1.0- | RM项目1.0 | 37-外部接口协调 |  |  |  |  |  |  |
| 38 | 3.1.1.4 | **迭代总结** |  | 1.12d | 2012-05-31 13:00 | 2012-06-01 14:00 | 37 |  |  | 25.5d |  |  |  | 8h |  | RM项目1.0- | RM项目1.0 | 38-迭代总结 |  |  |  |  |  |  |
| 39 | 3.1.1.4.1 | 迭代1总结编制 |  | 0.5d | 2012-05-31 13:00 | 2012-05-31 17:00 |  |  |  | 26.12d |  | finish no earlier than 2012-05-31 17:00 | 李国艺 | 4h |  | RM项目1.0-迭代总结 | RM项目1.0 | 39-迭代1总结编制 | 迭代总结 | ܁@ |  |  |  |  |
| 40 | 3.1.1.4.2 | 迭代1总结评审 |  | 0.5d | 2012-06-01 09:00 | 2012-06-01 14:00 |  |  |  | 25.5d |  | start no earlier than 2012-06-01 08:00 | 李国艺 | 4h |  | RM项目1.0-评审报告 | RM项目1.0 | 40-迭代1总结评审 | 评审报告 |  |  |  |  | ܁j |
| 41 | 3.1.2 | **概要设计** |  | 2.75d | 2012-04-23 08:00 A | 2012-04-25 16:01 |  |  | 2.75d | 56.25d |  |  |  | 8h |  | RM项目1.0- | RM项目1.0 | 41-概要设计 |  |  |  |  |  |  |
| 42 | 3.1.2.1 | 设计（确认） |  | 0.25d | 2012-04-23 08:00 A | 2012-04-24 17:00 |  |  | 0.25d | 56.25d | 0d | finish no earlier than 2012-04-24 17:00 | 李国艺; 戴金平 | 4h |  | RM项目1.0-软件设计说明书 | RM项目1.0 | 42-设计（确认） | 软件设计说明书 | ܁@ |  |  |  |  |
| 43 | 3.1.2.2 | 评审 |  | 0.88d | 2012-04-24 08:00 A | 2012-04-25 16:01 | 42 |  | 0.88d | 56.25d |  | finish no earlier than 2012-04-24 17:00 | 李国艺 [57%] | 4h |  | RM项目1.0-评审报告 | RM项目1.0 | 43-评审 | 评审报告 |  |  |  | 此阶段已过 | ܁i |
| 44 | 3.1.3 | **业务需求** |  | 44d? | 2012-04-20 08:00 A | 2012-06-12 18:00 |  | 72% | 12.21d? | 16d |  |  |  | 1376.98h | 1068.3h | RM项目1.0- | RM项目1.0 | 44-业务需求 |  |  |  |  |  |  |
| 45 | 3.1.3.1 | 用户故事拆分（确认） |  | 0.5d | 2012-04-20 08:00 A | 2012-04-20 14:00 A |  | 100% |  |  |  | finish no earlier than 2012-01-06 17:00 | 黄新龙 | 4h | 4h | RM项目1.0- | RM项目1.0 | 45-用户故事拆分（确认） |  |  |  |  |  |  |
| 46 | 3.1.3.2 | 用户故事编写（确认） |  | 1d | 2012-04-24 08:00 A | 2012-04-24 18:00 A | 45 | 100% |  |  |  | finish no earlier than 2012-04-23 17:00 | 黄新龙 [150%] | 12h | 12h | RM项目1.0-用户故事 | RM项目1.0 | 46-用户故事编写（确认） | 用户故事 | ܁@ |  |  |  |  |
| 47 | 3.1.3.3 | 用户故事评审（确认） | milestone | 0.38d | 2012-04-26 08:00 A | 2012-04-26 12:00 A | 46 | 100% |  |  |  |  | 李国艺 | 3h | 3h | RM项目1.0-评审报告 | RM项目1.0 | 47-用户故事评审（确认） | 评审报告 |  |  |  |  | ܁i |
| 48 | 3.1.3.4 | 第一期详细设计 |  | 3d | 2012-05-02 09:00 A | 2012-05-04 18:00 |  | 10% | 2.7d | 49d |  | start no earlier than 2012-05-02 08:30 | 江岱伟 | 24h | 2.4h | RM项目1.0- | RM项目1.0 | 48-第一期详细设计 |  |  |  |  |  |  |
| 49 | 3.1.3.5 | **招聘需求** |  | 7d | 2012-05-14 09:00 A | 2012-05-21 18:00 A |  | 100% |  |  |  |  |  | 56h | 56h | RM项目1.0- | RM项目1.0 | 49-招聘需求 |  |  |  |  |  |  |
| 50 | 3.1.3.5.1 | 编码 |  | 5d | 2012-05-14 09:00 A | 2012-05-18 18:00 A |  | 100% |  |  |  | start no earlier than 2012-05-14 08:00 | 小邱 | 40h | 40h | RM项目1.0- | RM项目1.0 | 50-编码 |  |  |  |  |  |  |
| 51 | 3.1.3.5.2 | 测试 |  | 2d | 2012-05-19 08:00 A | 2012-05-21 18:00 A |  | 100% |  |  |  | start no earlier than 2012-05-19 08:00 | 小唐 | 16h | 16h | RM项目1.0- | RM项目1.0 | 51-测试 |  |  |  |  |  |  |
| 52 | 3.1.3.5.3 | 走查 | milestone | 0d | 2012-05-21 18:00 A | 2012-05-21 18:00 A | 51 | 100% |  |  |  |  | 傅意成 |  |  | RM项目1.0- | RM项目1.0 | 52-走查 |  |  |  |  |  |  |

Notes:
- 32: 0.5 * 周会次数
- 36: 0.5 * 预计变更次数
- 37: 0.5 * 协调次数
- 52: 代码是否符合规范。 / 代码设计是否合理

| ID | WBS | Task | Type | Duration | Start | Finish | Predecessors | Complete | Constraint | Resources | Work | Actual work | 配置项名称 | 项目标题 | 任务 | 是否工作包 |
| --- | --- | --- | --- | --- | --- | --- | --- | --- | --- | --- | --- | --- | --- | --- | --- | --- |
| 53 | 3.1.3.6 | **招聘设置-招聘负责人设定** |  | 7d | 2012-05-14 09:00 A | 2012-05-21 18:00 A |  | 100% |  |  | 56h | 56h | RM项目1.0- | RM项目1.0 | 53-招聘设置-招聘负责人设定 |  |
| 54 | 3.1.3.6.1 | 编码 |  | 5d | 2012-05-14 09:00 A | 2012-05-18 18:00 A |  | 100% | start no earlier than 2012-05-14 08:00 | 江岱伟 | 40h | 40h | RM项目1.0- | RM项目1.0 | 54-编码 |  |
| 55 | 3.1.3.6.2 | 测试 |  | 2d | 2012-05-19 08:00 A | 2012-05-21 18:00 A |  | 100% | start no earlier than 2012-05-19 08:00 | 小唐 | 16h | 16h | RM项目1.0- | RM项目1.0 | 55-测试 |  |
| 56 | 3.1.3.6.3 | 走查 | milestone | 0d | 2012-05-16 08:00 A | 2012-05-16 08:00 A |  | 100% | start no earlier than 2012-05-16 08:00 | 傅意成 |  |  | RM项目1.0- | RM项目1.0 | 56-走查 |  |
| 57 | 3.1.3.7 | **招聘设置-招聘渠道定义** |  | 7d | 2012-05-16 09:00 A | 2012-05-23 18:00 A |  | 100% |  |  | 56h | 56h | RM项目1.0- | RM项目1.0 | 57-招聘设置-招聘渠道定义 |  |
| 58 | 3.1.3.7.1 | 编码 |  | 5d | 2012-05-16 09:00 A | 2012-05-21 18:00 A |  | 100% | start no earlier than 2012-05-16 08:00 | 小陆 | 40h | 40h | RM项目1.0- | RM项目1.0 | 58-编码 |  |
| 59 | 3.1.3.7.2 | 测试 |  | 2d | 2012-05-22 09:00 A | 2012-05-23 18:00 A | 58 | 100% | start no earlier than 2012-05-22 08:00 | 小唐 | 16h | 16h | RM项目1.0- | RM项目1.0 | 59-测试 |  |
| 60 | 3.1.3.7.3 | 走查 | milestone | 0d | 2012-05-23 18:00 A | 2012-05-23 18:00 A | 59 | 100% |  | 傅意成 |  |  | RM项目1.0- | RM项目1.0 | 60-走查 |  |
| 61 | 3.1.3.8 | **招聘需求汇总** |  | 7d | 2012-05-14 09:00 A | 2012-05-21 18:00 A |  | 100% |  |  | 56h | 56h | RM项目1.0- | RM项目1.0 | 61-招聘需求汇总 |  |
| 62 | 3.1.3.8.1 | 编码 |  | 5d | 2012-05-14 09:00 A | 2012-05-18 18:00 A |  | 100% | start no earlier than 2012-05-14 08:00 | 小赵 | 40h | 40h | RM项目1.0- | RM项目1.0 | 62-编码 |  |
| 63 | 3.1.3.8.2 | 测试 |  | 2d | 2012-05-19 08:00 A | 2012-05-21 18:00 A | 62 | 100% | start no earlier than 2012-05-19 08:00 | 小唐 | 16h | 16h | RM项目1.0- | RM项目1.0 | 63-测试 |  |
| 64 | 3.1.3.8.3 | 走查 | milestone | 0d | 2012-05-17 08:00 A | 2012-05-17 08:00 A |  | 100% | start no earlier than 2012-05-17 08:00 | 傅意成 |  |  | RM项目1.0- | RM项目1.0 | 64-走查 |  |
| 65 | 3.1.3.9 | **招聘计划-制定招聘计划** |  | 7d | 2012-05-22 09:00 A | 2012-05-28 18:00 A |  | 100% |  |  | 56h | 56h | RM项目1.0- | RM项目1.0 | 65-招聘计划-制定招聘计划 |  |
| 66 | 3.1.3.9.1 | 编码 |  | 5d | 2012-05-22 09:00 A | 2012-05-26 17:00 A |  | 100% | start no earlier than 2012-05-22 08:00 | 小邱 | 40h | 40h | RM项目1.0- | RM项目1.0 | 66-编码 |  |
| 67 | 3.1.3.9.2 | 测试 |  | 2d | 2012-05-27 08:00 A | 2012-05-28 18:00 A | 66 | 100% | start no earlier than 2012-05-27 08:00 | 小唐 | 16h | 16h | RM项目1.0- | RM项目1.0 | 67-测试 |  |
| 68 | 3.1.3.9.3 | 走查 | milestone | 0d | 2012-05-28 18:00 A | 2012-05-28 18:00 A | 67 | 100% |  | 傅意成 |  |  | RM项目1.0- | RM项目1.0 | 68-走查 | ܁@ |
| 69 | 3.1.3.10 | **面试人员简历** |  | 7d | 2012-05-22 09:00 A | 2012-05-28 18:00 A |  | 100% |  |  | 56h | 56h | RM项目1.0- | RM项目1.0 | 69-面试人员简历 |  |
| 70 | 3.1.3.10.1 | 编码 |  | 5d | 2012-05-22 09:00 A | 2012-05-26 17:00 A |  | 100% | start no earlier than 2012-05-22 08:00 | 小陆 | 40h | 40h | RM项目1.0- | RM项目1.0 | 70-编码 |  |
| 71 | 3.1.3.10.2 | 测试 |  | 2d | 2012-05-27 08:00 A | 2012-05-28 18:00 A | 70 | 100% |  | 小唐 | 16h | 16h | RM项目1.0- | RM项目1.0 | 71-测试 |  |
| 72 | 3.1.3.10.3 | 走查 | milestone | 0d | 2012-05-23 08:00 A | 2012-05-23 08:00 A |  | 100% | start no earlier than 2012-05-23 08:00 | 傅意成 |  |  | RM项目1.0- | RM项目1.0 | 72-走查 |  |
| 73 | 3.1.3.11 | **招聘计划执行** |  | 7d | 2012-05-22 09:00 A | 2012-05-28 18:00 A |  | 100% |  |  | 56h | 56h | RM项目1.0- | RM项目1.0 | 73-招聘计划执行 |  |
| 74 | 3.1.3.11.1 | 编码 |  | 5d | 2012-05-22 09:00 A | 2012-05-26 17:00 A |  | 100% | start no earlier than 2012-05-22 08:00 | 小赵 | 40h | 40h | RM项目1.0- | RM项目1.0 | 74-编码 |  |
| 75 | 3.1.3.11.2 | 测试 |  | 2d | 2012-05-27 08:00 A | 2012-05-28 18:00 A | 74 | 100% |  | 小唐 | 16h | 16h | RM项目1.0- | RM项目1.0 | 75-测试 |  |
| 76 | 3.1.3.11.3 | 走查 | milestone | 0d | 2012-05-28 18:00 A | 2012-05-28 18:00 A | 75 | 100% |  | 傅意成 |  |  | RM项目1.0- | RM项目1.0 | 76-走查 |  |

Notes:
- 56: 代码是否符合规范。 / 代码设计是否合理
- 60: 代码是否符合规范。 / 代码设计是否合理
- 64: 代码是否符合规范。 / 代码设计是否合理
- 68: 代码是否符合规范。 / 代码设计是否合理
- 72: 代码是否符合规范。 / 代码设计是否合理
- 76: 代码是否符合规范。 / 代码设计是否合理

| ID | WBS | Task | Type | Duration | Start | Finish | Predecessors | Complete | Remaining | Total slack | Constraint | Resources | Work | Actual work | 配置项名称 | 项目标题 | 任务 | 新产品可裁剪 | 产品升级可裁剪 | 是否配置项 |
| --- | --- | --- | --- | --- | --- | --- | --- | --- | --- | --- | --- | --- | --- | --- | --- | --- | --- | --- | --- | --- |
| 77 | 3.1.3.12 | **简历复选** |  | 7d | 2012-05-30 09:00 A | 2012-06-06 18:00 A |  | 100% |  |  |  |  | 56h | 56h | RM项目1.0- | RM项目1.0 | 77-简历复选 |  |  |  |
| 78 | 3.1.3.12.1 | 编码 |  | 5d | 2012-05-30 09:00 A | 2012-06-04 18:00 A |  | 100% |  |  | start no earlier than 2012-05-30 08:00 | 小邱 | 40h | 40h | RM项目1.0- | RM项目1.0 | 78-编码 |  |  |  |
| 79 | 3.1.3.12.2 | 测试 |  | 2d | 2012-06-05 09:00 A | 2012-06-06 18:00 A | 78 | 100% |  |  |  | 小唐 | 16h | 16h | RM项目1.0- | RM项目1.0 | 79-测试 |  |  |  |
| 80 | 3.1.3.12.3 | 走查 | milestone | 0d | 2012-06-06 18:00 A | 2012-06-06 18:00 A | 79 | 100% |  |  |  | 傅意成 |  |  | RM项目1.0- | RM项目1.0 | 80-走查 |  |  |  |
| 81 | 3.1.3.13 | **面试管理-电话初试** |  | 7d | 2012-05-30 09:00 A | 2012-06-06 18:00 A |  | 100% |  |  |  |  | 56h | 56h | RM项目1.0- | RM项目1.0 | 81-面试管理-电话初试 |  |  |  |
| 82 | 3.1.3.13.1 | 编码 |  | 5d | 2012-05-30 09:00 A | 2012-06-04 18:00 A |  | 100% |  |  | start no earlier than 2012-05-30 08:00 | 小陆 | 40h | 40h | RM项目1.0- | RM项目1.0 | 82-编码 |  |  |  |
| 83 | 3.1.3.13.2 | 测试 |  | 2d | 2012-06-05 09:00 A | 2012-06-06 18:00 A | 82 | 100% |  |  |  | 小唐 | 16h | 16h | RM项目1.0- | RM项目1.0 | 83-测试 |  |  |  |
| 84 | 3.1.3.13.3 | 走查 | milestone | 0d | 2012-06-06 18:00 A | 2012-06-06 18:00 A | 83 | 100% |  |  |  | 傅意成 |  |  | RM项目1.0- | RM项目1.0 | 84-走查 |  |  |  |
| 85 | 3.1.3.14 | **招聘设置-人才类型设置** |  | 7d | 2012-05-31 17:00 A | 2012-06-08 17:00 A |  | 100% |  |  |  |  | 56h | 56h | RM项目1.0- | RM项目1.0 | 85-招聘设置-人才类型设置 |  |  |  |
| 86 | 3.1.3.14.1 | 编码 |  | 5d | 2012-05-31 17:00 A | 2012-06-06 17:00 A |  | 100% |  |  | finish no earlier than 2012-06-06 17:00 | 小赵 | 40h | 40h | RM项目1.0- | RM项目1.0 | 86-编码 |  |  |  |
| 87 | 3.1.3.14.2 | 测试 |  | 2d | 2012-06-06 17:00 A | 2012-06-08 17:00 A | 86 | 100% |  |  |  | 小唐 | 16h | 16h | RM项目1.0- | RM项目1.0 | 87-测试 |  |  |  |
| 88 | 3.1.3.14.3 | 走查 | milestone | 0d | 2012-06-08 08:00 A | 2012-06-08 08:00 A |  | 100% |  |  | start no earlier than 2012-06-08 08:00 | 傅意成 |  |  | RM项目1.0- | RM项目1.0 | 88-走查 |  |  |  |
| 89 | 3.1.3.15 | 需求疑问的跟进 |  | 14d? | 2012-05-09 17:00 A | 2012-05-25 17:00 |  | 56% | 6.2d? | 32.12d | finish no earlier than 2012-05-25 17:00 | 黄新龙 [25%] | 26h | 15.6h | RM项目1.0- | RM项目1.0 | 89-需求疑问的跟进 |  |  |  |
| 90 | 3.1.3.16 | 开发技术支持 |  | 14d? | 2012-05-09 17:00 A | 2012-05-25 17:00 |  | 56% | 6.2d? | 32.12d | finish no earlier than 2012-05-25 17:00 | 傅意成 [25%] | 26h | 15.6h | RM项目1.0- | RM项目1.0 | 90-开发技术支持 |  |  |  |
| 91 | 3.1.3.17 | 日常的沟通和协调 |  | 22d | 2012-04-27 17:00 A | 2012-05-25 17:00 |  | 67% | 7.3d | 32.12d | finish no earlier than 2012-05-25 17:00 | 李国艺 [12.5%] | 21h | 14.7h | RM项目1.0- | RM项目1.0 | 91-日常的沟通和协调 |  |  |  |
| 92 | 3.1.3.18 | 第一期 bug的修复 |  | 10d | 2012-05-25 09:00 | 2012-06-04 18:00 |  |  |  | 23d | start no earlier than 2012-05-25 08:00 | 小陆 [10%]; 小赵 [10%]; 江岱伟 [10%]; 小唐 [10%]; 小邱 [10%] | 40h |  | RM项目1.0- | RM项目1.0 | 92-第一期 bug的修复 |  |  |  |
| 93 | 3.1.3.19 | 用户故事联调 |  | 1d | 2012-05-22 09:00 | 2012-05-22 18:00 |  |  |  | 35d | start no earlier than 2012-05-22 08:30 | 傅意成 | 8h |  | RM项目1.0- | RM项目1.0 | 93-用户故事联调 |  |  |  |
| 94 | 3.1.3.20 | **迭代测试** |  | 34d | 2012-05-04 08:00 A | 2012-06-12 18:00 |  | 63% | 12.53d | 16d |  |  | 582.98h | 395h | RM项目1.0- | RM项目1.0 | 94-迭代测试 |  |  |  |
| 95 | 3.1.3.20.1 | **迭代测试** |  | 23d | 2012-05-04 08:00 A | 2012-05-30 18:00 |  | 60% | 9.2d | 27d |  |  | 294.06h | 204h | RM项目1.0- | RM项目1.0 | 95-迭代测试 | ܁D | ܁F |  |
| 96 | 3.1.3.20.1.1 | 测试方案编制 |  | 3d | 2012-05-11 08:00 A | 2012-05-14 18:00 |  | 96% | 0.12d | 42d | finish no earlier than 2012-04-25 17:00 | 王军武 [34.8%] | 8.35h | 8h | RM项目1.0- | RM项目1.0 | 96-测试方案编制 |  |  | ܁H |
| 97 | 3.1.3.20.1.2 | 测试方案评审 |  | 1d | 2012-05-16 08:00 A | 2012-05-18 17:30 |  | 50% | 0.5d | 38.06d | finish no earlier than 2012-05-18 17:30 | 测试组; 项目经理 | 16h | 8h | RM项目1.0- | RM项目1.0 | 97-测试方案评审 |  |  |  |
| 98 | 3.1.3.20.1.3 | 测试用例编制 |  | 8d | 2012-05-04 08:00 A | 2012-05-14 18:00 |  | 36% | 5.12d | 42d | finish no earlier than 2012-05-08 17:30 | 王军武 | 64h | 23h | RM项目1.0- | RM项目1.0 | 98-测试用例编制 |  |  | ܁H |
| 99 | 3.1.3.20.1.4 | 测试用例评审 |  | 5d | 2012-05-18 08:00 A | 2012-05-23 18:00 |  | 18% | 4.12d | 34d | finish no earlier than 2012-05-16 17:30 | 测试组 [57.1%]; 项目经理 [57.1%] | 45.71h | 8h | RM项目1.0- | RM项目1.0 | 99-测试用例评审 |  |  | ܁H |
| 100 | 3.1.3.20.1.5 | 测试环境搭建 |  | 2d | 2012-05-25 08:00 A | 2012-05-26 17:00 A |  | 100% |  |  | start no earlier than 2011-09-27 08:00 |  | 16h | 16h | RM项目1.0- | RM项目1.0 | 100-测试环境搭建 |  |  |  |
| 101 | 3.1.3.20.1.6 | 迭代测试执行 |  | 3d | 2012-05-28 08:00 A | 2012-05-30 18:00 |  | 98% | 0.06d | 27d | start no earlier than 2011-09-28 08:00 |  | 72h | 70.5h | RM项目1.0- | RM项目1.0 | 101-迭代测试执行 | ܁D | ܁F |  |
| 102 | 3.1.3.20.1.7 | 缺陷处理 |  | 3d | 2012-05-28 08:00 A | 2012-05-30 18:00 |  | 98% | 0.06d | 27d | finish no earlier than 2012-05-23 17:30 |  | 72h | 70.5h | RM项目1.0- | RM项目1.0 | 102-缺陷处理 | ܁D | ܁F |  |

Notes:
- 80: 代码是否符合规范。 / 代码设计是否合理
- 84: 代码是否符合规范。 / 代码设计是否合理
- 88: 代码是否符合规范。 / 代码设计是否合理
- 90: 支持开发中遇到的框架上的问题
- 93: 与其他模块的接口集成支持

| ID | WBS | Task | Duration | Start | Finish | Predecessors | Complete | Remaining | Total slack | Free slack | Constraint | Resources | Work | Actual work | 配置项名称 | 项目标题 | 任务 | 新产品可裁剪 | 产品升级可裁剪 | 评审人员 | 交付件名称 | 是否工作包 | 评审方式 |
| --- | --- | --- | --- | --- | --- | --- | --- | --- | --- | --- | --- | --- | --- | --- | --- | --- | --- | --- | --- | --- | --- | --- | --- |
| 103 | 3.1.3.20.2 | **回归测试** | 7d | 2012-06-05 08:00 A | 2012-06-12 18:00 |  | 69% | 2.19d | 16d |  |  |  | 288.91h | 191h | RM项目1.0- | RM项目1.0 | 103-回归测试 | ܁D | ܁F |  |  |  |  |
| 104 | 3.1.3.20.2.1 | 回归测试执行 | 3d | 2012-06-05 08:00 A | 2012-06-07 18:00 |  | 98% | 0.06d | 20d |  | finish no earlier than 2012-05-31 17:30 |  | 93.96h | 92h | RM项目1.0- | RM项目1.0 | 104-回归测试执行 | ܁D | ܁F |  |  |  |  |
| 105 | 3.1.3.20.2.2 | 缺陷处理 | 7d | 2012-06-05 08:00 A | 2012-06-12 18:00 |  | 42% | 4.06d | 16d |  | finish no earlier than 2012-06-05 17:30 |  | 162.96h | 69h | RM项目1.0- | RM项目1.0 | 105-缺陷处理 |  |  |  |  |  |  |
| 106 | 3.1.3.20.2.3 | 测试报告编写 | 2d | 2012-06-05 08:00 A | 2012-06-06 18:00 |  | 94% | 0.12d | 21d |  | start no earlier than 2011-10-08 08:00 |  | 16h | 15h | RM项目1.0- | RM项目1.0 | 106-测试报告编写 | ܁D | ܁F |  |  |  |  |
| 107 | 3.1.3.20.2.4 | 测试报告评审 | 2d | 2012-06-05 08:00 A | 2012-06-06 18:00 |  | 94% | 0.12d | 21d |  | start no earlier than 2011-10-08 08:00 |  | 16h | 15h | RM项目1.0- | RM项目1.0 | 107-测试报告评审 | ܁D | ܁F |  |  |  |  |
| 108 | 3.1.3.21 | 用户文档编制 | 4d | 2012-06-07 08:00 A | 2012-06-11 18:00 |  | 97% | 0.12d | 17d |  | start no earlier than 2011-09-26 08:00 |  | 32h | 31h | RM项目1.0- | RM项目1.0 | 108-用户文档编制 |  |  | 验收时才做 |  |  |  |
| 109 | 3.1.3.22 | 用户文档测试 | 2d | 2012-06-08 08:00 A | 2012-06-09 17:00 |  | 94% | 0.12d | 18d |  | start no earlier than 2011-10-09 08:00 |  | 16h | 15h | RM项目1.0- | RM项目1.0 | 109-用户文档测试 |  |  | 验收时才做 |  |  |  |
| 110 | 3.1.3.23 | **演示与发布** | 0.5d | 2012-06-08 09:00 | 2012-06-08 14:00 |  |  |  | 19.5d |  |  |  | 6h |  | RM项目1.0- | RM项目1.0 | 110-演示与发布 |  |  |  |  |  |  |
| 111 | 3.1.3.23.1 | 迭代演示 | 0.5d | 2012-06-08 09:00 | 2012-06-08 14:00 |  |  |  | 19.5d |  | start no earlier than 2012-06-08 08:00 | 李国艺 [50%] | 2h |  | RM项目1.0- | RM项目1.0 | 111-迭代演示 |  |  | 验收时才做 |  |  |  |
| 112 | 3.1.3.23.2 | 验收发布 | 0.5d | 2012-06-08 09:00 | 2012-06-08 14:00 |  |  |  | 19.5d |  | start no earlier than 2012-06-08 08:00 | 测试组 | 4h |  | RM项目1.0- | RM项目1.0 | 112-验收发布 |  |  | 验收时才做 |  |  |  |
| 113 | 3.1.3.24 | **合同付款** | 1d? | 2012-06-11 09:00 | 2012-06-11 18:00 |  |  |  | 17d |  |  |  | 16h |  | RM项目1.0- | RM项目1.0 | 113-合同付款 |  |  |  |  |  |  |
| 114 | 3.1.3.24.1 | 要求对方提供项目款发票 | 1d? | 2012-06-11 09:00 | 2012-06-11 18:00 |  |  |  | 17d |  | start no earlier than 2012-06-11 08:00 | 潘总 | 8h |  | RM项目1.0- | RM项目1.0 | 114-要求对方提供项目款发票 |  |  |  |  |  |  |
| 115 | 3.1.3.24.2 | 支付项目款 | 1d? | 2012-06-11 09:00 | 2012-06-11 18:00 |  |  |  | 17d |  | start no earlier than 2012-06-11 08:00 | 潘总 | 8h |  | RM项目1.0- | RM项目1.0 | 115-支付项目款 |  |  |  |  |  |  |
| 116 | 3.2 | **第2迭代** | 56d? | 2012-04-24 09:00 A | 2012-06-29 18:00 |  | 33% | 37.62d? | 2d |  |  |  | 1708.52h | 816.7h | RM项目1.0- | RM项目1.0 | 116-第2迭代 |  |  |  |  |  |  |
| 117 | 3.2.1 | **项目管理** | 50.5d | 2012-04-24 09:00 A | 2012-06-22 14:00 |  |  | 50.5d | 7.5d |  |  |  | 73h |  | RM项目1.0- | RM项目1.0 | 117-项目管理 |  |  |  |  |  |  |
| 118 | 3.2.1.1 | 迭代计划制定（迭代的裁剪、估算、计划、评审、配置） | 0.5d | 2012-04-24 09:00 | 2012-04-24 14:00 |  |  |  | 57.5d |  | start no earlier than 2012-04-24 08:00 | 李国艺 | 4h |  | RM项目1.0-项目综合表 | RM项目1.0 | 118-迭代计划制定（迭代的裁剪、估算、计划、评审、配置） |  |  | 跌代1已包含 | 项目综合表 | ܁@ |  |
| 119 | 3.2.1.2 | **监控** | 19d | 2012-05-28 09:00 | 2012-06-18 18:00 |  |  |  | 11d |  |  |  | 37h |  | RM项目1.0- | RM项目1.0 | 119-监控 |  |  |  |  |  |  |
| 120 | 3.2.1.2.1 | 周例会（完成功能确认） | 15d | 2012-06-01 09:00 | 2012-06-18 18:00 |  |  |  | 11d |  | start no earlier than 2012-06-01 08:00 | 李国艺 [1.7%] | 2h |  | RM项目1.0-会议纪要 | RM项目1.0 | 120-周例会（完成功能确认） | ܁Y | ܁[ |  | 会议纪要 | ܁@ |  |
| 121 | 3.2.1.2.2 | 项目周报编制 | 8.33d | 2012-06-01 09:00 | 2012-06-11 11:40 |  |  |  | 17.67d |  | start no earlier than 2012-06-01 08:00 | 李国艺 [3%] | 2h |  | RM项目1.0-项目周报 | RM项目1.0 | 121-项目周报编制 | ܁Y | ܁[ |  | 项目周报 | ܁@ |  |
| 122 | 3.2.1.2.3 | 偏差、风险、问题识别与跟踪 | 15d | 2012-05-28 09:00 | 2012-06-13 18:00 |  |  |  | 15d |  | start no earlier than 2012-05-28 08:00 | 李国艺 [20%] | 24h |  | RM项目1.0-项目周报 | RM项目1.0 | 122-偏差、风险、问题识别与跟踪 | ܁Y | ܁[ |  | 项目周报 | ܁@ |  |
| 123 | 3.2.1.2.4 | 项目月报的编制 | 0.12d | 2012-06-08 09:00 | 2012-06-08 10:00 |  |  |  | 19.88d |  | start no earlier than 2012-06-08 08:00 | 李国艺 | 1h |  | RM项目1.0-项目月报 | RM项目1.0 | 123-项目月报的编制 | ܁Y | ܁[ | 迭代总结报告代替 | 项目月报 | ܁@ |  |
| 124 | 3.2.1.2.5 | 变更管理 | 16.67d | 2012-05-28 09:00 | 2012-06-15 15:20 |  |  |  | 13.33d |  | start no earlier than 2012-05-28 08:00 | 李国艺 [6%] | 8h |  | RM项目1.0-变更控制表 | RM项目1.0 | 124-变更管理 | ܁Y | ܁[ |  | 变更控制表 | ܁@ |  |
| 125 | 3.2.1.3 | 外部接口协调 | 5.77d | 2012-05-14 08:00 A | 2012-05-19 15:09 |  |  | 5.77d | 36.11d | 28.61d | finish no earlier than 2012-05-18 17:00 | 李国艺 [2%]; 傅意成 [50%] | 24h |  | RM项目1.0- | RM项目1.0 | 125-外部接口协调 |  |  |  |  |  |  |
| 126 | 3.2.1.4 | **迭代总结** | 1.12d | 2012-06-21 13:00 A | 2012-06-22 14:00 | 125 |  | 1.12d | 7.5d |  |  |  | 8h |  | RM项目1.0- | RM项目1.0 | 126-迭代总结 |  |  |  |  |  |  |
| 127 | 3.2.1.4.1 | 迭代2总结编制 | 0.5d | 2012-06-21 13:00 | 2012-06-21 17:00 |  |  |  | 8.12d |  | finish no earlier than 2012-06-21 17:00 | 李国艺 | 4h |  | RM项目1.0-迭代总结 | RM项目1.0 | 127-迭代2总结编制 |  |  |  | 迭代总结 | ܁@ |  |
| 128 | 3.2.1.4.2 | 迭代2总结评审 | 0.5d | 2012-06-22 08:00 A | 2012-06-22 14:00 |  |  | 0.5d | 7.5d |  | start no earlier than 2011-10-10 08:00 | 李国艺 | 4h |  | RM项目1.0-评审报告 | RM项目1.0 | 128-迭代2总结评审 |  |  |  | 评审报告 |  | ܁j |

Notes:
- 120: 0.5 * 周会次数
- 124: 0.5 * 预计变更次数
- 125: 0.5 * 协调次数

| ID | WBS | Task | Type | Duration | Start | Finish | Predecessors | Complete | Remaining | Total slack | Free slack | Constraint | Resources | Work | Actual work | 配置项名称 | 项目标题 | 任务 | 交付件名称 | 评审人员 | 是否工作包 | 评审方式 |
| --- | --- | --- | --- | --- | --- | --- | --- | --- | --- | --- | --- | --- | --- | --- | --- | --- | --- | --- | --- | --- | --- | --- |
| 129 | 3.2.2 | **概要设计** |  | 0.13d | 2012-05-28 08:00 A | 2012-05-28 10:02 |  |  | 0.13d | 29.87d |  |  |  | 3.12h |  | RM项目1.0- | RM项目1.0 | 129-概要设计 |  |  |  |  |
| 130 | 3.2.2.1 | 设计（确认） |  | 0.13d | 2012-05-28 08:00 A | 2012-05-28 10:02 |  |  | 0.13d | 29.87d |  | start no earlier than 2011-08-30 08:00 | 李国艺; 戴金平 | 2.08h |  | RM项目1.0-软件设计说明书 | RM项目1.0 | 130-设计（确认） | 软件设计说明书 | 第一期已做了 | ܁@ |  |
| 131 | 3.2.2.2 | 评审 |  | 0.13d | 2012-05-28 08:00 A | 2012-05-28 10:02 |  |  | 0.13d | 29.87d |  |  | 李国艺 | 1.04h |  | RM项目1.0-评审报告 | RM项目1.0 | 131-评审 | 评审报告 | 第一期已做了 |  | ܁i |
| 132 | 3.2.3 | **业务需求** |  | 45d? | 2012-05-09 08:00 A | 2012-06-29 18:00 |  | 47% | 24d? | 2d |  |  |  | 1632.4h | 816.7h | RM项目1.0- | RM项目1.0 | 132-业务需求 |  |  |  |  |
| 133 | 3.2.3.1 | 用户故事拆分（确认） |  | 0.25d | 2012-05-09 08:00 A | 2012-05-09 17:00 |  |  | 0.25d | 46.12d |  | finish no earlier than 2012-05-09 17:00 | 黄新龙 [50%] | 1h |  | RM项目1.0- | RM项目1.0 | 133-用户故事拆分（确认） |  | 第一期已做了 |  |  |
| 134 | 3.2.3.2 | 用户故事编写（确认） |  | 0.5d | 2012-05-25 08:00 A | 2012-05-25 14:00 A | 133 | 100% |  |  |  | finish no earlier than 2012-05-18 17:00 | 黄新龙 [150%] | 6h | 6h | RM项目1.0-用户故事 | RM项目1.0 | 134-用户故事编写（确认） | 用户故事 | 第一期已做了 | ܁@ |  |
| 135 | 3.2.3.3 | 用户故事评审（确认） | milestone | 0.5d | 2012-05-25 08:00 A | 2012-05-25 14:00 |  |  | 0.5d | 32.5d |  |  | 李国艺 | 4h |  | RM项目1.0-评审报告 | RM项目1.0 | 135-用户故事评审（确认） | 评审报告 | 第一期已做了 |  | ܁i |
| 136 | 3.2.3.4 | **招聘设置-通知模板编辑** |  | 3d | 2012-06-07 09:00 A | 2012-06-09 17:00 A |  | 100% |  |  |  |  |  | 32h | 32h | RM项目1.0- | RM项目1.0 | 136-招聘设置-通知模板编辑 |  |  |  |  |
| 137 | 3.2.3.4.1 | 编码 |  | 3d | 2012-06-07 09:00 A | 2012-06-09 17:00 A |  | 100% |  |  |  | start no earlier than 2012-06-07 08:00 | 小邱 | 24h | 24h | RM项目1.0- | RM项目1.0 | 137-编码 |  |  |  |  |
| 138 | 3.2.3.4.2 | 测试 |  | 0.5d | 2012-06-09 08:00 A | 2012-06-09 12:00 A |  | 100% |  |  |  | start no earlier than 2012-06-09 08:00 | 小唐 | 4h | 4h | RM项目1.0- | RM项目1.0 | 138-测试 |  |  |  |  |
| 139 | 3.2.3.4.3 | 走查 |  | 0.5d | 2012-06-09 08:00 A | 2012-06-09 12:00 A |  | 100% |  |  |  | start no earlier than 2012-06-09 08:00 | 傅意成 | 4h | 4h | RM项目1.0- | RM项目1.0 | 139-走查 |  |  |  |  |
| 140 | 3.2.3.5 | **面试管理-面试安排** |  | 3d | 2012-06-07 09:00 A | 2012-06-09 17:00 A |  | 100% |  |  |  |  |  | 30h | 30h | RM项目1.0- | RM项目1.0 | 140-面试管理-面试安排 |  |  |  |  |
| 141 | 3.2.3.5.1 | 编码 |  | 3d | 2012-06-07 09:00 A | 2012-06-09 17:00 A |  | 100% |  |  |  | start no earlier than 2012-06-07 08:00 | 小陆 | 24h | 24h | RM项目1.0- | RM项目1.0 | 141-编码 |  |  |  |  |
| 142 | 3.2.3.5.2 | 测试 |  | 0.5d | 2012-06-09 08:00 A | 2012-06-09 12:00 A |  | 100% |  |  |  | start no earlier than 2012-06-09 08:00 | 小唐 | 4h | 4h | RM项目1.0- | RM项目1.0 | 142-测试 |  |  |  |  |
| 143 | 3.2.3.5.3 | 走查 |  | 0.25d | 2012-06-09 08:00 A | 2012-06-09 10:00 A |  | 100% |  |  |  | start no earlier than 2012-06-09 08:00 | 傅意成 | 2h | 2h | RM项目1.0- | RM项目1.0 | 143-走查 |  |  |  |  |
| 144 | 3.2.3.6 | **前台接待** |  | 5d | 2012-06-11 09:00 A | 2012-06-15 18:00 A |  | 100% |  |  |  |  |  | 44h | 44h | RM项目1.0- | RM项目1.0 | 144-前台接待 |  |  |  |  |
| 145 | 3.2.3.6.1 | 编码 |  | 4.5d | 2012-06-11 09:00 A | 2012-06-15 14:00 A |  | 100% |  |  |  | start no earlier than 2012-06-11 08:00 | 小陆 | 36h | 36h | RM项目1.0- | RM项目1.0 | 145-编码 |  |  |  |  |
| 146 | 3.2.3.6.2 | 测试 |  | 0.5d | 2012-06-15 09:00 A | 2012-06-15 14:00 A |  | 100% |  |  |  | start no earlier than 2012-06-15 08:00 | 小唐 | 4h | 4h | RM项目1.0- | RM项目1.0 | 146-测试 |  |  |  |  |
| 147 | 3.2.3.6.3 | 走查 |  | 0.5d | 2012-06-15 14:00 A | 2012-06-15 18:00 A | 146 | 100% |  |  |  |  | 傅意成 | 4h | 4h | RM项目1.0- | RM项目1.0 | 147-走查 |  |  |  |  |
| 148 | 3.2.3.7 | **面试管理-面试执行** |  | 3.88d | 2012-06-09 08:00 A | 2012-06-13 17:00 |  | 10% | 3.49d | 15.12d |  |  |  | 37h | 3.7h | RM项目1.0- | RM项目1.0 | 148-面试管理-面试执行 |  |  |  |  |
| 149 | 3.2.3.7.1 | 编码 |  | 3.88d | 2012-06-09 08:00 A | 2012-06-13 17:00 |  | 12% | 3.41d | 15.12d |  | finish no earlier than 2012-06-13 17:00 | 小邱 | 31h | 3.7h | RM项目1.0- | RM项目1.0 | 149-编码 |  |  |  |  |
| 150 | 3.2.3.7.2 | 测试 |  | 0.5d | 2012-06-13 09:00 | 2012-06-13 14:00 |  |  |  | 15.25d | 0d | start no earlier than 2012-06-13 08:00 | 小唐 | 4h |  | RM项目1.0- | RM项目1.0 | 150-测试 |  |  |  |  |
| 151 | 3.2.3.7.3 | 走查 |  | 0.25d | 2012-06-13 14:00 | 2012-06-13 16:00 | 150 |  |  | 15.25d |  |  | 傅意成 | 2h |  | RM项目1.0- | RM项目1.0 | 151-走查 |  |  |  |  |
| 152 | 3.2.3.8 | **面试管理-拟录用** |  | 5d | 2012-06-12 09:00 A | 2012-06-16 17:00 A |  | 100% |  |  |  |  |  | 48h | 48h | RM项目1.0- | RM项目1.0 | 152-面试管理-拟录用 |  |  |  |  |
| 153 | 3.2.3.8.1 | 编码 |  | 5d | 2012-06-12 09:00 A | 2012-06-16 17:00 A |  | 100% |  |  |  | finish no earlier than 2012-06-16 17:00 | 小赵 | 40h | 40h | RM项目1.0- | RM项目1.0 | 153-编码 |  |  |  |  |
| 154 | 3.2.3.8.2 | 测试 |  | 0.5d | 2012-06-16 08:00 A | 2012-06-16 12:00 A |  | 100% |  |  |  | start no earlier than 2012-06-16 08:00 | 小唐 | 4h | 4h | RM项目1.0- | RM项目1.0 | 154-测试 |  |  |  |  |
| 155 | 3.2.3.8.3 | 走查 |  | 0.5d | 2012-06-16 13:00 A | 2012-06-16 17:00 A | 154 | 100% |  |  |  |  | 傅意成 | 4h | 4h | RM项目1.0- | RM项目1.0 | 155-走查 |  |  |  |  |

Notes:
- 139: 代码是否符合规范。 / 代码设计是否合理
- 143: 代码是否符合规范。 / 代码设计是否合理
- 147: 代码是否符合规范。 / 代码设计是否合理
- 151: 代码是否符合规范。 / 代码设计是否合理
- 155: 代码是否符合规范。 / 代码设计是否合理

| ID | WBS | Task | Duration | Start | Finish | Predecessors | Complete | Remaining | Total slack | Free slack | Constraint | Resources | Work | Actual work | 配置项名称 | 项目标题 | 任务 |
| --- | --- | --- | --- | --- | --- | --- | --- | --- | --- | --- | --- | --- | --- | --- | --- | --- | --- |
| 156 | 3.2.3.9 | **面试管理-背景调查** | 2.88d | 2012-06-15 09:00 A | 2012-06-18 17:00 A |  | 100% |  |  |  |  |  | 29h | 29h | RM项目1.0- | RM项目1.0 | 156-面试管理-背景调查 |
| 157 | 3.2.3.9.1 | 编码 | 2.88d | 2012-06-15 09:00 A | 2012-06-18 17:00 A |  | 100% |  |  |  | finish no earlier than 2012-06-18 17:00 | 小赵 | 23h | 23h | RM项目1.0- | RM项目1.0 | 157-编码 |
| 158 | 3.2.3.9.2 | 测试 | 0.5d | 2012-06-16 08:00 A | 2012-06-16 12:00 A |  | 100% |  |  |  | start no earlier than 2012-06-16 08:00 | 小唐 | 4h | 4h | RM项目1.0- | RM项目1.0 | 158-测试 |
| 159 | 3.2.3.9.3 | 走查 | 0.25d | 2012-06-16 13:00 A | 2012-06-16 15:00 A | 158 | 100% |  |  |  |  | 傅意成 | 2h | 2h | RM项目1.0- | RM项目1.0 | 159-走查 |
| 160 | 3.2.3.10 | **入职手续-背景调查问题设定** | 4.88d | 2012-06-16 08:00 A | 2012-06-21 17:00 |  | 96% | 0.22d | 8.12d |  |  |  | 45h | 43h | RM项目1.0- | RM项目1.0 | 160-入职手续-背景调查问题设定 |
| 161 | 3.2.3.10.1 | 编码 | 4.88d | 2012-06-16 08:00 A | 2012-06-21 17:00 A |  | 100% |  |  |  | finish no earlier than 2012-06-21 17:00 | 小邱 | 39h | 39h | RM项目1.0- | RM项目1.0 | 161-编码 |
| 162 | 3.2.3.10.2 | 测试 | 0.5d | 2012-06-19 09:00 A | 2012-06-19 14:00 A |  | 100% |  |  |  | start no earlier than 2012-06-19 08:00 | 小唐 | 4h | 4h | RM项目1.0- | RM项目1.0 | 162-测试 |
| 163 | 3.2.3.10.3 | 走查 | 0.25d | 2012-06-19 14:00 | 2012-06-19 16:00 | 162 |  |  | 10.25d |  |  | 傅意成 | 2h |  | RM项目1.0- | RM项目1.0 | 163-走查 |
| 164 | 3.2.3.11 | **入职手续-入职手续** | 5.88d | 2012-06-15 09:00 | 2012-06-21 17:00 |  |  |  | 8.12d |  |  |  | 53h |  | RM项目1.0- | RM项目1.0 | 164-入职手续-入职手续 |
| 165 | 3.2.3.11.1 | 编码 | 5.88d | 2012-06-15 09:00 | 2012-06-21 17:00 |  |  |  | 8.12d |  | finish no earlier than 2012-06-21 17:00 | 小陆 | 47h |  | RM项目1.0- | RM项目1.0 | 165-编码 |
| 166 | 3.2.3.11.2 | 测试 | 0.5d | 2012-06-18 09:00 | 2012-06-18 14:00 |  |  |  | 11.25d | 0d | start no earlier than 2012-06-18 08:00 | 小唐 | 4h |  | RM项目1.0- | RM项目1.0 | 166-测试 |
| 167 | 3.2.3.11.3 | 走查 | 0.25d | 2012-06-18 14:00 | 2012-06-18 16:00 | 166 |  |  | 11.25d |  |  | 傅意成 | 2h |  | RM项目1.0- | RM项目1.0 | 167-走查 |
| 168 | 3.2.3.12 | **入职手续-体检明细表** | 4.88d | 2012-06-16 08:00 A | 2012-06-21 17:00 |  | 96% | 0.22d | 8.12d |  |  |  | 45h | 43h | RM项目1.0- | RM项目1.0 | 168-入职手续-体检明细表 |
| 169 | 3.2.3.12.1 | 编码 | 4.88d | 2012-06-16 08:00 A | 2012-06-21 17:00 A |  | 100% |  |  |  | finish no earlier than 2012-06-21 17:00 | 小赵 | 39h | 39h | RM项目1.0- | RM项目1.0 | 169-编码 |
| 170 | 3.2.3.12.2 | 测试 | 0.5d | 2012-06-19 09:00 A | 2012-06-19 14:00 A |  | 100% |  |  |  | start no earlier than 2012-06-19 08:00 | 小唐 | 4h | 4h | RM项目1.0- | RM项目1.0 | 170-测试 |
| 171 | 3.2.3.12.3 | 走查 | 0.25d | 2012-06-19 14:00 | 2012-06-19 16:00 | 170 |  |  | 10.25d |  |  | 傅意成 | 2h |  | RM项目1.0- | RM项目1.0 | 171-走查 |
| 172 | 3.2.3.13 | **入职手续-离职证明** | 3.88d | 2012-06-21 09:00 A | 2012-06-26 17:00 |  | 95% | 0.21d | 5.12d |  |  |  | 37h | 35h | RM项目1.0- | RM项目1.0 | 172-入职手续-离职证明 |
| 173 | 3.2.3.13.1 | 编码 | 3.88d | 2012-06-21 09:00 A | 2012-06-26 17:00 A |  | 100% |  |  |  | start no earlier than 2012-06-21 08:00 | 小邱 | 31h | 31h | RM项目1.0- | RM项目1.0 | 173-编码 |
| 174 | 3.2.3.13.2 | 测试 | 0.5d | 2012-06-22 09:00 A | 2012-06-22 14:00 A |  | 100% |  |  |  | start no earlier than 2012-06-22 08:00 | 小唐 | 4h | 4h | RM项目1.0- | RM项目1.0 | 174-测试 |
| 175 | 3.2.3.13.3 | 走查 | 0.25d | 2012-06-22 14:00 | 2012-06-22 16:00 | 174 |  |  | 7.25d |  |  | 傅意成 | 2h |  | RM项目1.0- | RM项目1.0 | 175-走查 |
| 176 | 3.2.3.14 | **入职手续-入职** | 4.88d | 2012-06-20 09:00 A | 2012-06-26 17:00 |  | 96% | 0.22d | 5.12d |  |  |  | 45h | 43h | RM项目1.0- | RM项目1.0 | 176-入职手续-入职 |
| 177 | 3.2.3.14.1 | 编码 | 4.88d | 2012-06-20 09:00 A | 2012-06-26 17:00 A |  | 100% |  |  |  | finish no earlier than 2012-06-26 17:00 | 小陆 | 39h | 39h | RM项目1.0- | RM项目1.0 | 177-编码 |
| 178 | 3.2.3.14.2 | 测试 | 0.5d | 2012-06-22 09:00 A | 2012-06-22 14:00 A |  | 100% |  |  |  | start no earlier than 2012-06-22 08:00 | 小唐 | 4h | 4h | RM项目1.0- | RM项目1.0 | 178-测试 |
| 179 | 3.2.3.14.3 | 走查 | 0.25d | 2012-06-22 14:00 | 2012-06-22 16:00 | 178 |  |  | 7.25d |  |  | 傅意成 | 2h |  | RM项目1.0- | RM项目1.0 | 179-走查 |

Notes:
- 159: 代码是否符合规范。 / 代码设计是否合理
- 163: 代码是否符合规范。 / 代码设计是否合理
- 167: 代码是否符合规范。 / 代码设计是否合理
- 171: 代码是否符合规范。 / 代码设计是否合理
- 175: 代码是否符合规范。 / 代码设计是否合理
- 179: 代码是否符合规范。 / 代码设计是否合理

| ID | WBS | Task | Type | Duration | Start | Finish | Predecessors | Complete | Remaining | Total slack | Constraint | Resources | Work | Actual work | 配置项名称 | 项目标题 | 任务 | 新产品可裁剪 | 产品升级可裁剪 |
| --- | --- | --- | --- | --- | --- | --- | --- | --- | --- | --- | --- | --- | --- | --- | --- | --- | --- | --- | --- |
| 180 | 3.2.3.15 | **简历管理-面试简历统计** |  | 3.88d | 2012-06-21 09:00 A | 2012-06-26 17:00 |  | 94% | 0.25d | 5.12d |  |  | 37.4h | 35h | RM项目1.0- | RM项目1.0 | 180-简历管理-面试简历统计 |  |  |
| 181 | 3.2.3.15.1 | 编码 |  | 3.88d | 2012-06-21 09:00 A | 2012-06-26 17:00 A |  | 100% |  |  | finish no earlier than 2012-06-26 17:00 | 小赵 | 31h | 31h | RM项目1.0- | RM项目1.0 | 181-编码 |  |  |
| 182 | 3.2.3.15.2 | 测试 |  | 0.5d | 2012-06-21 09:00 A | 2012-06-21 14:00 A |  | 100% |  |  | start no earlier than 2012-06-21 08:00 | 小唐 | 4h | 4h | RM项目1.0- | RM项目1.0 | 182-测试 |  |  |
| 183 | 3.2.3.15.3 | 走查 |  | 0.3d | 2012-06-21 14:00 | 2012-06-21 16:24 | 182 |  |  | 8.2d |  | 傅意成 | 2.4h |  | RM项目1.0- | RM项目1.0 | 183-走查 |  |  |
| 184 | 3.2.3.16 | 需求疑问的跟进 |  | 16d | 2012-05-21 09:00 | 2012-06-06 18:00 |  |  |  | 21d | start no earlier than 2012-05-21 08:30 | 黄新龙 [25%] | 32h |  | RM项目1.0- | RM项目1.0 | 184-需求疑问的跟进 |  |  |
| 185 | 3.2.3.17 | 开发技术支持 |  | 16d | 2012-05-21 09:00 | 2012-06-06 18:00 |  |  |  | 21d | start no earlier than 2012-05-21 08:00 | 傅意成 [25%] | 32h |  | RM项目1.0- | RM项目1.0 | 185-开发技术支持 |  |  |
| 186 | 3.2.3.18 | 日常的沟通和协调 |  | 16d | 2012-05-21 09:00 | 2012-06-06 18:00 |  |  |  | 21d | start no earlier than 2012-05-21 08:00 | 李国艺 [12.5%] | 16h |  | RM项目1.0- | RM项目1.0 | 186-日常的沟通和协调 |  |  |
| 187 | 3.2.3.19 | 第一、二期bugs修复 |  | 12d | 2012-06-07 09:00 | 2012-06-20 18:00 |  |  |  | 9d | start no earlier than 2012-06-07 08:00 | 小陆; 小赵; 小邱; 小唐; 江岱伟 | 480h |  | RM项目1.0- | RM项目1.0 | 187-第一、二期bugs修复 |  |  |
| 188 | 3.2.3.20 | 用户故事联调 |  | 1d | 2012-06-05 17:00 | 2012-06-06 17:00 |  |  |  | 21.12d | finish no earlier than 2012-06-06 17:00 | 傅意成 | 8h |  | RM项目1.0- | RM项目1.0 | 188-用户故事联调 |  |  |
| 189 | 3.2.3.21 | **迭代测试** |  | 16.88d | 2012-06-05 08:30 A | 2012-06-25 17:00 |  | 84% | 2.73d | 6.12d |  |  | 528h | 398h | RM项目1.0- | RM项目1.0 | 189-迭代测试 |  |  |
| 190 | 3.2.3.21.1 | **迭代测试** |  | 6.94d | 2012-06-05 08:30 A | 2012-06-12 17:30 |  | 99% | 0.04d | 16.06d |  |  | 333.5h | 229.5h | RM项目1.0- | RM项目1.0 | 190-迭代测试 | ܁D | ܁F |
| 191 | 3.2.3.21.1.1 | 测试环境搭建 |  | 1.94d | 2012-06-05 08:30 A | 2012-06-06 17:30 |  | 97% | 0.06d | 21.06d | finish no earlier than 2012-06-06 17:30 |  | 119h | 15h | RM项目1.0- | RM项目1.0 | 191-测试环境搭建 |  |  |
| 192 | 3.2.3.21.1.2 | 迭代测试执行 |  | 3d | 2012-06-06 08:30 A | 2012-06-08 18:00 A |  | 100% |  |  | start no earlier than 2011-09-28 08:00 |  | 72h | 72h | RM项目1.0- | RM项目1.0 | 192-迭代测试执行 | ܁D | ܁F |
| 193 | 3.2.3.21.1.3 | 缺陷处理 |  | 5.94d | 2012-06-06 08:30 A | 2012-06-12 17:30 A |  | 100% |  |  | start no earlier than 2011-09-29 08:00 |  | 142.5h | 142.5h | RM项目1.0- | RM项目1.0 | 193-缺陷处理 | ܁D | ܁F |
| 194 | 3.2.3.21.2 | **回归测试** |  | 8.88d | 2012-06-14 08:30 A | 2012-06-25 17:00 |  | 66% | 3d | 6.12d |  |  | 194.5h | 168.5h | RM项目1.0- | RM项目1.0 | 194-回归测试 | ܁D | ܁F |
| 195 | 3.2.3.21.2.1 | 回归测试执行 |  | 2.94d | 2012-06-14 08:30 A | 2012-06-16 16:30 A |  | 100% |  |  | start no earlier than 2011-09-30 08:00 |  | 94h | 94h | RM项目1.0- | RM项目1.0 | 195-回归测试执行 | ܁D | ܁F |
| 196 | 3.2.3.21.2.2 | 缺陷处理 |  | 2.94d | 2012-06-14 08:30 A | 2012-06-16 16:30 A |  | 100% |  |  | start no earlier than 2011-10-08 08:00 |  | 70.5h | 70.5h | RM项目1.0- | RM项目1.0 | 196-缺陷处理 |  |  |
| 197 | 3.2.3.21.2.3 | 测试报告编写 |  | 1.88d | 2012-06-18 08:30 A | 2012-06-25 17:00 |  | 27% | 1.38d | 6.12d | finish no earlier than 2012-06-25 17:00 |  | 15h | 4h | RM项目1.0- | RM项目1.0 | 197-测试报告编写 | ܁D | ܁F |
| 198 | 3.2.3.21.2.4 | 测试报告评审 | milestone | 0d | 2012-06-18 08:30 A | 2012-06-18 08:30 A |  | 100% |  |  | finish no earlier than 2012-06-25 08:00 |  |  |  | RM项目1.0- | RM项目1.0 | 198-测试报告评审 |  |  |
| 199 | 3.2.3.21.2.5 | 测试总结编写 | milestone | 0d | 2012-06-18 08:30 A | 2012-06-18 08:30 A |  | 100% |  |  | finish no earlier than 2012-06-25 08:00 |  |  |  | RM项目1.0- | RM项目1.0 | 199-测试总结编写 |  |  |
| 200 | 3.2.3.21.2.6 | 测试总结评审 |  | 1.88d | 2012-06-18 08:30 A | 2012-06-19 17:00 |  |  | 1.88d | 10.12d | finish no earlier than 2012-06-26 17:00 |  | 15h |  | RM项目1.0- | RM项目1.0 | 200-测试总结评审 | ܁D | ܁F |
| 201 | 3.2.3.22 | 用户文档编制 |  | 1.88d | 2012-06-20 08:30 A | 2012-06-21 17:00 A |  | 100% |  |  | start no earlier than 2011-09-26 08:00 |  | 15h | 15h | RM项目1.0- | RM项目1.0 | 201-用户文档编制 |  |  |
| 202 | 3.2.3.23 | 用户文档测试 |  | 0.5d | 2012-06-20 08:30 A | 2012-06-20 14:00 A |  | 100% |  |  | start no earlier than 2011-10-09 08:00 |  | 4h | 4h | RM项目1.0- | RM项目1.0 | 202-用户文档测试 |  |  |
| 203 | 3.2.3.24 | **演示与发布** |  | 0.5d | 2012-06-28 08:00 A | 2012-06-28 14:00 A |  | 100% |  |  |  |  | 8h | 8h | RM项目1.0- | RM项目1.0 | 203-演示与发布 |  |  |
| 204 | 3.2.3.24.1 | 迭代演示 |  | 0.5d | 2012-06-28 08:00 A | 2012-06-28 14:00 A |  | 100% |  |  | start no earlier than 2011-10-09 08:00 |  | 4h | 4h | RM项目1.0- | RM项目1.0 | 204-迭代演示 |  |  |
| 205 | 3.2.3.24.2 | 验收发布 |  | 0.5d | 2012-06-28 08:00 A | 2012-06-28 14:00 A |  | 100% |  |  | start no earlier than 2011-10-09 08:00 |  | 4h | 4h | RM项目1.0- | RM项目1.0 | 205-验收发布 |  |  |

Notes:
- 183: 代码是否符合规范。 / 代码设计是否合理
- 185: 支持开发中遇到的框架上的问题
- 188: 支持开发提出的需求问题

| ID | WBS | Task | Type | Duration | Start | Finish | Remaining | Total slack | Constraint | Resources | Work | 配置项名称 | 项目标题 | 任务 | 评审方式 | 新产品可裁剪 | 产品升级可裁剪 | 交付件名称 |
| --- | --- | --- | --- | --- | --- | --- | --- | --- | --- | --- | --- | --- | --- | --- | --- | --- | --- | --- |
| 206 | 3.2.3.25 | **合同付款** |  | 1d? | 2012-06-29 09:00 | 2012-06-29 18:00 |  | 2d |  |  | 16h | RM项目1.0- | RM项目1.0 | 206-合同付款 |  |  |  |  |
| 207 | 3.2.3.25.1 | 要求对方提供项目款发票 |  | 1d? | 2012-06-29 09:00 | 2012-06-29 18:00 |  | 2d | start no earlier than 2012-06-29 08:00 | 潘总 | 8h | RM项目1.0- | RM项目1.0 | 207-要求对方提供项目款发票 |  |  |  |  |
| 208 | 3.2.3.25.2 | 支付项目款 |  | 1d? | 2012-06-29 09:00 | 2012-06-29 18:00 |  | 2d | start no earlier than 2012-06-29 08:00 | 潘总 | 8h | RM项目1.0- | RM项目1.0 | 208-支付项目款 |  |  |  |  |
| 209 | 4 | **验收** |  | 8d? | 2012-06-22 09:00 | 2012-07-03 18:00 |  | 0d |  |  | 80h | RM项目1.0- | RM项目1.0 | 209-验收 |  |  |  |  |
| 210 | 4.1 | **产品试运行** |  | 5.88d | 2012-06-22 09:00 | 2012-06-29 17:00 |  | 2.12d |  |  | 16h | RM项目1.0- | RM项目1.0 | 210-产品试运行 |  |  |  |  |
| 211 | 4.1.1 | 搭建试运行环境 |  | 0.5d | 2012-06-22 09:00 | 2012-06-22 14:00 |  | 7.5d | start no earlier than 2012-06-22 08:00 |  | 4h | RM项目1.0- | RM项目1.0 | 211-搭建试运行环境 |  |  |  |  |
| 212 | 4.1.2 | 产品试运行及缺陷修复 |  | 5.88d | 2012-06-22 09:00 | 2012-06-29 17:00 |  | 2.12d | finish no earlier than 2012-06-29 17:00 |  | 12h | RM项目1.0- | RM项目1.0 | 212-产品试运行及缺陷修复 |  |  |  |  |
| 213 | 4.2 | **系统验收** |  | 6.5d | 2012-06-22 09:00 | 2012-07-02 14:00 |  | 1.5d |  |  | 16h | RM项目1.0- | RM项目1.0 | 213-系统验收 |  |  |  |  |
| 214 | 4.2.1 | 搭建验收环境 |  | 0.5d | 2012-06-22 09:00 | 2012-06-22 14:00 |  | 7.5d | start no earlier than 2012-06-22 08:00 |  | 4h | RM项目1.0- | RM项目1.0 | 214-搭建验收环境 |  |  |  |  |
| 215 | 4.2.2 | 系统验收 | milestone | 1.5d | 2012-06-29 09:00 | 2012-07-02 14:00 |  | 1.5d | start no earlier than 2012-06-29 08:00 |  | 12h | RM项目1.0- | RM项目1.0 | 215-系统验收 |  |  |  |  |
| 216 | 4.3 | **合同付款** |  | 1d? | 2012-07-02 09:00 | 2012-07-02 18:00 |  | 1d |  |  |  | RM项目1.0- | RM项目1.0 | 216-合同付款 |  |  |  |  |
| 217 | 4.3.1 | 要求对方提供项目款发票 |  | 1d? | 2012-07-02 09:00 | 2012-07-02 18:00 |  | 1d | start no earlier than 2012-07-02 08:00 |  |  | RM项目1.0- | RM项目1.0 | 217-要求对方提供项目款发票 |  |  |  |  |
| 218 | 4.3.2 | 支付项目款 |  | 1d? | 2012-07-02 09:00 | 2012-07-02 18:00 |  | 1d | start no earlier than 2012-07-02 08:00 |  |  | RM项目1.0- | RM项目1.0 | 218-支付项目款 |  |  |  |  |
| 219 | 4.4 | **系统发布** |  | 1d | 2012-07-02 09:00 | 2012-07-02 18:00 |  | 1d |  |  |  | RM项目1.0- | RM项目1.0 | 219-系统发布 | ܁m | ܁Y | ܁[ |  |
| 220 | 4.4.1 | 搭建运行环境 |  | 0.5d | 2012-07-02 09:00 | 2012-07-02 14:00 |  | 1.5d | start no earlier than 2012-07-02 08:00 |  |  | RM项目1.0- | RM项目1.0 | 220-搭建运行环境 |  | ܁Y | ܁[ |  |
| 221 | 4.4.2 | 安装运行 |  | 0.5d | 2012-07-02 09:00 | 2012-07-02 14:00 |  | 1.5d | start no earlier than 2012-07-02 08:00 |  |  | RM项目1.0- | RM项目1.0 | 221-安装运行 |  | ܁Y | ܁[ |  |
| 222 | 4.4.3 | 客户数据初始化 |  | 1d | 2012-07-02 09:00 | 2012-07-02 18:00 |  | 1d | start no earlier than 2012-07-02 08:00 |  |  | RM项目1.0- | RM项目1.0 | 222-客户数据初始化 |  | ܁Y | ܁[ |  |
| 223 | 4.5 | 客户问题反馈与处理 |  | 2d | 2012-07-02 09:00 | 2012-07-03 18:00 |  | 0d | start no earlier than 2012-07-02 08:00 |  | 48h | RM项目1.0- | RM项目1.0 | 223-客户问题反馈与处理 |  | ܁Y | ܁[ |  |
| 224 | 5 | **配置管理** |  | 571d? | 2010-04-27 09:00 A | 2012-06-27 18:00 | 571d? | 4d |  |  | 140h | RM项目1.0- | RM项目1.0 | 224-配置管理 |  | ܁Y | ܁[ |  |
| 225 | 5.1 | **制定配置管理计划** |  | 0.5d | 2012-04-27 09:00 | 2012-04-27 14:00 |  | 54.5d |  |  | 8h | RM项目1.0- | RM项目1.0 | 225-制定配置管理计划 |  | ܁Y | ܁[ |  |
| 226 | 5.1.1 | 编写项目配置管理计划 |  | 0.5d | 2012-04-27 09:00 | 2012-04-27 14:00 |  | 54.5d | start no earlier than 2012-04-27 08:00 | 甘志杰 | 4h | RM项目1.0- | RM项目1.0 | 226-编写项目配置管理计划 |  |  |  |  |
| 227 | 5.1.2 | 评审项目配置管理计划 |  | 0.5d | 2012-04-27 09:00 | 2012-04-27 14:00 |  | 54.5d | start no earlier than 2012-04-27 08:00 | 甘志杰 | 4h | RM项目1.0- | RM项目1.0 | 227-评审项目配置管理计划 |  |  |  |  |
| 228 | 5.2 | **创建和维护配置库** |  | 521d | 2010-04-27 09:00 | 2012-04-27 18:00 |  | 54d |  |  | 16h | RM项目1.0- | RM项目1.0 | 228-创建和维护配置库 |  | ܁Y | ܁[ |  |
| 229 | 5.2.1 | 创建配置库 |  | 0.5d | 2010-04-27 09:00 | 2010-04-27 14:00 |  | 574.5d | start no earlier than 2010-04-27 08:00 | 甘志杰 | 4h | RM项目1.0- | RM项目1.0 | 229-创建配置库 |  | ܁Y | ܁[ |  |
| 230 | 5.2.2 | 创建配置项 |  | 1d | 2012-04-26 17:00 | 2012-04-27 17:00 |  | 54.12d | finish no earlier than 2012-04-27 17:00 | 甘志杰 | 4h | RM项目1.0- | RM项目1.0 | 230-创建配置项 |  | ܁Y | ܁[ |  |
| 231 | 5.2.3 | 项目权限设计 |  | 0.5d | 2012-04-27 09:00 | 2012-04-27 14:00 |  | 54.5d | start no earlier than 2012-04-27 08:00 | 甘志杰 | 4h | RM项目1.0-项目权限配置表 | RM项目1.0 | 231-项目权限设计 |  | ܁Y | ܁[ | 项目权限配置表 |
| 232 | 5.2.4 | 配置权限分配 |  | 1d | 2012-04-27 09:00 | 2012-04-27 18:00 |  | 54d | start no earlier than 2012-04-27 08:00 | 甘志杰 [50%] | 4h | RM项目1.0- | RM项目1.0 | 232-配置权限分配 |  | ܁Y | ܁[ |  |

| ID | WBS | Task | Duration | Start | Finish | Remaining | Total slack | Constraint | Resources | Work | 配置项名称 | 项目标题 | 任务 | 新产品可裁剪 | 产品升级可裁剪 | 是否工作包 |
| --- | --- | --- | --- | --- | --- | --- | --- | --- | --- | --- | --- | --- | --- | --- | --- | --- |
| 233 | 5.3 | **创建基线** | 51d? | 2012-04-27 09:00 A | 2012-06-27 18:00 | 51d? | 4d |  |  | 116h | RM项目1.0- | RM项目1.0 | 233-创建基线 | ܁Y | ܁[ |  |
| 234 | 5.3.1 | **立项基线** | 1d? | 2012-04-27 09:00 | 2012-04-27 18:00 |  | 54d |  |  | 16h | RM项目1.0- | RM项目1.0 | 234-立项基线 |  |  |  |
| 235 | 5.3.1.1 | 配置审计 | 1d? | 2012-04-27 09:00 | 2012-04-27 18:00 |  | 54d | start no earlier than 2012-04-27 08:00 | 甘志杰 [50%] | 4h | RM项目1.0- | RM项目1.0 | 235-配置审计 |  |  |  |
| 236 | 5.3.1.2 | 建立基线 | 1d? | 2012-04-27 09:00 | 2012-04-27 18:00 |  | 54d | start no earlier than 2012-04-27 08:00 | 甘志杰 [50%] | 4h | RM项目1.0- | RM项目1.0 | 236-建立基线 |  |  |  |
| 237 | 5.3.1.3 | 审计基线 | 1d? | 2012-04-27 09:00 | 2012-04-27 18:00 |  | 54d | start no earlier than 2012-04-27 08:00 | 甘志杰 [50%] | 4h | RM项目1.0- | RM项目1.0 | 237-审计基线 |  |  |  |
| 238 | 5.3.1.4 | 配置项与基线跟踪 | 1d? | 2012-04-27 09:00 | 2012-04-27 18:00 |  | 54d | start no earlier than 2012-04-27 08:00 | 甘志杰 [50%] | 4h | RM项目1.0- | RM项目1.0 | 238-配置项与基线跟踪 |  |  |  |
| 239 | 5.3.2 | **迭代开发基线** | 48d? | 2012-05-02 09:00 A | 2012-06-27 18:00 | 48d? | 4d |  |  | 68h | RM项目1.0- | RM项目1.0 | 239-迭代开发基线 |  |  |  |
| 240 | 5.3.2.1 | **第1次迭代** | 10.5d | 2012-05-21 09:00 A | 2012-05-31 14:00 | 10.5d | 26.5d |  |  | 12h | RM项目1.0- | RM项目1.0 | 240-第1次迭代 | ܁Y | ܁[ | ܁@ |
| 241 | 5.3.2.1.1 | 建立测试版本 | 0.5d | 2012-05-21 09:00 | 2012-05-21 14:00 |  | 36.5d | start no earlier than 2012-05-21 08:00 | 甘志杰 | 4h | RM项目1.0- | RM项目1.0 | 241-建立测试版本 | ܁Y | ܁[ |  |
| 242 | 5.3.2.1.2 | 建立迭代版本 | 0.5d | 2012-05-25 09:00 | 2012-05-25 14:00 |  | 32.5d | start no earlier than 2012-05-25 08:00 | 甘志杰 | 4h | RM项目1.0- | RM项目1.0 | 242-建立迭代版本 | ܁Y | ܁[ |  |
| 243 | 5.3.2.1.3 | 建立产品版本 | 0.5d | 2012-05-31 08:00 A | 2012-05-31 14:00 | 0.5d | 26.5d | start no earlier than 2010-07-27 08:00 | 甘志杰 | 4h | RM项目1.0- | RM项目1.0 | 243-建立产品版本 | ܁Y | ܁[ |  |
| 244 | 5.3.2.2 | **第2次迭代** | 16d? | 2012-06-08 09:00 | 2012-06-27 18:00 |  | 4d |  |  | 24h | RM项目1.0- | RM项目1.0 | 244-第2次迭代 |  |  | ܁@ |
| 245 | 5.3.2.2.1 | 建立测试版本 | 1d? | 2012-06-08 09:00 | 2012-06-08 18:00 |  | 19d | start no earlier than 2012-06-08 08:00 | 甘志杰 | 8h | RM项目1.0- | RM项目1.0 | 245-建立测试版本 |  |  |  |
| 246 | 5.3.2.2.2 | 建立迭代版本 | 1d? | 2012-06-22 09:00 | 2012-06-22 18:00 |  | 7d | start no earlier than 2012-06-22 08:00 | 甘志杰 | 8h | RM项目1.0- | RM项目1.0 | 246-建立迭代版本 |  |  |  |
| 247 | 5.3.2.2.3 | 建立产品版本 | 1d? | 2012-06-27 09:00 | 2012-06-27 18:00 |  | 4d | start no earlier than 2012-06-27 08:00 | 甘志杰 | 8h | RM项目1.0- | RM项目1.0 | 247-建立产品版本 |  |  |  |
| 248 | 5.3.2.3 | 配置审计 | 1d? | 2012-05-02 09:00 | 2012-05-02 18:00 |  | 51d | start no earlier than 2012-05-02 08:00 | 甘志杰 | 8h | RM项目1.0- | RM项目1.0 | 248-配置审计 |  |  |  |
| 249 | 5.3.2.4 | 建立基线 | 1d? | 2012-05-02 09:00 | 2012-05-02 18:00 |  | 51d | start no earlier than 2012-05-02 08:00 | 甘志杰 | 8h | RM项目1.0- | RM项目1.0 | 249-建立基线 |  |  |  |
| 250 | 5.3.2.5 | 审计基线 | 1d? | 2012-05-02 09:00 | 2012-05-02 18:00 |  | 51d | start no earlier than 2012-05-02 08:00 | 甘志杰 | 8h | RM项目1.0- | RM项目1.0 | 250-审计基线 |  |  |  |
| 251 | 5.3.2.6 | 配置项与基线跟踪 | 1d? | 2012-05-02 09:00 | 2012-05-02 18:00 |  | 51d | start no earlier than 2012-05-02 08:00 | 甘志杰 | 8h | RM项目1.0- | RM项目1.0 | 251-配置项与基线跟踪 |  |  |  |
| 252 | 5.3.3 | **发布基线** | 1d? | 2012-05-02 09:00 | 2012-05-02 18:00 |  | 51d |  |  | 32h | RM项目1.0- | RM项目1.0 | 252-发布基线 |  |  |  |
| 253 | 5.3.3.1 | 配置审计 | 1d? | 2012-05-02 09:00 | 2012-05-02 18:00 |  | 51d | start no earlier than 2012-05-02 08:00 | 甘志杰 | 8h | RM项目1.0- | RM项目1.0 | 253-配置审计 |  |  |  |
| 254 | 5.3.3.2 | 建立基线 | 1d? | 2012-05-02 09:00 | 2012-05-02 18:00 |  | 51d | start no earlier than 2012-05-02 08:00 | 甘志杰 | 8h | RM项目1.0- | RM项目1.0 | 254-建立基线 |  |  |  |
| 255 | 5.3.3.3 | 审计基线 | 1d? | 2012-05-02 09:00 | 2012-05-02 18:00 |  | 51d | start no earlier than 2012-05-02 08:00 | 甘志杰 | 8h | RM项目1.0- | RM项目1.0 | 255-审计基线 |  |  |  |
| 256 | 5.3.3.4 | 配置项与基线跟踪 | 1d? | 2012-05-02 09:00 | 2012-05-02 18:00 |  | 51d | start no earlier than 2012-05-02 08:00 | 甘志杰 | 8h | RM项目1.0- | RM项目1.0 | 256-配置项与基线跟踪 |  |  |  |

| ID | WBS | Task | Type | Duration | Start | Finish | Complete | Remaining | Total slack | Constraint | Work | Actual work | 配置项名称 | 项目标题 | 任务 | 新产品可裁剪 | 产品升级可裁剪 |
| --- | --- | --- | --- | --- | --- | --- | --- | --- | --- | --- | --- | --- | --- | --- | --- | --- | --- |
| 257 | 6 | **质量保证** |  | 61d? | 2012-04-17 09:00 A | 2012-06-29 18:00 | 2% | 59.49d? | 2d |  | 72.04h | 4.04h | RM项目1.0- | RM项目1.0 | 257-质量保证 | ܁D | ܁G |
| 258 | 6.1 | **立项阶段** |  | 17.88d? | 2012-04-17 09:00 A | 2012-05-10 17:00 | 4% | 17.07d? | 45.12d |  | 20.04h | 0.04h | RM项目1.0- | RM项目1.0 | 258-立项阶段 |  |  |
| 259 | 6.1.1 | QA辅导 |  | 2.88d | 2012-04-17 09:00 | 2012-04-19 17:00 |  |  | 60.12d | finish no earlier than 2012-04-19 17:00 |  |  | RM项目1.0- | RM项目1.0 | 259-QA辅导 |  |  |
| 260 | 6.1.2 | **QA检查** |  | 11d | 2012-04-19 17:00 A | 2012-05-04 17:00 | 5% | 10.41d | 49.12d |  | 16.04h | 0.04h | RM项目1.0- | RM项目1.0 | 260-QA检查 |  |  |
| 261 | 6.1.2.1 | 立项阶段流程检查 |  | 6d | 2012-04-19 17:00 | 2012-04-27 17:00 |  |  | 54.12d | finish no earlier than 2012-04-27 17:00 | 4h |  | RM项目1.0- | RM项目1.0 | 261-立项阶段流程检查 |  |  |
| 262 | 6.1.2.2 | 客户需求分析评审检查 |  | 6.12d | 2012-04-19 17:00 A | 2012-04-27 18:00 |  | 6.12d | 54d | finish no earlier than 2012-04-28 17:00 | 2h |  | RM项目1.0- | RM项目1.0 | 262-客户需求分析评审检查 | ܁D | ܁F |
| 263 | 6.1.2.3 | 市场可行性分析评审检查 |  | 7d | 2012-04-19 17:00 | 2012-04-30 17:00 |  |  | 53.12d | start no earlier than 2012-04-19 17:00 | 2h |  | RM项目1.0- | RM项目1.0 | 263-市场可行性分析评审检查 |  |  |
| 264 | 6.1.2.4 | 技术可行性分析评审检查 |  | 7d | 2012-04-19 17:00 | 2012-04-30 17:00 |  |  | 53.12d | start no earlier than 2012-04-19 17:00 | 2h |  | RM项目1.0- | RM项目1.0 | 264-技术可行性分析评审检查 |  |  |
| 265 | 6.1.2.5 | 项目立项报告评审检查 |  | 7d | 2012-04-19 17:00 | 2012-04-30 17:00 |  |  | 53.12d | start no earlier than 2012-04-19 17:00 | 2h |  | RM项目1.0- | RM项目1.0 | 265-项目立项报告评审检查 |  |  |
| 266 | 6.1.2.6 | 检查结果反馈、确认 |  | 0.25d | 2012-05-03 08:00 A | 2012-05-03 11:00 |  | 0.25d | 50.75d | finish no earlier than 2010-07-15 17:00 | 4h |  | RM项目1.0- | RM项目1.0 | 266-检查结果反馈、确认 | ܁D | ܁F |
| 267 | 6.1.2.7 | 不符合项跟踪、验证 |  | 1.88d | 2012-05-03 08:00 A | 2012-05-04 17:00 A | 100% |  |  | finish no earlier than 2012-05-03 08:00 | 0.04h | 0.04h | RM项目1.0- | RM项目1.0 | 267-不符合项跟踪、验证 | ܁D | ܁F |
| 268 | 6.1.3 | 立项基线配置检查 |  | 1.88d? | 2012-05-03 09:00 | 2012-05-04 17:00 |  |  | 49.12d | start no earlier than 2012-05-03 08:00 |  |  | RM项目1.0- | RM项目1.0 | 268-立项基线配置检查 |  |  |
| 269 | 6.1.4 | QA工作报告编制 |  | 1.88d | 2012-05-09 09:00 | 2012-05-10 17:00 |  |  | 45.12d | start no earlier than 2012-05-09 08:00 | 4h |  | RM项目1.0- | RM项目1.0 | 269-QA工作报告编制 |  |  |
| 270 | 6.2 | **迭代开发** |  | 50.88d | 2012-04-26 09:00 A | 2012-06-26 17:00 | 2% | 50.08d | 5.12d |  | 52h | 4h | RM项目1.0- | RM项目1.0 | 270-迭代开发 |  |  |
| 271 | 6.2.1 | **第1迭代** |  | 49.88d | 2012-04-26 09:00 A | 2012-06-25 17:00 | 1% | 49.25d | 6.12d |  | 48h | 4h | RM项目1.0- | RM项目1.0 | 271-第1迭代 |  |  |
| 272 | 6.2.1.1 | 编制《QA工作计划》 |  | 2d | 2012-04-27 08:00 A | 2012-04-30 18:00 |  | 2d | 53d | finish no earlier than 2012-04-28 17:00 | 4h |  | RM项目1.0- | RM项目1.0 | 272-编制《QA工作计划》 | ܁D | ܁F |
| 273 | 6.2.1.2 | 评审《QA工作计划》 |  | 0.5d | 2012-04-28 08:00 A | 2012-04-30 14:00 | 25% | 0.38d | 53.5d | start no earlier than 2010-07-16 08:00 | 4h | 1h | RM项目1.0- | RM项目1.0 | 273-评审《QA工作计划》 | ܁D | ܁F |
| 274 | 6.2.1.3 | 辅助项目经理进行项目裁剪、估算、计划、评审、配置等 | milestone | 0d | 2012-04-28 08:00 A | 2012-04-28 08:00 A | 100% |  |  | finish no earlier than 2012-04-28 08:00 |  |  | RM项目1.0- | RM项目1.0 | 274-辅助项目经理进行项目裁剪、估算、计划、评审、配置等 | ܁D | ܁F |
| 275 | 6.2.1.4 | QA辅导 |  | 5.88d | 2012-04-27 09:00 | 2012-05-04 17:00 |  |  | 49.12d | finish no earlier than 2012-05-04 17:00 | 4h |  | RM项目1.0- | RM项目1.0 | 275-QA辅导 |  |  |
| 276 | 6.2.1.5 | **QA检查** |  | 29.5d | 2012-04-26 09:00 A | 2012-05-31 14:00 | 11% | 26.34d | 26.5d |  | 28h | 3h | RM项目1.0- | RM项目1.0 | 276-QA检查 |  |  |
| 277 | 6.2.1.5.1 | 迭代开发流程检查 |  | 0.5d | 2012-04-26 09:00 | 2012-04-26 14:00 |  |  | 55.5d | start no earlier than 2012-04-26 09:00 | 4h |  | RM项目1.0- | RM项目1.0 | 277-迭代开发流程检查 |  |  |
| 278 | 6.2.1.5.2 | 用户故事评审检查 |  | 0.5d | 2012-04-26 09:00 | 2012-04-26 14:00 |  |  | 55.5d | start no earlier than 2012-04-26 08:00 | 4h |  | RM项目1.0- | RM项目1.0 | 278-用户故事评审检查 |  |  |
| 279 | 6.2.1.5.3 | 概要设计评审检查 | milestone | 0d | 2012-05-03 08:00 A | 2012-05-03 08:00 A | 100% |  |  | finish no earlier than 2012-04-26 09:00 |  |  | RM项目1.0- | RM项目1.0 | 279-概要设计评审检查 | ܁D | ܁F |
| 280 | 6.2.1.5.4 | 测试方案评审检查 |  | 0.5d | 2012-05-09 09:00 | 2012-05-09 14:00 |  |  | 46.5d | start no earlier than 2012-05-09 08:30 | 4h |  | RM项目1.0- | RM项目1.0 | 280-测试方案评审检查 |  |  |
| 281 | 6.2.1.5.5 | 编码活动检查 |  | 0.5d | 2012-05-03 08:00 A | 2012-05-03 14:00 | 25% | 0.38d | 50.5d | finish no earlier than 2010-09-14 17:00 | 4h | 1h | RM项目1.0- | RM项目1.0 | 281-编码活动检查 | ܁D | ܁F |
| 282 | 6.2.1.5.6 | 测试用例评审检查 |  | 0.5d | 2012-05-09 08:30 A | 2012-05-09 14:00 | 50% | 0.25d | 46.5d |  | 4h | 2h | RM项目1.0- | RM项目1.0 | 282-测试用例评审检查 | ܁D | ܁F |
| 283 | 6.2.1.5.7 | 测试报告评审检查 |  | 0.5d | 2012-05-31 09:00 | 2012-05-31 14:00 |  |  | 26.5d | start no earlier than 2012-05-31 08:00 | 4h |  | RM项目1.0- | RM项目1.0 | 283-测试报告评审检查 |  |  |
| 284 | 6.2.1.5.8 | 检查结果反馈、确认 |  | 0.25d | 2012-05-31 09:00 A | 2012-05-31 11:00 |  | 0.25d | 26.75d | finish no earlier than 2010-09-14 17:00 | 2h |  | RM项目1.0- | RM项目1.0 | 284-检查结果反馈、确认 | ܁D | ܁F |
| 285 | 6.2.1.5.9 | 不符合项跟踪、验证 |  | 0.25d | 2012-05-31 09:00 A | 2012-05-31 11:00 |  | 0.25d | 26.75d | start no earlier than 2010-09-15 08:00 | 2h |  | RM项目1.0- | RM项目1.0 | 285-不符合项跟踪、验证 | ܁D | ܁F |
| 286 | 6.2.1.6 | 迭代配置检查 |  | 20.88d | 2012-05-31 09:00 | 2012-06-25 17:00 |  |  | 6.12d | start no earlier than 2012-05-31 09:00 | 4h |  | RM项目1.0- | RM项目1.0 | 286-迭代配置检查 |  |  |
| 287 | 6.2.1.7 | QA工作报告编制 |  | 6.88d | 2012-05-25 08:00 A | 2012-05-31 17:00 |  | 6.88d | 26.12d | finish no earlier than 2012-06-01 17:00 | 4h |  | RM项目1.0- | RM项目1.0 | 287-QA工作报告编制 | ܁D | ܁F |

| ID | WBS | Task | Duration | Start | Finish | Predecessors | Complete | Remaining | Total slack | Free slack | Constraint | Work | 配置项名称 | 项目标题 | 任务 | 新产品可裁剪 | 产品升级可裁剪 |
| --- | --- | --- | --- | --- | --- | --- | --- | --- | --- | --- | --- | --- | --- | --- | --- | --- | --- |
| 288 | 6.2.2 | **第2迭代** | 46.88d | 2012-05-02 09:00 A | 2012-06-26 17:00 |  | 2% | 45.97d | 5.12d |  |  | 4h | RM项目1.0- | RM项目1.0 | 288-第2迭代 |  |  |
| 289 | 6.2.2.1 | 编制《QA工作计划》 | 0.5d | 2012-05-18 08:00 A | 2012-05-18 14:00 |  |  | 0.5d | 38.5d |  | start no earlier than 2010-07-16 08:00 |  | RM项目1.0- | RM项目1.0 | 289-编制《QA工作计划》 | ܁D | ܁F |
| 290 | 6.2.2.2 | 评审《QA工作计划》 | 0.5d | 2012-05-21 08:00 A | 2012-05-21 14:00 |  | 25% | 0.38d | 36.5d |  | start no earlier than 2010-07-16 08:00 |  | RM项目1.0- | RM项目1.0 | 290-评审《QA工作计划》 | ܁D | ܁F |
| 291 | 6.2.2.3 | 辅助项目经理进行项目裁剪、估算、计划、评审、配置等 | 0.25d | 2012-05-21 08:00 A | 2012-05-21 11:00 |  |  | 0.25d | 36.75d |  | start no earlier than 2010-07-16 08:00 |  | RM项目1.0- | RM项目1.0 | 291-辅助项目经理进行项目裁剪、估算、计划、评审、配置等 | ܁D | ܁F |
| 292 | 6.2.2.4 | QA辅导 | 3.88d | 2012-05-21 09:00 | 2012-05-24 17:00 |  |  |  | 33.12d |  | finish no earlier than 2012-05-24 17:00 |  | RM项目1.0- | RM项目1.0 | 292-QA辅导 |  |  |
| 293 | 6.2.2.5 | **QA检查** | 44.5d | 2012-05-02 09:00 A | 2012-06-22 14:00 |  | 3% | 43.26d | 7.5d |  |  |  | RM项目1.0- | RM项目1.0 | 293-QA检查 |  |  |
| 294 | 6.2.2.5.1 | 迭代开发流程检查 | 0.5d | 2012-05-02 09:00 | 2012-05-02 14:00 |  |  |  | 51.5d |  | start no earlier than 2012-05-02 08:00 |  | RM项目1.0- | RM项目1.0 | 294-迭代开发流程检查 |  |  |
| 295 | 6.2.2.5.2 | 用户故事评审检查 | 0.5d | 2012-05-03 09:00 | 2012-05-03 14:00 |  |  |  | 50.5d |  | start no earlier than 2012-05-03 08:00 |  | RM项目1.0- | RM项目1.0 | 295-用户故事评审检查 |  |  |
| 296 | 6.2.2.5.3 | 概要设计评审检查 | 0.5d | 2012-05-04 08:00 A | 2012-05-04 14:00 |  | 25% | 0.38d | 49.5d |  | finish no earlier than 2010-09-14 17:00 |  | RM项目1.0- | RM项目1.0 | 296-概要设计评审检查 | ܁D | ܁F |
| 297 | 6.2.2.5.4 | 测试方案评审检查 | 0.5d | 2012-05-07 09:00 | 2012-05-07 14:00 |  |  |  | 48.5d |  | start no earlier than 2012-05-07 08:00 |  | RM项目1.0- | RM项目1.0 | 297-测试方案评审检查 |  |  |
| 298 | 6.2.2.5.5 | 编码活动检查 | 0.5d | 2012-05-08 08:00 A | 2012-05-08 14:00 |  | 25% | 0.38d | 47.5d |  | finish no earlier than 2010-09-14 17:00 |  | RM项目1.0- | RM项目1.0 | 298-编码活动检查 | ܁D | ܁F |
| 299 | 6.2.2.5.6 | 测试用例评审检查 | 0.5d | 2012-05-09 08:00 A | 2012-05-09 14:00 |  | 50% | 0.25d | 46.5d |  |  |  | RM项目1.0- | RM项目1.0 | 299-测试用例评审检查 | ܁D | ܁F |
| 300 | 6.2.2.5.7 | 测试报告评审检查 | 14.5d | 2012-06-06 09:00 | 2012-06-22 14:00 |  |  |  | 7.5d |  | start no earlier than 2012-06-06 08:30 |  | RM项目1.0- | RM项目1.0 | 300-测试报告评审检查 |  |  |
| 301 | 6.2.2.5.8 | 检查结果反馈、确认 | 0.25d | 2012-06-14 08:30 A | 2012-06-14 11:00 |  |  | 0.25d | 14.75d |  | finish no earlier than 2012-06-26 11:00 |  | RM项目1.0- | RM项目1.0 | 301-检查结果反馈、确认 | ܁D | ܁F |
| 302 | 6.2.2.5.9 | 不符合项跟踪、验证 | 0.25d | 2012-06-14 08:30 A | 2012-06-14 11:00 |  |  | 0.25d | 14.75d |  | finish no earlier than 2012-06-26 11:00 |  | RM项目1.0- | RM项目1.0 | 302-不符合项跟踪、验证 | ܁D | ܁F |
| 303 | 6.2.2.6 | 迭代配置检查 | 8.88d | 2012-06-15 09:00 | 2012-06-26 17:00 |  |  |  | 5.12d |  | start no earlier than 2012-06-15 08:30 | 4h | RM项目1.0- | RM项目1.0 | 303-迭代配置检查 |  |  |
| 304 | 6.2.2.7 | QA工作报告编制 | 0.5d | 2012-06-20 08:00 A | 2012-06-20 14:00 |  |  | 0.5d | 9.5d |  | finish no earlier than 2012-06-20 14:00 |  | RM项目1.0- | RM项目1.0 | 304-QA工作报告编制 | ܁D | ܁F |
| 305 | 6.3 | **验收发布阶段** | 6d? | 2012-06-22 09:00 A | 2012-06-29 18:00 |  |  | 6d? | 2d |  |  |  | RM项目1.0- | RM项目1.0 | 305-验收发布阶段 |  |  |
| 306 | 6.3.1 | QA计划维护调整 | 0.5d | 2012-06-22 09:00 | 2012-06-22 14:00 |  |  |  | 7d | 2.88d | start no earlier than 2012-06-22 08:00 |  | RM项目1.0- | RM项目1.0 | 306-QA计划维护调整 |  |  |
| 307 | 6.3.2 | QA辅导 | 0.5d | 2012-06-27 13:00 | 2012-06-27 17:00 | 306 |  |  | 4.12d |  | finish no earlier than 2012-06-27 17:00 |  | RM项目1.0- | RM项目1.0 | 307-QA辅导 |  |  |
| 308 | 6.3.3 | **QA检查** | 5.5d | 2012-06-22 09:00 | 2012-06-29 14:00 |  |  |  | 2.5d |  |  |  | RM项目1.0- | RM项目1.0 | 308-QA检查 |  |  |
| 309 | 6.3.3.1 | 验收发布阶段流程检查 | 0.5d | 2012-06-22 09:00 | 2012-06-22 14:00 |  |  |  | 7.5d |  | start no earlier than 2012-06-22 09:00 |  | RM项目1.0- | RM项目1.0 | 309-验收发布阶段流程检查 |  |  |
| 310 | 6.3.3.2 | 用户文档评审检查 | 0.5d | 2012-06-22 09:00 | 2012-06-22 14:00 |  |  |  | 7.5d |  | start no earlier than 2012-06-22 09:00 |  | RM项目1.0- | RM项目1.0 | 310-用户文档评审检查 |  |  |
| 311 | 6.3.3.3 | 客户培训活动检查 | 0.5d | 2012-06-26 09:00 | 2012-06-26 14:00 |  |  |  | 5.5d |  | start no earlier than 2012-06-26 08:00 |  | RM项目1.0- | RM项目1.0 | 311-客户培训活动检查 |  |  |
| 312 | 6.3.3.4 | 试运行活动检查 | 0.5d | 2012-06-26 09:00 | 2012-06-26 14:00 |  |  |  | 5.5d |  | start no earlier than 2012-06-26 09:00 |  | RM项目1.0- | RM项目1.0 | 312-试运行活动检查 |  |  |
| 313 | 6.3.3.5 | 验收测试活动检查 | 0.5d | 2012-06-26 14:00 | 2012-06-26 18:00 | 314 |  |  | 4.5d | 0d | start no earlier than 2012-06-26 09:00 |  | RM项目1.0- | RM项目1.0 | 313-验收测试活动检查 |  |  |
| 314 | 6.3.3.6 | 缺陷处理检查 | 0.5d | 2012-06-26 09:00 | 2012-06-26 14:00 |  |  |  | 4.5d | 0d | start no earlier than 2012-06-26 09:00 |  | RM项目1.0- | RM项目1.0 | 314-缺陷处理检查 |  |  |
| 315 | 6.3.3.7 | 验收报告检查 | 0.5d | 2012-06-27 09:00 | 2012-06-27 14:00 | 313 |  |  | 4.5d |  | start no earlier than 2012-06-26 09:00 |  | RM项目1.0- | RM项目1.0 | 315-验收报告检查 |  |  |
| 316 | 6.3.3.8 | 系统发布活动检查 | 0.5d | 2012-06-26 09:00 | 2012-06-26 14:00 |  |  |  | 5.5d |  | start no earlier than 2012-06-26 09:00 |  | RM项目1.0- | RM项目1.0 | 316-系统发布活动检查 |  |  |
| 317 | 6.3.3.9 | 检查结果反馈、确认 | 0.5d | 2012-06-29 09:00 | 2012-06-29 14:00 |  |  |  | 2.5d |  | start no earlier than 2012-06-29 08:00 |  | RM项目1.0- | RM项目1.0 | 317-检查结果反馈、确认 |  |  |
| 318 | 6.3.3.10 | 不符合项跟踪、验证 | 0.5d | 2012-06-29 09:00 | 2012-06-29 14:00 |  |  |  | 2.5d |  | start no earlier than 2012-06-29 09:00 |  | RM项目1.0- | RM项目1.0 | 318-不符合项跟踪、验证 |  |  |
| 319 | 6.3.4 | 发布基线配置检查 | 1d? | 2012-06-29 09:00 | 2012-06-29 18:00 |  |  |  | 2d |  | start no earlier than 2012-06-29 09:00 |  | RM项目1.0- | RM项目1.0 | 319-发布基线配置检查 |  |  |
| 320 | 6.3.5 | QA工作报告编制 | 0.5d | 2012-06-29 09:00 A | 2012-06-29 14:00 |  |  | 0.5d | 2.5d |  | finish no earlier than 2012-03-22 18:00 |  | RM项目1.0- | RM项目1.0 | 320-QA工作报告编制 | ܁D | ܁F |
