# RM项目1.0

Schedule from MS Project, 2010-04-27 to 2012-07-03, status date 2012-06-29, A marks actual dates.

## Calendars

- 标准: Mon-Fri 09:00-12:00, 13:00-18:00; Sat-Sun off. Exceptions (off unless hours are given): 2011-10-03 to 2011-10-07, 2011-10-08 to 2011-10-09 08:00-12:00, 13:00-17:00, 2012-05-12 08:00-12:00, 13:00-17:00, 2012-05-26 08:00-12:00, 13:00-17:00, 2012-06-02 08:00-12:00, 13:00-17:00.

## Resources

| Resource |
| --- |
| 李国艺 |
| 戴金平 |
| 甘志杰 |
| 梁朋 |
| 黄新龙 |
| 潘总 |
| 江岱伟 |
| 小唐 |
| 傅意成 |
| 小邱 |
| 小陆 |
| 小赵 |
| 王军武 |
| 测试组 |
| 项目经理 |

## Schedule

| ID | WBS | Task | Type | Duration | Start | Finish | Predecessors | Complete | Remaining | Total slack | Constraint | Resources | Work | Actual work | 配置项名称 | 项目标题 | 任务 | 交付件名称 | 是否工作包 | 新产品可裁剪 | 产品升级可裁剪 | 评审人员 | 评审方式 |
| --- | --- | --- | --- | --- | --- | --- | --- | --- | --- | --- | --- | --- | --- | --- | --- | --- | --- | --- | --- | --- | --- | --- | --- |
| 1 | 1 | **立项** |  | 9.5d | 2012-01-01 08:00 A | 2012-01-13 14:00 A |  | 100% |  |  |  |  | 84h | 84h | RM项目1.0- | RM项目1.0 | 1-立项 |  |  |  |  |  |  |
| 2 | 1.1 | 制定产品概念阶段进度计划 |  | 0.5d | 2012-01-02 08:00 A | 2012-01-02 14:00 A |  | 100% |  |  |  | 李国艺 | 4h | 4h | RM项目1.0-项目综合表 | RM项目1.0 | 2-制定产品概念阶段进度计划 | 项目综合表 | ܁@ | ܁Y | ܁[ |  |  |
| 3 | 1.2 | 市场可行性分析 | milestone | 0d | 2012-01-01 08:00 A | 2012-01-01 08:00 A |  | 100% |  |  | start no earlier than 2011-08-26 08:00 |  |  |  | RM项目1.0-市场可行性分析报告 | RM项目1.0 | 3-市场可行性分析 | 市场可行性分析报告 | ܁@ | ܁Z | ܁\ | 系统针对集团协同办公平台，不针对外部市场客户 |  |
| 4 | 1.3 | 技术可行性分析 |  | 0.5d | 2012-01-02 08:00 A | 2012-01-02 14:00 A |  | 100% |  |  | finish no earlier than 2012-01-03 17:00 | 戴金平 | 4h | 4h | RM项目1.0-技术可行性分析报告 | RM项目1.0 | 4-技术可行性分析 | 技术可行性分析报告 | ܁@ | ܁Y | ܁\ |  |  |
| 5 | 1.4 | 用户需求调研 |  | 3d | 2012-01-02 09:00 A | 2012-01-04 18:00 A | 3 | 100% |  |  | start no earlier than 2012-01-02 08:00 | 甘志杰 | 24h | 24h | RM项目1.0- | RM项目1.0 | 5-用户需求调研 |  |  |  |  |  |  |
| 6 | 1.5 | 用户需求分析 |  | 2d | 2012-01-04 08:00 A | 2012-01-06 17:00 A |  | 100% |  |  | finish no earlier than 2012-01-06 17:00 | 甘志杰 [150%] | 24h | 24h | RM项目1.0-客户需求分析表，用户故事列表 | RM项目1.0 | 6-用户需求分析 | 客户需求分析表，用户故事列表 | ܁@ |  |  | 不要求 |  |
| 7 | 1.6 | 用户需求确认 | milestone | 0d | 2012-01-09 08:00 A | 2012-01-09 08:00 A |  | 100% |  |  | start no earlier than 2011-08-29 08:00 | 甘志杰 |  |  | RM项目1.0-需求确认报告 | RM项目1.0 | 7-用户需求确认 | 需求确认报告 | ܁@ |  |  | 集团内部项目，了解需求的同时也相当于确认了 |  |
| 8 | 1.7 | 项目立项报告 |  | 0.5d | 2012-01-09 08:00 A | 2012-01-09 14:00 A |  | 100% |  |  | start no earlier than 2010-07-08 08:00 | 李国艺 | 4h | 4h | RM项目1.0-项目立项报告 | RM项目1.0 | 8-项目立项报告 | 项目立项报告 | ܁@ | ܁Y | ܁[ |  |  |
| 9 | 1.8 | 项目立项评审 |  | 0.5d | 2012-01-10 08:00 A | 2012-01-10 14:00 A |  | 100% |  |  | start no earlier than 2010-07-09 08:00 | 李国艺 | 4h | 4h | RM项目1.0- | RM项目1.0 | 9-项目立项评审 |  |  | ܁Y | ܁[ |  | ܁j |
| 10 | 1.9 | 项目启动会 | milestone | 0d | 2012-01-10 08:00 A | 2012-01-10 08:00 A |  | 100% |  |  | start no earlier than 2011-09-01 08:00 | 李国艺 |  |  | RM项目1.0-项目启动会议纪要 | RM项目1.0 | 10-项目启动会 | 项目启动会议纪要 | ܁@ | ܁Y | ܁\ | 单独沟通 |  |
| 11 | 1.10 | 项目策划 |  | 1d | 2012-01-11 08:00 A | 2012-01-11 18:00 A |  | 100% |  |  | finish no earlier than 2012-01-11 17:00 | 李国艺 | 8h | 8h | RM项目1.0-项目策划书 | RM项目1.0 | 11-项目策划 | 项目策划书 | ܁@ |  |  |  |  |
| 12 | 1.11 | 项目策划评审 |  | 0.5d | 2012-01-12 08:00 A | 2012-01-12 14:00 A | 11 | 100% |  |  |  | 李国艺 | 4h | 4h | RM项目1.0-评审报告 | RM项目1.0 | 12-项目策划评审 | 评审报告 | ܁@ |  |  | 现在已经是开发阶段 | ܁i |
| 13 | 1.12 | 立项阶段报告编制 |  | 0.5d | 2012-01-12 08:00 A | 2012-01-12 14:00 A |  | 100% |  |  | finish no earlier than 2010-07-16 17:00 | 李国艺 | 4h | 4h | RM项目1.0-迭代总结报告 | RM项目1.0 | 13-立项阶段报告编制 | 迭代总结报告 | ܁@ | ܁Y | ܁[ | 现在已经是开发阶段 |  |
| 14 | 1.13 | 立项阶段评审 |  | 0.5d | 2012-01-13 08:00 A | 2012-01-13 14:00 A |  | 100% |  |  | start no earlier than 2011-09-06 08:00 | 李国艺 | 4h | 4h | RM项目1.0- | RM项目1.0 | 14-立项阶段评审 |  |  | ܁Y | ܁[ | 现在已经是开发阶段 | ܁j |
| 15 | 2 | **供应商选择** |  | 88d? | 2012-01-02 09:00 A | 2012-05-02 18:00 |  | 82% | 16d? | 47d |  |  | 24h |  | RM项目1.0- | RM项目1.0 | 15-供应商选择 |  |  |  |  |  |  |
| 16 | 2.1 | 项目发包规划 |  | 1d? | 2012-01-02 09:00 A | 2012-01-02 18:00 A |  | 100% |  |  |  |  |  |  | RM项目1.0-系统开发招标文档 | RM项目1.0 | 16-项目发包规划 | 系统开发招标文档 |  |  |  |  |  |
| 17 | 2.2 | 寻找供应商 |  | 1d? | 2012-01-02 09:00 A | 2012-01-02 18:00 A |  | 100% |  |  |  |  |  |  | RM项目1.0- | RM项目1.0 | 17-寻找供应商 |  |  |  |  |  |  |
| 18 | 2.3 | 评估供应商 |  | 1d? | 2012-01-02 09:00 A | 2012-01-02 18:00 A |  | 100% |  |  |  |  |  |  | RM项目1.0- | RM项目1.0 | 18-评估供应商 |  |  |  |  |  |  |
| 19 | 2.4 | 初步需求沟通 |  | 1d? | 2012-01-02 09:00 A | 2012-01-02 18:00 A |  | 100% |  |  |  |  |  |  | RM项目1.0- | RM项目1.0 | 19-初步需求沟通 |  |  |  |  |  |  |
| 20 | 2.5 | 供应商系统DEMO演示 |  | 1d? | 2012-01-02 09:00 A | 2012-01-02 18:00 A |  | 100% |  |  |  |  |  |  | RM项目1.0- | RM项目1.0 | 20-供应商系统DEMO演示 |  |  |  |  |  |  |
| 21 | 2.6 | 供应商系统DEMO评审 |  | 1d? | 2012-01-02 09:00 A | 2012-01-02 18:00 A |  | 100% |  |  |  |  |  |  | RM项目1.0- | RM项目1.0 | 21-供应商系统DEMO评审 |  |  |  |  |  |  |
| 22 | 2.7 | 商务谈判 |  | 1d? | 2012-01-02 09:00 A | 2012-01-02 18:00 A |  | 100% |  |  |  |  |  |  | RM项目1.0-项目报价方案 | RM项目1.0 | 22-商务谈判 | 项目报价方案 |  |  |  |  |  |
| 23 | 2.8 | 编写外包合同 |  | 1d? | 2012-01-02 09:00 A | 2012-01-02 18:00 A |  | 100% |  |  |  |  |  |  | RM项目1.0-外包开发合同 | RM项目1.0 | 23-编写外包合同 | 外包开发合同 |  |  |  |  |  |
| 24 | 2.9 | 外包合同评审 |  | 1d? | 2012-01-02 09:00 | 2012-01-02 18:00 |  |  |  | 134d |  | 甘志杰 | 8h |  | RM项目1.0- | RM项目1.0 | 24-外包合同评审 |  |  |  |  |  |  |
| 25 | 2.10 | 外包合同签订 |  | 1d? | 2012-05-02 09:00 | 2012-05-02 18:00 |  |  |  | 47d | start no earlier than 2012-05-02 08:00 | 甘志杰; 潘总 | 16h |  | RM项目1.0- | RM项目1.0 | 25-外包合同签订 |  |  |  |  |  |  |
| 26 | 2.11 | 项目预付款 |  | 1d? | 2012-05-02 09:00 A | 2012-05-02 18:00 A |  | 100% |  |  | start no earlier than 2012-05-02 08:00 |  |  |  | RM项目1.0- | RM项目1.0 | 26-项目预付款 |  |  |  |  |  |  |

| ID | WBS | Task | Type | Duration | Start | Finish | Predecessors | Complete | Remaining | Total slack | Free slack | Constraint | Resources | Work | Actual work | 配置项名称 | 项目标题 | 任务 | 交付件名称 | 是否工作包 | 新产品可裁剪 | 产品升级可裁剪 | 评审人员 | 评审方式 |
| --- | --- | --- | --- | --- | --- | --- | --- | --- | --- | --- | --- | --- | --- | --- | --- | --- | --- | --- | --- | --- | --- | --- | --- | --- |
| 27 | 3 | **迭代开发** |  | 54d? | 2012-04-20 08:00 A | 2012-06-29 18:00 |  | 13% | 47.04d? | 2d |  |  |  | 2513h | 901h | RM项目1.0- | RM项目1.0 | 27-迭代开发 |  |  |  |  |  |  |
| 28 | 3.1 | **第1迭代** |  | 35.94d? | 2012-04-20 08:00 A | 2012-06-05 17:30 |  | 14% | 31.03d? | 20.06d |  |  |  | 1062h | 464h | RM项目1.0- | RM项目1.0 | 28-第1迭代 |  |  |  |  |  |  |
| 29 | 3.1.1 | **项目管理** |  | 31d | 2012-04-24 08:00 A | 2012-06-01 18:00 |  |  | 30.85d | 23d |  |  |  | 70.5h | 4h | RM项目1.0- | RM项目1.0 | 29-项目管理 |  |  |  |  |  |  |
| 30 | 3.1.1.1 | 迭代计划制定（迭代的裁剪、估算、计划、评审、配置） |  | 0.5d | 2012-04-24 08:00 A | 2012-04-24 14:00 A |  | 100% |  |  |  | start no earlier than 2011-09-07 08:00 | 李国艺 | 4h | 4h | RM项目1.0-项目综合表 | RM项目1.0 | 30-迭代计划制定（迭代的裁剪、估算、计划、评审、配置） | 项目综合表 | ܁@ |  |  |  |  |
| 31 | 3.1.1.2 | **监控** |  | 30d | 2012-04-25 09:00 | 2012-06-01 18:00 |  |  |  | 23d |  |  |  | 34.5h |  | RM项目1.0- | RM项目1.0 | 31-监控 |  |  |  |  |  |  |
| 32 | 3.1.1.2.1 | 周例会（完成功能确认） |  | 21d | 2012-05-04 17:00 | 2012-05-31 17:00 |  |  |  | 24.12d |  | finish no earlier than 2012-05-31 17:00 | 李国艺 [1.5%] | 2.5h |  | RM项目1.0-会议纪要 | RM项目1.0 | 32-周例会（完成功能确认） | 会议纪要 | ܁@ | ܁Y | ܁[ |  |  |
| 33 | 3.1.1.2.2 | 项目周报编制 |  | 21d | 2012-05-04 17:00 | 2012-05-31 17:00 |  |  |  | 24.12d |  | finish no earlier than 2012-05-31 17:00 | 李国艺 [1.2%] | 2h |  | RM项目1.0-项目周报 | RM项目1.0 | 33-项目周报编制 | 项目周报 | ܁@ | ܁Y | ܁[ |  |  |
| 34 | 3.1.1.2.3 | 偏差、风险、问题识别与跟踪 |  | 30d | 2012-04-25 09:00 | 2012-06-01 18:00 |  |  |  | 23d |  | start no earlier than 2012-04-25 08:00 | 李国艺 [10%] | 24h |  | RM项目1.0-项目周报 | RM项目1.0 | 34-偏差、风险、问题识别与跟踪 | 项目周报 | ܁@ | ܁Y | ܁[ |  |  |
| 35 | 3.1.1.2.4 | 项目月报的编制 |  | 0.25d | 2012-05-31 15:00 | 2012-05-31 17:00 |  |  |  | 24.12d |  | finish no earlier than 2012-05-31 17:00 | 李国艺 | 2h |  | RM项目1.0-项目月报 | RM项目1.0 | 35-项目月报的编制 | 项目月报 | ܁@ | ܁Y | ܁[ | 迭代总结报告代替 |  |
| 36 | 3.1.1.2.5 | 变更管理 |  | 25d | 2012-05-02 09:00 | 2012-06-01 18:00 |  |  |  | 23d |  | start no earlier than 2012-05-02 08:00 | 李国艺 [2%] | 4h |  | RM项目1.0-变更控制表 | RM项目1.0 | 36-变更管理 | 变更控制表 | ܁@ | ܁Y | ܁[ |  |  |
| 37 | 3.1.1.3 | 外部接口协调 |  | 7.88d | 2012-05-02 09:00 | 2012-05-11 17:00 |  |  |  | 39.62d | 15.5d | finish no earlier than 2012-05-11 17:00 | 李国艺 [6.1%]; 傅意成 [38%] | 24h |  | RM项目1.0- | RM项目1.0 | 37-外部接口协调 |  |  |  |  |  |  |
| 38 | 3.1.1.4 | **迭代总结** |  | 1.12d | 2012-05-31 13:00 | 2012-06-01 14:00 | 37 |  |  | 23.5d |  |  |  | 8h |  | RM项目1.0- | RM项目1.0 | 38-迭代总结 |  |  |  |  |  |  |
| 39 | 3.1.1.4.1 | 迭代1总结编制 |  | 0.5d | 2012-05-31 13:00 | 2012-05-31 17:00 |  |  |  | 24.12d |  | finish no earlier than 2012-05-31 17:00 | 李国艺 | 4h |  | RM项目1.0-迭代总结 | RM项目1.0 | 39-迭代1总结编制 | 迭代总结 | ܁@ |  |  |  |  |
| 40 | 3.1.1.4.2 | 迭代1总结评审 |  | 0.5d | 2012-06-01 09:00 | 2012-06-01 14:00 |  |  |  | 23.5d |  | start no earlier than 2012-06-01 08:00 | 李国艺 | 4h |  | RM项目1.0-评审报告 | RM项目1.0 | 40-迭代1总结评审 | 评审报告 |  |  |  |  | ܁j |
| 41 | 3.1.2 | **概要设计** |  | 2.75d | 2012-04-23 08:00 A | 2012-04-25 16:01 |  |  | 2.75d | 52.25d |  |  |  | 8h |  | RM项目1.0- | RM项目1.0 | 41-概要设计 |  |  |  |  |  |  |
| 42 | 3.1.2.1 | 设计（确认） |  | 0.25d | 2012-04-23 08:00 A | 2012-04-24 17:00 |  |  | 0.25d | 52.25d | 0d | finish no earlier than 2012-04-24 17:00 | 李国艺; 戴金平 | 4h |  | RM项目1.0-软件设计说明书 | RM项目1.0 | 42-设计（确认） | 软件设计说明书 | ܁@ |  |  |  |  |
| 43 | 3.1.2.2 | 评审 |  | 0.88d | 2012-04-24 08:00 A | 2012-04-25 16:01 | 42 |  | 0.88d | 52.25d |  | finish no earlier than 2012-04-24 17:00 | 李国艺 [57%] | 4h |  | RM项目1.0-评审报告 | RM项目1.0 | 43-评审 | 评审报告 |  |  |  | 此阶段已过 | ܁i |
| 44 | 3.1.3 | **业务需求** |  | 35.94d? | 2012-04-20 08:00 A | 2012-06-05 17:30 |  | 24% | 27.16d? | 20.06d |  |  |  | 983.5h | 460h | RM项目1.0- | RM项目1.0 | 44-业务需求 |  |  |  |  |  |  |
| 45 | 3.1.3.1 | 用户故事拆分（确认） |  | 0.5d | 2012-04-20 08:00 A | 2012-04-20 14:00 A |  | 100% |  |  |  | finish no earlier than 2012-01-06 17:00 | 黄新龙 | 4h | 4h | RM项目1.0- | RM项目1.0 | 45-用户故事拆分（确认） |  |  |  |  |  |  |
| 46 | 3.1.3.2 | 用户故事编写（确认） |  | 1d | 2012-04-24 08:00 A | 2012-04-24 18:00 A | 45 | 100% |  |  |  | finish no earlier than 2012-04-23 17:00 | 黄新龙 [150%] | 12h | 12h | RM项目1.0-用户故事 | RM项目1.0 | 46-用户故事编写（确认） | 用户故事 | ܁@ |  |  |  |  |
| 47 | 3.1.3.3 | 用户故事评审（确认） | milestone | 0.38d | 2012-04-26 08:00 A | 2012-04-26 12:00 A | 46 | 100% |  |  |  |  | 李国艺 | 3h | 3h | RM项目1.0-评审报告 | RM项目1.0 | 47-用户故事评审（确认） | 评审报告 |  |  |  |  | ܁i |
| 48 | 3.1.3.4 | 第一期详细设计 |  | 3d | 2012-05-02 09:00 | 2012-05-04 18:00 |  |  |  | 40.1d | 0d | start no earlier than 2012-05-02 08:30 | 江岱伟 | 24h |  | RM项目1.0- | RM项目1.0 | 48-第一期详细设计 |  |  |  |  |  |  |
| 49 | 3.1.3.5 | **招聘需求** |  | 2.9d | 2012-05-07 09:00 | 2012-05-09 17:12 |  |  |  | 40.1d |  |  |  | 23.2h |  | RM项目1.0- | RM项目1.0 | 49-招聘需求 |  |  |  |  |  |  |
| 50 | 3.1.3.5.1 | 编码 |  | 2d | 2012-05-07 09:00 | 2012-05-08 18:00 | 48 |  |  | 40.1d | 0d |  | 江岱伟 | 16h |  | RM项目1.0- | RM项目1.0 | 50-编码 |  |  |  |  |  |  |
| 51 | 3.1.3.5.2 | 测试 |  | 0.4d | 2012-05-09 09:00 | 2012-05-09 13:12 | 50 |  |  | 40.1d | 0d |  | 小唐 | 3.2h |  | RM项目1.0- | RM项目1.0 | 51-测试 |  |  |  |  |  |  |
| 52 | 3.1.3.5.3 | 走查 |  | 0.5d | 2012-05-09 13:12 | 2012-05-09 17:12 | 51 |  |  | 40.1d | 0d |  | 傅意成 | 4h |  | RM项目1.0- | RM项目1.0 | 52-走查 |  | ܁5 |  |  |  |  |

Notes:
- 32: 0.5 * 周会次数
- 36: 0.5 * 预计变更次数
- 37: 0.5 * 协调次数
- 52: 代码是否符合规范。 / 代码设计是否合理

| ID | WBS | Task | Duration | Start | Finish | Predecessors | Total slack | Free slack | Constraint | Resources | Work | 配置项名称 | 项目标题 | 任务 | 是否工作包 |
| --- | --- | --- | --- | --- | --- | --- | --- | --- | --- | --- | --- | --- | --- | --- | --- |
| 53 | 3.1.3.6 | **招聘设置-招聘负责人设定** | 1.45d | 2012-05-07 09:00 | 2012-05-08 13:36 |  | 43.55d |  |  |  | 11.6h | RM项目1.0- | RM项目1.0 | 53-招聘设置-招聘负责人设定 |  |
| 54 | 3.1.3.6.1 | 编码 | 1d | 2012-05-07 09:00 | 2012-05-07 18:00 | 48 | 43.55d | 0d |  | 小邱 | 8h | RM项目1.0- | RM项目1.0 | 54-编码 |  |
| 55 | 3.1.3.6.2 | 测试 | 0.2d | 2012-05-08 09:00 | 2012-05-08 10:36 | 54 | 43.55d | 0d |  | 小唐 | 1.6h | RM项目1.0- | RM项目1.0 | 55-测试 |  |
| 56 | 3.1.3.6.3 | 走查 | 0.25d | 2012-05-08 10:36 | 2012-05-08 13:36 | 55 | 43.55d |  |  | 傅意成 | 2h | RM项目1.0- | RM项目1.0 | 56-走查 | ܁5 |
| 57 | 3.1.3.7 | **招聘设置-招聘渠道定义** | 1.45d | 2012-05-07 09:00 | 2012-05-08 13:36 |  | 40.55d |  |  |  | 11.6h | RM项目1.0- | RM项目1.0 | 57-招聘设置-招聘渠道定义 |  |
| 58 | 3.1.3.7.1 | 编码 | 1d | 2012-05-07 09:00 | 2012-05-07 18:00 | 48 | 40.55d | 0d |  | 小陆 | 8h | RM项目1.0- | RM项目1.0 | 58-编码 |  |
| 59 | 3.1.3.7.2 | 测试 | 0.2d | 2012-05-08 09:00 | 2012-05-08 10:36 | 58 | 40.55d | 0d |  | 小唐 | 1.6h | RM项目1.0- | RM项目1.0 | 59-测试 |  |
| 60 | 3.1.3.7.3 | 走查 | 0.25d | 2012-05-08 10:36 | 2012-05-08 13:36 | 59 | 40.55d | 0d |  | 傅意成 | 2h | RM项目1.0- | RM项目1.0 | 60-走查 | ܁5 |
| 61 | 3.1.3.8 | **招聘需求汇总** | 3.6d | 2012-05-09 17:12 | 2012-05-14 14:00 |  | 38.5d |  |  |  | 23.2h | RM项目1.0- | RM项目1.0 | 61-招聘需求汇总 |  |
| 62 | 3.1.3.8.1 | 编码 | 2d | 2012-05-09 17:12 | 2012-05-11 17:12 | 52 | 40.1d |  |  | 小赵 | 16h | RM项目1.0- | RM项目1.0 | 62-编码 |  |
| 63 | 3.1.3.8.2 | 测试 | 0.4d | 2012-05-12 08:30 | 2012-05-12 11:42 |  | 39.54d |  | start no earlier than 2012-05-12 08:30 | 小唐 | 3.2h | RM项目1.0- | RM项目1.0 | 63-测试 |  |
| 64 | 3.1.3.8.3 | 走查 | 0.5d | 2012-05-14 09:00 | 2012-05-14 14:00 |  | 38.5d |  | start no earlier than 2012-05-14 08:00 | 傅意成 | 4h | RM项目1.0- | RM项目1.0 | 64-走查 | ܁5 |
| 65 | 3.1.3.9 | **招聘计划-制定招聘计划** | 3.45d | 2012-05-08 13:36 | 2012-05-11 17:12 |  | 40.1d |  |  |  | 23.2h | RM项目1.0- | RM项目1.0 | 65-招聘计划-制定招聘计划 |  |
| 66 | 3.1.3.9.1 | 编码 | 2d | 2012-05-08 13:36 | 2012-05-10 13:36 | 60 | 41.55d |  |  | 小邱 | 16h | RM项目1.0- | RM项目1.0 | 66-编码 |  |
| 67 | 3.1.3.9.2 | 测试 | 0.4d | 2012-05-11 09:00 | 2012-05-11 13:12 |  | 40.1d | 0d | start no earlier than 2012-05-11 08:30 | 小唐 | 3.2h | RM项目1.0- | RM项目1.0 | 67-测试 |  |
| 68 | 3.1.3.9.3 | 走查 | 0.5d | 2012-05-11 13:12 | 2012-05-11 17:12 | 67 | 40.1d |  |  | 傅意成 | 4h | RM项目1.0- | RM项目1.0 | 68-走查 | ܁5 |
| 69 | 3.1.3.10 | **面试人员简历** | 5.05d | 2012-05-08 13:36 | 2012-05-14 14:00 |  | 36.75d |  |  |  | 32h | RM项目1.0- | RM项目1.0 | 69-面试人员简历 |  |
| 70 | 3.1.3.10.1 | 编码 | 3d | 2012-05-08 13:36 | 2012-05-11 13:36 | 60 | 40.55d |  |  | 小陆 | 24h | RM项目1.0- | RM项目1.0 | 70-编码 |  |
| 71 | 3.1.3.10.2 | 测试 | 0.5d | 2012-05-12 08:30 | 2012-05-12 13:30 |  | 33.14d | 0d | start no earlier than 2012-05-12 08:30 | 小唐 | 4h | RM项目1.0- | RM项目1.0 | 71-测试 |  |
| 72 | 3.1.3.10.3 | 走查 | 0.5d | 2012-05-14 09:00 | 2012-05-14 14:00 |  | 38.5d |  | start no earlier than 2012-05-14 08:30 | 傅意成 | 4h | RM项目1.0- | RM项目1.0 | 72-走查 |  |
| 73 | 3.1.3.11 | **招聘计划执行** | 1.9d | 2012-05-14 14:30 | 2012-05-16 13:42 |  | 33.14d |  |  |  | 15.2h | RM项目1.0- | RM项目1.0 | 73-招聘计划执行 |  |
| 74 | 3.1.3.11.1 | 编码 | 1d | 2012-05-14 14:30 | 2012-05-15 14:30 | 71FS+1d | 33.14d | 0d |  | 小赵 | 8h | RM项目1.0- | RM项目1.0 | 74-编码 |  |
| 75 | 3.1.3.11.2 | 测试 | 0.4d | 2012-05-15 14:30 | 2012-05-15 17:42 | 74 | 33.14d | 0d |  | 小唐 | 3.2h | RM项目1.0- | RM项目1.0 | 75-测试 |  |
| 76 | 3.1.3.11.3 | 走查 | 0.5d | 2012-05-15 17:42 | 2012-05-16 13:42 | 75 | 36.54d |  |  | 傅意成 | 4h | RM项目1.0- | RM项目1.0 | 76-走查 | ܁5 |

Notes:
- 56: 代码是否符合规范。 / 代码设计是否合理
- 60: 代码是否符合规范。 / 代码设计是否合理
- 64: 代码是否符合规范。 / 代码设计是否合理
- 68: 代码是否符合规范。 / 代码设计是否合理
- 72: 代码是否符合规范。 / 代码设计是否合理
- 76: 代码是否符合规范。 / 代码设计是否合理

| ID | WBS | Task | Duration | Start | Finish | Predecessors | Complete | Remaining | Total slack | Free slack | Constraint | Resources | Work | Actual work | 配置项名称 | 项目标题 | 任务 | 是否工作包 | 新产品可裁剪 | 产品升级可裁剪 | 是否配置项 |
| --- | --- | --- | --- | --- | --- | --- | --- | --- | --- | --- | --- | --- | --- | --- | --- | --- | --- | --- | --- | --- | --- |
| 77 | 3.1.3.12 | **简历复选** | 1.45d | 2012-05-15 17:42 | 2012-05-17 13:18 |  |  |  | 33.14d |  |  |  | 11.6h |  | RM项目1.0- | RM项目1.0 | 77-简历复选 |  |  |  |  |
| 78 | 3.1.3.12.1 | 编码 | 1d | 2012-05-15 17:42 | 2012-05-16 17:42 | 75 |  |  | 33.14d | 0d |  | 小邱 | 8h |  | RM项目1.0- | RM项目1.0 | 78-编码 |  |  |  |  |
| 79 | 3.1.3.12.2 | 测试 | 0.2d | 2012-05-16 17:42 | 2012-05-17 10:18 | 78 |  |  | 33.14d | 0d |  | 小唐 | 1.6h |  | RM项目1.0- | RM项目1.0 | 79-测试 |  |  |  |  |
| 80 | 3.1.3.12.3 | 走查 | 0.25d | 2012-05-17 10:18 | 2012-05-17 13:18 | 79 |  |  | 35.59d |  |  | 傅意成 | 2h |  | RM项目1.0- | RM项目1.0 | 80-走查 | ܁5 |  |  |  |
| 81 | 3.1.3.13 | **面试管理-电话初试** | 1.65d | 2012-05-17 10:18 | 2012-05-18 16:30 |  |  |  | 34.19d |  |  |  | 13.2h |  | RM项目1.0- | RM项目1.0 | 81-面试管理-电话初试 |  |  |  |  |
| 82 | 3.1.3.13.1 | 编码 | 1d | 2012-05-17 10:18 | 2012-05-18 10:18 | 79 |  |  | 34.19d | 0d |  | 小陆 | 8h |  | RM项目1.0- | RM项目1.0 | 82-编码 |  |  |  |  |
| 83 | 3.1.3.13.2 | 测试 | 0.4d | 2012-05-18 10:18 | 2012-05-18 14:30 | 82 |  |  | 34.19d | 0d |  | 小唐 | 3.2h |  | RM项目1.0- | RM项目1.0 | 83-测试 |  |  |  |  |
| 84 | 3.1.3.13.3 | 走查 | 0.25d | 2012-05-18 14:30 | 2012-05-18 16:30 | 83 |  |  | 34.19d |  |  | 傅意成 | 2h |  | RM项目1.0- | RM项目1.0 | 84-走查 | ܁5 |  |  |  |
| 85 | 3.1.3.14 | **招聘设置-人才类型设置** | 1.7d | 2012-05-18 10:18 | 2012-05-21 16:54 |  |  |  | 33.14d |  |  |  | 13.6h |  | RM项目1.0- | RM项目1.0 | 85-招聘设置-人才类型设置 |  |  |  |  |
| 86 | 3.1.3.14.1 | 编码 | 1d | 2012-05-18 10:18 | 2012-05-21 10:18 | 79FS+1d |  |  | 33.14d | 0d | finish no earlier than 2012-05-18 17:00 | 小赵 | 8h |  | RM项目1.0- | RM项目1.0 | 86-编码 |  |  |  |  |
| 87 | 3.1.3.14.2 | 测试 | 0.2d | 2012-05-21 10:18 | 2012-05-21 11:54 | 86 |  |  | 33.14d | 0d |  | 小唐 | 1.6h |  | RM项目1.0- | RM项目1.0 | 87-测试 |  |  |  |  |
| 88 | 3.1.3.14.3 | 走查 | 0.5d | 2012-05-21 11:54 | 2012-05-21 16:54 | 87 |  |  | 33.14d |  |  | 傅意成 | 4h |  | RM项目1.0- | RM项目1.0 | 88-走查 | ܁5 |  |  |  |
| 89 | 3.1.3.15 | 需求疑问的跟进 | 13d? | 2012-05-02 17:30 | 2012-05-18 17:30 |  |  |  | 34.06d |  | finish no earlier than 2012-05-18 17:30 | 黄新龙 [25%] | 26h |  | RM项目1.0- | RM项目1.0 | 89-需求疑问的跟进 | ܁5 |  |  |  |
| 90 | 3.1.3.16 | 开发技术支持 | 13d? | 2012-05-02 17:00 | 2012-05-18 17:00 |  |  |  | 34.12d |  | finish no earlier than 2012-05-18 17:00 | 傅意成 [25%] | 26h |  | RM项目1.0- | RM项目1.0 | 90-开发技术支持 | ܁5 |  |  |  |
| 91 | 3.1.3.17 | 日常的沟通和协调 | 21d | 2012-04-24 09:00 | 2012-05-21 18:00 |  |  |  | 33d |  | start no earlier than 2012-04-24 08:30 | 李国艺 [12.5%] | 21h |  | RM项目1.0- | RM项目1.0 | 91-日常的沟通和协调 | ܁5 |  |  |  |
| 92 | 3.1.3.18 | 第一期 bug的修复 | 10d | 2012-05-21 09:00 | 2012-05-31 18:00 |  |  |  | 24d |  | start no earlier than 2012-05-21 08:00 | 小陆 [10%]; 小赵 [10%]; 江岱伟 [10%]; 小唐 [10%]; 小邱 [10%] | 40h |  | RM项目1.0- | RM项目1.0 | 92-第一期 bug的修复 |  |  |  |  |
| 93 | 3.1.3.19 | 用户故事联调 | 1d | 2012-05-22 09:00 | 2012-05-22 18:00 |  |  |  | 32d |  | start no earlier than 2012-05-22 08:30 | 傅意成 | 8h |  | RM项目1.0- | RM项目1.0 | 93-用户故事联调 | ܁5 |  |  |  |
| 94 | 3.1.3.20 | **迭代测试** | 29.94d | 2012-04-28 08:30 A | 2012-06-05 17:30 |  | 65% | 10.6d | 20.06d |  |  |  | 573.1h | 395h | RM项目1.0- | RM项目1.0 | 94-迭代测试 |  |  |  |  |
| 95 | 3.1.3.20.1 | **迭代测试** | 18.94d | 2012-04-28 08:30 A | 2012-05-23 17:30 |  | 61% | 7.34d | 31.06d |  |  |  | 288.14h | 204h | RM项目1.0- | RM项目1.0 | 95-迭代测试 |  | ܁D | ܁F |  |
| 96 | 3.1.3.20.1.1 | 测试方案编制 | 2.88d | 2012-05-04 08:30 A | 2012-05-08 17:00 A |  | 100% |  |  |  | finish no earlier than 2012-04-25 17:00 | 王军武 [34.8%] | 8h | 8h | RM项目1.0- | RM项目1.0 | 96-测试方案编制 | ܁5 |  |  | ܁H |
| 97 | 3.1.3.20.1.2 | 测试方案评审 | 0.94d | 2012-05-09 08:30 A | 2012-05-18 17:30 |  | 53% | 0.44d | 34.06d |  | finish no earlier than 2012-05-18 17:30 | 测试组; 项目经理 | 15h | 8h | RM项目1.0- | RM项目1.0 | 97-测试方案评审 | ܁5 |  |  |  |
| 98 | 3.1.3.20.1.3 | 测试用例编制 | 7.88d | 2012-04-28 08:30 A | 2012-05-09 17:00 |  | 37% | 5d | 42.12d |  | finish no earlier than 2012-05-08 17:30 | 王军武 | 63h | 23h | RM项目1.0- | RM项目1.0 | 98-测试用例编制 | ܁5 |  |  | ܁H |
| 99 | 3.1.3.20.1.4 | 测试用例评审 | 4.94d | 2012-05-11 08:30 A | 2012-05-16 17:30 |  | 18% | 4.06d | 36.06d |  | finish no earlier than 2012-05-16 17:30 | 测试组 [57.1%]; 项目经理 [57.1%] | 45.14h | 8h | RM项目1.0- | RM项目1.0 | 99-测试用例评审 | ܁5 |  |  | ܁H |
| 100 | 3.1.3.20.1.5 | 测试环境搭建 | 2d | 2012-05-18 08:30 A | 2012-05-21 18:00 A |  | 100% |  |  |  | start no earlier than 2011-09-27 08:00 |  | 16h | 16h | RM项目1.0- | RM项目1.0 | 100-测试环境搭建 |  |  |  |  |
| 101 | 3.1.3.20.1.6 | 迭代测试执行 | 2.94d | 2012-05-21 08:30 A | 2012-05-23 17:30 A |  | 100% |  |  |  | start no earlier than 2011-09-28 08:00 |  | 70.5h | 70.5h | RM项目1.0- | RM项目1.0 | 101-迭代测试执行 |  | ܁D | ܁F |  |
| 102 | 3.1.3.20.1.7 | 缺陷处理 | 2.94d | 2012-05-21 08:30 A | 2012-05-23 17:30 A |  | 100% |  |  |  | finish no earlier than 2012-05-23 17:30 |  | 70.5h | 70.5h | RM项目1.0- | RM项目1.0 | 102-缺陷处理 |  | ܁D | ܁F |  |

Notes:
- 80: 代码是否符合规范。 / 代码设计是否合理
- 84: 代码是否符合规范。 / 代码设计是否合理
- 88: 代码是否符合规范。 / 代码设计是否合理
- 90: 支持开发中遇到的框架上的问题
- 93: 与其他模块的接口集成支持

| ID | WBS | Task | Duration | Start | Finish | Predecessors | Complete | Remaining | Total slack | Free slack | Constraint | Resources | Work | Actual work | 配置项名称 | 项目标题 | 任务 | 新产品可裁剪 | 产品升级可裁剪 | 是否工作包 | 评审人员 | 交付件名称 | 评审方式 |
| --- | --- | --- | --- | --- | --- | --- | --- | --- | --- | --- | --- | --- | --- | --- | --- | --- | --- | --- | --- | --- | --- | --- | --- |
| 103 | 3.1.3.20.2 | **回归测试** | 6.94d | 2012-05-29 08:30 A | 2012-06-05 17:30 |  | 71% | 2.04d | 20.06d |  |  |  | 284.96h | 191h | RM项目1.0- | RM项目1.0 | 103-回归测试 | ܁D | ܁F |  |  |  |  |
| 104 | 3.1.3.20.2.1 | 回归测试执行 | 2.94d | 2012-05-29 08:30 A | 2012-05-31 17:30 A |  | 100% |  |  |  | finish no earlier than 2012-05-31 17:30 |  | 92h | 92h | RM项目1.0- | RM项目1.0 | 104-回归测试执行 | ܁D | ܁F |  |  |  |  |
| 105 | 3.1.3.20.2.2 | 缺陷处理 | 6.94d | 2012-05-29 08:30 A | 2012-06-05 17:30 |  | 42% | 4d | 20.06d |  | finish no earlier than 2012-06-05 17:30 |  | 162.96h | 69h | RM项目1.0- | RM项目1.0 | 105-缺陷处理 |  |  |  |  |  |  |
| 106 | 3.1.3.20.2.3 | 测试报告编写 | 1.88d | 2012-05-31 08:30 A | 2012-06-01 17:00 A |  | 100% |  |  |  | start no earlier than 2011-10-08 08:00 |  | 15h | 15h | RM项目1.0- | RM项目1.0 | 106-测试报告编写 | ܁D | ܁F | ܁5 |  |  |  |
| 107 | 3.1.3.20.2.4 | 测试报告评审 | 1.88d | 2012-05-31 08:30 A | 2012-06-01 17:00 A |  | 100% |  |  |  | start no earlier than 2011-10-08 08:00 |  | 15h | 15h | RM项目1.0- | RM项目1.0 | 107-测试报告评审 | ܁D | ܁F | ܁5 |  |  |  |
| 108 | 3.1.3.21 | 用户文档编制 | 3.88d | 2012-05-31 08:30 A | 2012-06-04 17:00 A |  | 100% |  |  |  | start no earlier than 2011-09-26 08:00 |  | 31h | 31h | RM项目1.0- | RM项目1.0 | 108-用户文档编制 |  |  | ܁5 | 验收时才做 |  |  |
| 109 | 3.1.3.22 | 用户文档测试 | 1.88d | 2012-06-01 08:30 A | 2012-06-02 16:00 A |  | 100% |  |  |  | start no earlier than 2011-10-09 08:00 |  | 15h | 15h | RM项目1.0- | RM项目1.0 | 109-用户文档测试 |  |  |  | 验收时才做 |  |  |
| 110 | 3.1.3.23 | **演示与发布** | 0.5d | 2012-06-01 09:00 | 2012-06-01 14:00 |  |  |  | 23.5d |  |  |  | 6h |  | RM项目1.0- | RM项目1.0 | 110-演示与发布 |  |  |  |  |  |  |
| 111 | 3.1.3.23.1 | 迭代演示 | 0.5d | 2012-06-01 09:00 | 2012-06-01 14:00 |  |  |  | 23.5d |  | start no earlier than 2012-06-01 08:30 | 李国艺 [50%] | 2h |  | RM项目1.0- | RM项目1.0 | 111-迭代演示 |  |  |  | 验收时才做 |  |  |
| 112 | 3.1.3.23.2 | 验收发布 | 0.5d | 2012-06-01 09:00 | 2012-06-01 14:00 |  |  |  | 23.5d |  | start no earlier than 2012-06-01 08:00 | 测试组 | 4h |  | RM项目1.0- | RM项目1.0 | 112-验收发布 |  |  |  | 验收时才做 |  |  |
| 113 | 3.1.3.24 | **合同付款** | 1d? | 2012-06-04 09:00 | 2012-06-04 18:00 |  |  |  | 21d |  |  |  | 16h |  | RM项目1.0- | RM项目1.0 | 113-合同付款 |  |  |  |  |  |  |
| 114 | 3.1.3.24.1 | 要求对方提供项目款发票 | 1d? | 2012-06-04 09:00 | 2012-06-04 18:00 |  |  |  | 21d |  | start no earlier than 2012-06-04 08:00 | 潘总 | 8h |  | RM项目1.0- | RM项目1.0 | 114-要求对方提供项目款发票 |  |  |  |  |  |  |
| 115 | 3.1.3.24.2 | 支付项目款 | 1d? | 2012-06-04 09:00 | 2012-06-04 18:00 |  |  |  | 21d |  | start no earlier than 2012-06-04 08:00 | 潘总 | 8h |  | RM项目1.0- | RM项目1.0 | 115-支付项目款 |  |  |  |  |  |  |
| 116 | 3.2 | **第2迭代** | 52d? | 2012-04-24 09:00 A | 2012-06-29 18:00 |  | 12% | 45.83d? | 2d |  |  |  | 1451h | 437h | RM项目1.0- | RM项目1.0 | 116-第2迭代 |  |  |  |  |  |  |
| 117 | 3.2.1 | **项目管理** | 46.5d | 2012-04-24 09:00 A | 2012-06-22 14:00 |  |  | 46.5d | 7.5d |  |  |  | 73h |  | RM项目1.0- | RM项目1.0 | 117-项目管理 |  |  |  |  |  |  |
| 118 | 3.2.1.1 | 迭代计划制定（迭代的裁剪、估算、计划、评审、配置） | 0.5d | 2012-04-24 09:00 | 2012-04-24 14:00 |  |  |  | 53.5d |  | start no earlier than 2012-04-24 08:00 | 李国艺 | 4h |  | RM项目1.0-项目综合表 | RM项目1.0 | 118-迭代计划制定（迭代的裁剪、估算、计划、评审、配置） |  |  | ܁@ | 跌代1已包含 | 项目综合表 |  |
| 119 | 3.2.1.2 | **监控** | 16.88d | 2012-05-21 09:00 | 2012-06-08 17:00 |  |  |  | 17.12d |  |  |  | 37h |  | RM项目1.0- | RM项目1.0 | 119-监控 |  |  |  |  |  |  |
| 120 | 3.2.1.2.1 | 周例会（完成功能确认） | 15d | 2012-05-22 17:00 | 2012-06-08 17:00 |  |  |  | 17.12d |  | finish no earlier than 2012-06-08 17:00 | 李国艺 [1.7%] | 2h |  | RM项目1.0-会议纪要 | RM项目1.0 | 120-周例会（完成功能确认） | ܁Y | ܁[ | ܁@ |  | 会议纪要 |  |
| 121 | 3.2.1.2.2 | 项目周报编制 | 8.33d | 2012-05-25 09:00 | 2012-06-04 11:40 |  |  |  | 21.67d |  | start no earlier than 2012-05-25 08:00 | 李国艺 [3%] | 2h |  | RM项目1.0-项目周报 | RM项目1.0 | 121-项目周报编制 | ܁Y | ܁[ | ܁@ |  | 项目周报 |  |
| 122 | 3.2.1.2.3 | 偏差、风险、问题识别与跟踪 | 15d | 2012-05-21 09:00 | 2012-06-06 18:00 |  |  |  | 19d |  | start no earlier than 2012-05-21 08:00 | 李国艺 [20%] | 24h |  | RM项目1.0-项目周报 | RM项目1.0 | 122-偏差、风险、问题识别与跟踪 | ܁Y | ܁[ | ܁@ |  | 项目周报 |  |
| 123 | 3.2.1.2.4 | 项目月报的编制 | 0.12d | 2012-06-08 09:00 | 2012-06-08 10:00 |  |  |  | 17.88d |  | start no earlier than 2012-06-08 08:00 | 李国艺 | 1h |  | RM项目1.0-项目月报 | RM项目1.0 | 123-项目月报的编制 | ܁Y | ܁[ | ܁@ | 迭代总结报告代替 | 项目月报 |  |
| 124 | 3.2.1.2.5 | 变更管理 | 16.67d | 2012-05-21 09:00 | 2012-06-08 15:20 |  |  |  | 17.33d |  | start no earlier than 2012-05-21 08:00 | 李国艺 [6%] | 8h |  | RM项目1.0-变更控制表 | RM项目1.0 | 124-变更管理 | ܁Y | ܁[ | ܁@ |  | 变更控制表 |  |
| 125 | 3.2.1.3 | 外部接口协调 | 5.77d | 2012-05-14 08:00 A | 2012-05-21 16:09 |  |  | 5.77d | 25.23d | 24.61d | finish no earlier than 2012-05-18 17:00 | 李国艺 [2%]; 傅意成 [50%] | 24h |  | RM项目1.0- | RM项目1.0 | 125-外部接口协调 |  |  |  |  |  |  |
| 126 | 3.2.1.4 | **迭代总结** | 1.12d | 2012-06-21 13:00 A | 2012-06-22 14:00 | 125 |  | 1.12d | 7.5d |  |  |  | 8h |  | RM项目1.0- | RM项目1.0 | 126-迭代总结 |  |  |  |  |  |  |
| 127 | 3.2.1.4.1 | 迭代1总结编制 | 0.5d | 2012-06-21 13:00 | 2012-06-21 17:00 |  |  |  | 8.12d |  | finish no earlier than 2012-06-21 17:00 | 李国艺 | 4h |  | RM项目1.0-迭代总结 | RM项目1.0 | 127-迭代1总结编制 |  |  | ܁@ |  | 迭代总结 |  |
| 128 | 3.2.1.4.2 | 迭代1总结评审 | 0.5d | 2012-06-22 08:00 A | 2012-06-22 14:00 |  |  | 0.5d | 7.5d |  | start no earlier than 2011-10-10 08:00 | 李国艺 | 4h |  | RM项目1.0-评审报告 | RM项目1.0 | 128-迭代1总结评审 |  |  |  |  | 评审报告 | ܁j |

Notes:
- 120: 0.5 * 周会次数
- 124: 0.5 * 预计变更次数
- 125: 0.5 * 协调次数

| ID | WBS | Task | Type | Duration | Start | Finish | Predecessors | Complete | Remaining | Total slack | Free slack | Constraint | Resources | Work | Actual work | 配置项名称 | 项目标题 | 任务 | 交付件名称 | 评审人员 | 是否工作包 | 评审方式 |
| --- | --- | --- | --- | --- | --- | --- | --- | --- | --- | --- | --- | --- | --- | --- | --- | --- | --- | --- | --- | --- | --- | --- |
| 129 | 3.2.2 | **概要设计** |  | 0.19d | 2012-05-18 08:00 A | 2012-05-18 10:30 |  |  | 0.19d | 34.81d |  |  |  | 2h |  | RM项目1.0- | RM项目1.0 | 129-概要设计 |  |  |  |  |
| 130 | 3.2.2.1 | 设计（确认） |  | 0.06d | 2012-05-18 08:00 A | 2012-05-18 09:30 |  |  | 0.06d | 34.81d | 0d | start no earlier than 2011-08-30 08:00 | 李国艺; 戴金平 | 1h |  | RM项目1.0-软件设计说明书 | RM项目1.0 | 130-设计（确认） | 软件设计说明书 | 第一期已做了 | ܁@ |  |
| 131 | 3.2.2.2 | 评审 |  | 0.12d | 2012-05-18 08:00 A | 2012-05-18 10:30 | 130 |  | 0.12d | 34.81d |  |  | 李国艺 | 1h |  | RM项目1.0-评审报告 | RM项目1.0 | 131-评审 | 评审报告 | 第一期已做了 |  | ܁i |
| 132 | 3.2.3 | **业务需求** |  | 41d? | 2012-05-09 08:00 A | 2012-06-29 18:00 |  | 18% | 33.58d? | 2d |  |  |  | 1376h | 437h | RM项目1.0- | RM项目1.0 | 132-业务需求 |  |  |  |  |
| 133 | 3.2.3.1 | 用户故事拆分（确认） |  | 0.25d | 2012-05-09 08:00 A | 2012-05-09 17:00 |  |  | 0.25d | 42.12d |  | finish no earlier than 2012-05-09 17:00 | 黄新龙 [50%] | 1h |  | RM项目1.0- | RM项目1.0 | 133-用户故事拆分（确认） |  | 第一期已做了 |  |  |
| 134 | 3.2.3.2 | 用户故事编写（确认） |  | 1d | 2012-05-18 08:00 A | 2012-05-18 18:00 A | 133 | 100% |  |  |  | finish no earlier than 2012-05-18 17:00 | 黄新龙 | 12h | 12h | RM项目1.0-用户故事 | RM项目1.0 | 134-用户故事编写（确认） | 用户故事 | 第一期已做了 | ܁@ |  |
| 135 | 3.2.3.3 | 用户故事评审（确认） | milestone | 0.5d | 2012-05-21 08:00 A | 2012-05-21 14:00 |  |  | 0.5d | 33.5d |  |  | 李国艺 | 4h |  | RM项目1.0-评审报告 | RM项目1.0 | 135-用户故事评审（确认） | 评审报告 | 第一期已做了 |  | ܁i |
| 136 | 3.2.3.4 | 第二期详细设计 | milestone | 3d | 2012-05-21 09:00 | 2012-05-23 18:00 |  |  |  | 20d | 0d | start no earlier than 2012-05-21 08:30 |  |  |  | RM项目1.0- | RM项目1.0 | 136-第二期详细设计 |  |  |  |  |
| 137 | 3.2.3.5 | **招聘设置-通知模板编辑** |  | 3.5d | 2012-05-24 09:00 | 2012-05-28 14:00 |  |  |  | 27.5d |  |  |  | 21.6h |  | RM项目1.0- | RM项目1.0 | 137-招聘设置-通知模板编辑 |  |  |  |  |
| 138 | 3.2.3.5.1 | 编码 |  | 2d | 2012-05-24 09:00 | 2012-05-25 18:00 | 136 |  |  | 28.8d | 0d |  | 小邱 | 16h |  | RM项目1.0- | RM项目1.0 | 138-编码 |  |  |  |  |
| 139 | 3.2.3.5.2 | 测试 |  | 0.2d | 2012-05-26 08:00 | 2012-05-26 09:36 | 138 |  |  | 28.8d |  |  | 小唐 | 1.6h |  | RM项目1.0- | RM项目1.0 | 139-测试 |  |  |  |  |
| 140 | 3.2.3.5.3 | 走查 |  | 0.5d | 2012-05-28 09:00 | 2012-05-28 14:00 |  |  |  | 27.5d |  | start no earlier than 2012-05-28 08:00 | 傅意成 | 4h |  | RM项目1.0- | RM项目1.0 | 140-走查 |  |  |  |  |
| 141 | 3.2.3.6 | **面试管理-面试安排** |  | 3.25d | 2012-05-24 09:00 | 2012-05-28 11:00 |  |  |  | 27.75d |  |  |  | 22h |  | RM项目1.0- | RM项目1.0 | 141-面试管理-面试安排 |  |  |  |  |
| 142 | 3.2.3.6.1 | 编码 |  | 2d | 2012-05-24 09:00 | 2012-05-25 18:00 | 136 |  |  | 28.5d | 0d |  | 小陆 | 16h |  | RM项目1.0- | RM项目1.0 | 142-编码 |  |  |  |  |
| 143 | 3.2.3.6.2 | 测试 |  | 0.5d | 2012-05-26 08:00 | 2012-05-26 12:00 | 142 |  |  | 28.5d |  |  | 小唐 | 4h |  | RM项目1.0- | RM项目1.0 | 143-测试 |  |  |  |  |
| 144 | 3.2.3.6.3 | 走查 |  | 0.25d | 2012-05-28 09:00 | 2012-05-28 11:00 |  |  |  | 27.75d |  | start no earlier than 2012-05-28 08:00 | 傅意成 | 2h |  | RM项目1.0- | RM项目1.0 | 144-走查 |  |  |  |  |
| 145 | 3.2.3.7 | **前台接待** |  | 3.5d | 2012-05-24 09:00 | 2012-05-28 14:00 |  |  |  | 27.5d |  |  |  | 28h |  | RM项目1.0- | RM项目1.0 | 145-前台接待 |  |  |  |  |
| 146 | 3.2.3.7.1 | 编码 |  | 2d | 2012-05-24 09:00 | 2012-05-25 18:00 | 136 |  |  | 27.5d | 0d |  | 小陆 | 16h |  | RM项目1.0- | RM项目1.0 | 146-编码 |  |  |  |  |
| 147 | 3.2.3.7.2 | 测试 |  | 1d | 2012-05-26 08:00 | 2012-05-26 17:00 | 146 |  |  | 27.5d | 0d |  | 小唐 | 8h |  | RM项目1.0- | RM项目1.0 | 147-测试 |  |  |  |  |
| 148 | 3.2.3.7.3 | 走查 |  | 0.5d | 2012-05-28 09:00 | 2012-05-28 14:00 | 147 |  |  | 27.5d |  |  | 傅意成 | 4h |  | RM项目1.0- | RM项目1.0 | 148-走查 |  |  |  |  |
| 149 | 3.2.3.8 | **面试管理-面试执行** |  | 2.75d | 2012-05-28 09:00 | 2012-05-30 16:00 |  |  |  | 23.85d |  |  |  | 22h |  | RM项目1.0- | RM项目1.0 | 149-面试管理-面试执行 |  |  |  |  |
| 150 | 3.2.3.8.1 | 编码 |  | 2d | 2012-05-28 09:00 | 2012-05-29 18:00 |  |  |  | 23.85d | 0d | start no earlier than 2012-05-28 08:00 | 小邱 | 16h |  | RM项目1.0- | RM项目1.0 | 150-编码 |  |  |  |  |
| 151 | 3.2.3.8.2 | 测试 |  | 0.5d | 2012-05-30 09:00 | 2012-05-30 14:00 | 150 |  |  | 23.85d | 0d |  | 小唐 | 4h |  | RM项目1.0- | RM项目1.0 | 151-测试 |  |  |  |  |
| 152 | 3.2.3.8.3 | 走查 |  | 0.25d | 2012-05-30 14:00 | 2012-05-30 16:00 | 151 |  |  | 25.25d |  |  | 傅意成 | 2h |  | RM项目1.0- | RM项目1.0 | 152-走查 |  |  |  |  |

Notes:
- 140: 代码是否符合规范。 / 代码设计是否合理
- 144: 代码是否符合规范。 / 代码设计是否合理
- 148: 代码是否符合规范。 / 代码设计是否合理
- 152: 代码是否符合规范。 / 代码设计是否合理

| ID | WBS | Task | Duration | Start | Finish | Predecessors | Total slack | Free slack | Constraint | Resources | Work | 配置项名称 | 项目标题 | 任务 |
| --- | --- | --- | --- | --- | --- | --- | --- | --- | --- | --- | --- | --- | --- | --- |
| 153 | 3.2.3.9 | **面试管理-拟录用** | 3d | 2012-05-28 09:00 | 2012-05-30 18:00 |  | 25d |  |  |  | 24h | RM项目1.0- | RM项目1.0 | 153-面试管理-拟录用 |
| 154 | 3.2.3.9.1 | 编码 | 2d | 2012-05-28 09:00 | 2012-05-29 18:00 | 136FS+2d | 25d | 0d | start no earlier than 2012-05-28 08:00 | 小赵 | 16h | RM项目1.0- | RM项目1.0 | 154-编码 |
| 155 | 3.2.3.9.2 | 测试 | 0.5d | 2012-05-30 09:00 | 2012-05-30 14:00 | 154 | 25d | 0d |  | 小唐 | 4h | RM项目1.0- | RM项目1.0 | 155-测试 |
| 156 | 3.2.3.9.3 | 走查 | 0.5d | 2012-05-30 14:00 | 2012-05-30 18:00 | 155 | 25d |  |  | 傅意成 | 4h | RM项目1.0- | RM项目1.0 | 156-走查 |
| 157 | 3.2.3.10 | **面试管理-背景调查** | 1.65d | 2012-05-30 14:00 | 2012-06-01 10:12 |  | 23.85d |  |  |  | 13.2h | RM项目1.0- | RM项目1.0 | 157-面试管理-背景调查 |
| 158 | 3.2.3.10.1 | 编码 | 1d | 2012-05-30 14:00 | 2012-05-31 14:00 | 151 | 23.85d | 0d |  | 小赵 | 8h | RM项目1.0- | RM项目1.0 | 158-编码 |
| 159 | 3.2.3.10.2 | 测试 | 0.4d | 2012-05-31 14:00 | 2012-05-31 17:12 | 158 | 23.85d | 0d |  | 小唐 | 3.2h | RM项目1.0- | RM项目1.0 | 159-测试 |
| 160 | 3.2.3.10.3 | 走查 | 0.25d | 2012-05-31 17:12 | 2012-06-01 10:12 | 159 | 23.85d |  |  | 傅意成 | 2h | RM项目1.0- | RM项目1.0 | 160-走查 |
| 161 | 3.2.3.11 | **入职手续-背景调查问题设定** | 2.65d | 2012-05-29 09:00 | 2012-05-31 15:12 |  | 20d |  |  |  | 21.2h | RM项目1.0- | RM项目1.0 | 161-入职手续-背景调查问题设定 |
| 162 | 3.2.3.11.1 | 编码 | 2d | 2012-05-29 09:00 | 2012-05-30 18:00 | 136FS+4d | 20d | 0d |  | 小邱 | 16h | RM项目1.0- | RM项目1.0 | 162-编码 |
| 163 | 3.2.3.11.2 | 测试 | 0.4d | 2012-05-31 09:00 | 2012-05-31 13:12 | 162 | 20d | 0d |  | 小唐 | 3.2h | RM项目1.0- | RM项目1.0 | 163-测试 |
| 164 | 3.2.3.11.3 | 走查 | 0.25d | 2012-05-31 13:12 | 2012-05-31 15:12 | 163 | 20d | 0d |  | 傅意成 | 2h | RM项目1.0- | RM项目1.0 | 164-走查 |
| 165 | 3.2.3.12 | **入职手续-入职手续** | 2.45d | 2012-05-31 15:12 | 2012-06-04 09:48 |  | 21.9d |  |  |  | 19.6h | RM项目1.0- | RM项目1.0 | 165-入职手续-入职手续 |
| 166 | 3.2.3.12.1 | 编码 | 2d | 2012-05-31 15:12 | 2012-06-02 14:12 | 164 | 21.9d | 0d | finish no earlier than 2012-06-01 17:00 | 小陆 | 16h | RM项目1.0- | RM项目1.0 | 166-编码 |
| 167 | 3.2.3.12.2 | 测试 | 0.2d | 2012-06-02 14:12 | 2012-06-02 15:48 | 166 | 21.9d | 0d |  | 小唐 | 1.6h | RM项目1.0- | RM项目1.0 | 167-测试 |
| 168 | 3.2.3.12.3 | 走查 | 0.25d | 2012-06-02 15:48 | 2012-06-04 09:48 | 167 | 21.9d |  |  | 傅意成 | 2h | RM项目1.0- | RM项目1.0 | 168-走查 |
| 169 | 3.2.3.13 | **入职手续-体检明细表** | 1.45d | 2012-05-31 15:12 | 2012-06-02 08:48 |  | 22.9d |  |  |  | 11.6h | RM项目1.0- | RM项目1.0 | 169-入职手续-体检明细表 |
| 170 | 3.2.3.13.1 | 编码 | 1d | 2012-05-31 15:12 | 2012-06-01 15:12 | 164 | 22.9d | 0d |  | 小赵 | 8h | RM项目1.0- | RM项目1.0 | 170-编码 |
| 171 | 3.2.3.13.2 | 测试 | 0.2d | 2012-06-01 15:12 | 2012-06-01 16:48 | 170 | 22.9d | 0d |  | 小唐 | 1.6h | RM项目1.0- | RM项目1.0 | 171-测试 |
| 172 | 3.2.3.13.3 | 走查 | 0.25d | 2012-06-01 16:48 | 2012-06-02 08:48 | 171 | 22.9d |  |  | 傅意成 | 2h | RM项目1.0- | RM项目1.0 | 172-走查 |
| 173 | 3.2.3.14 | **入职手续-离职证明** | 1.45d | 2012-05-31 15:12 | 2012-06-02 08:48 |  | 20d |  |  |  | 11.6h | RM项目1.0- | RM项目1.0 | 173-入职手续-离职证明 |
| 174 | 3.2.3.14.1 | 编码 | 1d | 2012-05-31 15:12 | 2012-06-01 15:12 | 164 | 20d | 0d |  | 小邱 | 8h | RM项目1.0- | RM项目1.0 | 174-编码 |
| 175 | 3.2.3.14.2 | 测试 | 0.2d | 2012-06-01 15:12 | 2012-06-01 16:48 | 174 | 20d | 0d |  | 小唐 | 1.6h | RM项目1.0- | RM项目1.0 | 175-测试 |
| 176 | 3.2.3.14.3 | 走查 | 0.25d | 2012-06-01 16:48 | 2012-06-02 08:48 | 175 | 20d | 0.9d |  | 傅意成 | 2h | RM项目1.0- | RM项目1.0 | 176-走查 |

Notes:
- 156: 代码是否符合规范。 / 代码设计是否合理
- 160: 代码是否符合规范。 / 代码设计是否合理
- 164: 代码是否符合规范。 / 代码设计是否合理
- 168: 代码是否符合规范。 / 代码设计是否合理
- 172: 代码是否符合规范。 / 代码设计是否合理
- 176: 代码是否符合规范。 / 代码设计是否合理

| ID | WBS | Task | Type | Duration | Start | Finish | Predecessors | Complete | Remaining | Total slack | Free slack | Constraint | Resources | Work | Actual work | 配置项名称 | 项目标题 | 任务 | 新产品可裁剪 | 产品升级可裁剪 | 是否工作包 |
| --- | --- | --- | --- | --- | --- | --- | --- | --- | --- | --- | --- | --- | --- | --- | --- | --- | --- | --- | --- | --- | --- |
| 177 | 3.2.3.15 | **入职手续-入职** |  | 1.45d | 2012-06-04 09:00 | 2012-06-05 13:36 |  |  |  | 19.1d |  |  |  | 11.6h |  | RM项目1.0- | RM项目1.0 | 177-入职手续-入职 |  |  |  |
| 178 | 3.2.3.15.1 | 编码 |  | 1d | 2012-06-04 09:00 | 2012-06-04 18:00 | 176 |  |  | 19.1d | 0d | start no earlier than 2012-06-04 08:00 | 小陆 | 8h |  | RM项目1.0- | RM项目1.0 | 178-编码 |  |  |  |
| 179 | 3.2.3.15.2 | 测试 |  | 0.2d | 2012-06-05 09:00 | 2012-06-05 10:36 | 178 |  |  | 19.1d | 0d |  | 小唐 | 1.6h |  | RM项目1.0- | RM项目1.0 | 179-测试 |  |  |  |
| 180 | 3.2.3.15.3 | 走查 |  | 0.25d | 2012-06-05 10:36 | 2012-06-05 13:36 | 179 |  |  | 20.55d |  |  | 傅意成 | 2h |  | RM项目1.0- | RM项目1.0 | 180-走查 |  |  |  |
| 181 | 3.2.3.16 | **简历管理-面试简历统计** |  | 1.7d | 2012-06-05 10:36 | 2012-06-06 17:12 |  |  |  | 19.1d |  |  |  | 13.6h |  | RM项目1.0- | RM项目1.0 | 181-简历管理-面试简历统计 |  |  |  |
| 182 | 3.2.3.16.1 | 编码 |  | 1d | 2012-06-05 10:36 | 2012-06-06 10:36 | 179 |  |  | 19.1d | 0d |  | 小赵 | 8h |  | RM项目1.0- | RM项目1.0 | 182-编码 |  |  |  |
| 183 | 3.2.3.16.2 | 测试 |  | 0.4d | 2012-06-06 10:36 | 2012-06-06 14:48 | 182 |  |  | 19.1d | 0d |  | 小唐 | 3.2h |  | RM项目1.0- | RM项目1.0 | 183-测试 |  |  |  |
| 184 | 3.2.3.16.3 | 走查 |  | 0.3d | 2012-06-06 14:48 | 2012-06-06 17:12 | 183 |  |  | 19.1d |  |  | 傅意成 | 2.4h |  | RM项目1.0- | RM项目1.0 | 184-走查 |  |  |  |
| 185 | 3.2.3.17 | 需求疑问的跟进 |  | 16d | 2012-05-21 09:00 | 2012-06-07 18:00 |  |  |  | 18d |  | start no earlier than 2012-05-21 08:30 | 黄新龙 [25%] | 32h |  | RM项目1.0- | RM项目1.0 | 185-需求疑问的跟进 |  |  |  |
| 186 | 3.2.3.18 | 开发技术支持 |  | 16d | 2012-05-21 09:00 | 2012-06-07 18:00 |  |  |  | 18d |  | start no earlier than 2012-05-21 08:00 | 傅意成 [25%] | 32h |  | RM项目1.0- | RM项目1.0 | 186-开发技术支持 |  |  |  |
| 187 | 3.2.3.19 | 日常的沟通和协调 |  | 16d | 2012-05-21 09:00 | 2012-06-07 18:00 |  |  |  | 18d |  | start no earlier than 2012-05-21 08:00 | 李国艺 [12.5%] | 16h |  | RM项目1.0- | RM项目1.0 | 187-日常的沟通和协调 |  |  |  |
| 188 | 3.2.3.20 | 第一、二期bugs修复 |  | 12d | 2012-06-07 09:00 | 2012-06-22 18:00 |  |  |  | 7d |  | start no earlier than 2012-06-07 08:00 | 小陆; 小赵; 小邱; 小唐; 江岱伟 | 480h |  | RM项目1.0- | RM项目1.0 | 188-第一、二期bugs修复 |  |  |  |
| 189 | 3.2.3.21 | 用户故事联调 |  | 1d | 2012-06-05 17:00 | 2012-06-06 17:00 |  |  |  | 19.12d |  | finish no earlier than 2012-06-06 17:00 | 傅意成 | 8h |  | RM项目1.0- | RM项目1.0 | 189-用户故事联调 |  |  |  |
| 190 | 3.2.3.22 | **迭代测试** |  | 14.88d | 2012-06-05 08:30 A | 2012-06-25 17:00 |  | 84% | 2.4d | 6.12d |  |  |  | 528h | 398h | RM项目1.0- | RM项目1.0 | 190-迭代测试 |  |  |  |
| 191 | 3.2.3.22.1 | **迭代测试** |  | 6.94d | 2012-06-05 08:30 A | 2012-06-13 17:30 |  | 99% | 0.04d | 14.06d |  |  |  | 333.5h | 229.5h | RM项目1.0- | RM项目1.0 | 191-迭代测试 | ܁D | ܁F |  |
| 192 | 3.2.3.22.1.1 | 测试环境搭建 |  | 1.94d | 2012-06-05 08:30 A | 2012-06-06 17:30 |  | 97% | 0.06d | 19.06d |  | finish no earlier than 2012-06-06 17:30 |  | 119h | 15h | RM项目1.0- | RM项目1.0 | 192-测试环境搭建 |  |  |  |
| 193 | 3.2.3.22.1.2 | 迭代测试执行 |  | 3d | 2012-06-06 08:30 A | 2012-06-08 18:00 A |  | 100% |  |  |  | start no earlier than 2011-09-28 08:00 |  | 72h | 72h | RM项目1.0- | RM项目1.0 | 193-迭代测试执行 | ܁D | ܁F |  |
| 194 | 3.2.3.22.1.3 | 缺陷处理 |  | 5.94d | 2012-06-06 08:30 A | 2012-06-13 17:30 A |  | 100% |  |  |  | start no earlier than 2011-09-29 08:00 |  | 142.5h | 142.5h | RM项目1.0- | RM项目1.0 | 194-缺陷处理 | ܁D | ܁F |  |
| 195 | 3.2.3.22.2 | **回归测试** |  | 7.88d | 2012-06-14 08:30 A | 2012-06-25 17:00 |  | 66% | 2.66d | 6.12d |  |  |  | 194.5h | 168.5h | RM项目1.0- | RM项目1.0 | 195-回归测试 | ܁D | ܁F |  |
| 196 | 3.2.3.22.2.1 | 回归测试执行 |  | 2.94d | 2012-06-14 08:30 A | 2012-06-18 17:30 A |  | 100% |  |  |  | start no earlier than 2011-09-30 08:00 |  | 94h | 94h | RM项目1.0- | RM项目1.0 | 196-回归测试执行 | ܁D | ܁F |  |
| 197 | 3.2.3.22.2.2 | 缺陷处理 |  | 2.94d | 2012-06-14 08:30 A | 2012-06-18 17:30 A |  | 100% |  |  |  | start no earlier than 2011-10-08 08:00 |  | 70.5h | 70.5h | RM项目1.0- | RM项目1.0 | 197-缺陷处理 |  |  |  |
| 198 | 3.2.3.22.2.3 | 测试报告编写 |  | 1.88d | 2012-06-18 08:30 A | 2012-06-25 17:00 |  | 27% | 1.38d | 6.12d |  | finish no earlier than 2012-06-25 17:00 |  | 15h | 4h | RM项目1.0- | RM项目1.0 | 198-测试报告编写 | ܁D | ܁F | ܁5 |
| 199 | 3.2.3.22.2.4 | 测试报告评审 | milestone | 0d | 2012-06-18 08:30 A | 2012-06-25 08:00 A |  | 100% |  |  |  | finish no earlier than 2012-06-25 08:00 |  |  |  | RM项目1.0- | RM项目1.0 | 199-测试报告评审 |  |  |  |
| 200 | 3.2.3.22.2.5 | 测试总结编写 | milestone | 0d | 2012-06-18 08:30 A | 2012-06-25 08:00 A |  | 100% |  |  |  | finish no earlier than 2012-06-25 08:00 |  |  |  | RM项目1.0- | RM项目1.0 | 200-测试总结编写 |  |  | ܁5 |
| 201 | 3.2.3.22.2.6 | 测试总结评审 |  | 1.88d | 2012-06-18 08:30 A | 2012-06-19 17:00 |  |  | 1.88d | 10.12d |  | finish no earlier than 2012-06-26 17:00 |  | 15h |  | RM项目1.0- | RM项目1.0 | 201-测试总结评审 | ܁D | ܁F |  |
| 202 | 3.2.3.23 | 用户文档编制 |  | 1.88d | 2012-06-20 08:30 A | 2012-06-21 17:00 A |  | 100% |  |  |  | start no earlier than 2011-09-26 08:00 |  | 15h | 15h | RM项目1.0- | RM项目1.0 | 202-用户文档编制 |  |  | ܁5 |
| 203 | 3.2.3.24 | 用户文档测试 |  | 0.5d | 2012-06-20 08:30 A | 2012-06-20 14:00 A |  | 100% |  |  |  | start no earlier than 2011-10-09 08:00 |  | 4h | 4h | RM项目1.0- | RM项目1.0 | 203-用户文档测试 |  |  |  |

Notes:
- 180: 代码是否符合规范。 / 代码设计是否合理
- 184: 代码是否符合规范。 / 代码设计是否合理
- 186: 支持开发中遇到的框架上的问题
- 189: 支持开发提出的需求问题

| ID | WBS | Task | Type | Duration | Start | Finish | Complete | Remaining | Total slack | Constraint | Resources | Work | Actual work | 配置项名称 | 项目标题 | 任务 | 评审方式 | 新产品可裁剪 | 产品升级可裁剪 |
| --- | --- | --- | --- | --- | --- | --- | --- | --- | --- | --- | --- | --- | --- | --- | --- | --- | --- | --- | --- |
| 204 | 3.2.3.25 | **演示与发布** |  | 0.5d | 2012-06-28 08:00 A | 2012-06-28 14:00 A | 100% |  |  |  |  | 8h | 8h | RM项目1.0- | RM项目1.0 | 204-演示与发布 |  |  |  |
| 205 | 3.2.3.25.1 | 迭代演示 |  | 0.5d | 2012-06-28 08:00 A | 2012-06-28 14:00 A | 100% |  |  | start no earlier than 2011-10-09 08:00 |  | 4h | 4h | RM项目1.0- | RM项目1.0 | 205-迭代演示 |  |  |  |
| 206 | 3.2.3.25.2 | 验收发布 |  | 0.5d | 2012-06-28 08:00 A | 2012-06-28 14:00 A | 100% |  |  | start no earlier than 2011-10-09 08:00 |  | 4h | 4h | RM项目1.0- | RM项目1.0 | 206-验收发布 |  |  |  |
| 207 | 3.2.3.26 | **合同付款** |  | 1d? | 2012-06-29 09:00 | 2012-06-29 18:00 |  |  | 2d |  |  | 16h |  | RM项目1.0- | RM项目1.0 | 207-合同付款 |  |  |  |
| 208 | 3.2.3.26.1 | 要求对方提供项目款发票 |  | 1d? | 2012-06-29 09:00 | 2012-06-29 18:00 |  |  | 2d | start no earlier than 2012-06-29 08:00 | 潘总 | 8h |  | RM项目1.0- | RM项目1.0 | 208-要求对方提供项目款发票 |  |  |  |
| 209 | 3.2.3.26.2 | 支付项目款 |  | 1d? | 2012-06-29 09:00 | 2012-06-29 18:00 |  |  | 2d | start no earlier than 2012-06-29 08:00 | 潘总 | 8h |  | RM项目1.0- | RM项目1.0 | 209-支付项目款 |  |  |  |
| 210 | 4 | **验收** |  | 8d? | 2012-06-22 09:00 | 2012-07-03 18:00 |  |  | 0d |  |  | 80h |  | RM项目1.0- | RM项目1.0 | 210-验收 |  |  |  |
| 211 | 4.1 | **产品试运行** |  | 5.88d | 2012-06-22 09:00 | 2012-06-29 17:00 |  |  | 2.12d |  |  | 16h |  | RM项目1.0- | RM项目1.0 | 211-产品试运行 |  |  |  |
| 212 | 4.1.1 | 搭建试运行环境 |  | 0.5d | 2012-06-22 09:00 | 2012-06-22 14:00 |  |  | 7.5d | start no earlier than 2012-06-22 08:00 |  | 4h |  | RM项目1.0- | RM项目1.0 | 212-搭建试运行环境 |  |  |  |
| 213 | 4.1.2 | 产品试运行及缺陷修复 |  | 5.88d | 2012-06-22 09:00 | 2012-06-29 17:00 |  |  | 2.12d | finish no earlier than 2012-06-29 17:00 |  | 12h |  | RM项目1.0- | RM项目1.0 | 213-产品试运行及缺陷修复 |  |  |  |
| 214 | 4.2 | **系统验收** |  | 6.5d | 2012-06-22 09:00 | 2012-07-02 14:00 |  |  | 1.5d |  |  | 16h |  | RM项目1.0- | RM项目1.0 | 214-系统验收 |  |  |  |
| 215 | 4.2.1 | 搭建验收环境 |  | 0.5d | 2012-06-22 09:00 | 2012-06-22 14:00 |  |  | 7.5d | start no earlier than 2012-06-22 08:00 |  | 4h |  | RM项目1.0- | RM项目1.0 | 215-搭建验收环境 |  |  |  |
| 216 | 4.2.2 | 系统验收 | milestone | 1.5d | 2012-06-29 09:00 | 2012-07-02 14:00 |  |  | 1.5d | start no earlier than 2012-06-29 08:00 |  | 12h |  | RM项目1.0- | RM项目1.0 | 216-系统验收 |  |  |  |
| 217 | 4.3 | **合同付款** |  | 1d? | 2012-07-02 09:00 | 2012-07-02 18:00 |  |  | 1d |  |  |  |  | RM项目1.0- | RM项目1.0 | 217-合同付款 |  |  |  |
| 218 | 4.3.1 | 要求对方提供项目款发票 |  | 1d? | 2012-07-02 09:00 | 2012-07-02 18:00 |  |  | 1d | start no earlier than 2012-07-02 08:00 |  |  |  | RM项目1.0- | RM项目1.0 | 218-要求对方提供项目款发票 |  |  |  |
| 219 | 4.3.2 | 支付项目款 |  | 1d? | 2012-07-02 09:00 | 2012-07-02 18:00 |  |  | 1d | start no earlier than 2012-07-02 08:00 |  |  |  | RM项目1.0- | RM项目1.0 | 219-支付项目款 |  |  |  |
| 220 | 4.4 | **系统发布** |  | 1d | 2012-07-02 09:00 | 2012-07-02 18:00 |  |  | 1d |  |  |  |  | RM项目1.0- | RM项目1.0 | 220-系统发布 | ܁m | ܁Y | ܁[ |
| 221 | 4.4.1 | 搭建运行环境 |  | 0.5d | 2012-07-02 09:00 | 2012-07-02 14:00 |  |  | 1.5d | start no earlier than 2012-07-02 08:00 |  |  |  | RM项目1.0- | RM项目1.0 | 221-搭建运行环境 |  | ܁Y | ܁[ |
| 222 | 4.4.2 | 安装运行 |  | 0.5d | 2012-07-02 09:00 | 2012-07-02 14:00 |  |  | 1.5d | start no earlier than 2012-07-02 08:00 |  |  |  | RM项目1.0- | RM项目1.0 | 222-安装运行 |  | ܁Y | ܁[ |
| 223 | 4.4.3 | 客户数据初始化 |  | 1d | 2012-07-02 09:00 | 2012-07-02 18:00 |  |  | 1d | start no earlier than 2012-07-02 08:00 |  |  |  | RM项目1.0- | RM项目1.0 | 223-客户数据初始化 |  | ܁Y | ܁[ |
| 224 | 4.5 | 客户问题反馈与处理 |  | 2d | 2012-07-02 09:00 | 2012-07-03 18:00 |  |  | 0d | start no earlier than 2012-07-02 08:00 |  | 48h |  | RM项目1.0- | RM项目1.0 | 224-客户问题反馈与处理 |  | ܁Y | ܁[ |
| 225 | 5 | **配置管理** |  | 567d? | 2010-04-27 09:00 A | 2012-06-27 18:00 |  | 567d? | 4d |  |  | 140h |  | RM项目1.0- | RM项目1.0 | 225-配置管理 |  | ܁Y | ܁[ |
| 226 | 5.1 | **制定配置管理计划** |  | 0.5d | 2012-04-27 09:00 | 2012-04-27 14:00 |  |  | 50.5d |  |  | 8h |  | RM项目1.0- | RM项目1.0 | 226-制定配置管理计划 |  | ܁Y | ܁[ |
| 227 | 5.1.1 | 编写项目配置管理计划 |  | 0.5d | 2012-04-27 09:00 | 2012-04-27 14:00 |  |  | 50.5d | start no earlier than 2012-04-27 08:00 | 甘志杰 | 4h |  | RM项目1.0- | RM项目1.0 | 227-编写项目配置管理计划 |  |  |  |
| 228 | 5.1.2 | 评审项目配置管理计划 |  | 0.5d | 2012-04-27 09:00 | 2012-04-27 14:00 |  |  | 50.5d | start no earlier than 2012-04-27 08:00 | 甘志杰 | 4h |  | RM项目1.0- | RM项目1.0 | 228-评审项目配置管理计划 |  |  |  |

| ID | WBS | Task | Duration | Start | Finish | Remaining | Total slack | Constraint | Resources | Work | 配置项名称 | 项目标题 | 任务 | 新产品可裁剪 | 产品升级可裁剪 | 交付件名称 | 是否工作包 |
| --- | --- | --- | --- | --- | --- | --- | --- | --- | --- | --- | --- | --- | --- | --- | --- | --- | --- |
| 229 | 5.2 | **创建和维护配置库** | 521d | 2010-04-27 09:00 | 2012-04-27 18:00 |  | 50d |  |  | 16h | RM项目1.0- | RM项目1.0 | 229-创建和维护配置库 | ܁Y | ܁[ |  |  |
| 230 | 5.2.1 | 创建配置库 | 0.5d | 2010-04-27 09:00 | 2010-04-27 14:00 |  | 570.5d | start no earlier than 2010-04-27 08:00 | 甘志杰 | 4h | RM项目1.0- | RM项目1.0 | 230-创建配置库 | ܁Y | ܁[ |  |  |
| 231 | 5.2.2 | 创建配置项 | 1d | 2012-04-26 17:00 | 2012-04-27 17:00 |  | 50.12d | finish no earlier than 2012-04-27 17:00 | 甘志杰 | 4h | RM项目1.0- | RM项目1.0 | 231-创建配置项 | ܁Y | ܁[ |  |  |
| 232 | 5.2.3 | 项目权限设计 | 0.5d | 2012-04-27 09:00 | 2012-04-27 14:00 |  | 50.5d | start no earlier than 2012-04-27 08:00 | 甘志杰 | 4h | RM项目1.0-项目权限配置表 | RM项目1.0 | 232-项目权限设计 | ܁Y | ܁[ | 项目权限配置表 |  |
| 233 | 5.2.4 | 配置权限分配 | 1d | 2012-04-27 09:00 | 2012-04-27 18:00 |  | 50d | start no earlier than 2012-04-27 08:00 | 甘志杰 [50%] | 4h | RM项目1.0- | RM项目1.0 | 233-配置权限分配 | ܁Y | ܁[ |  |  |
| 234 | 5.3 | **创建基线** | 47d? | 2012-04-27 09:00 A | 2012-06-27 18:00 | 47d? | 4d |  |  | 116h | RM项目1.0- | RM项目1.0 | 234-创建基线 | ܁Y | ܁[ |  |  |
| 235 | 5.3.1 | **立项基线** | 1d? | 2012-04-27 09:00 | 2012-04-27 18:00 |  | 50d |  |  | 16h | RM项目1.0- | RM项目1.0 | 235-立项基线 |  |  |  |  |
| 236 | 5.3.1.1 | 配置审计 | 1d? | 2012-04-27 09:00 | 2012-04-27 18:00 |  | 50d | start no earlier than 2012-04-27 08:00 | 甘志杰 [50%] | 4h | RM项目1.0- | RM项目1.0 | 236-配置审计 |  |  |  |  |
| 237 | 5.3.1.2 | 建立基线 | 1d? | 2012-04-27 09:00 | 2012-04-27 18:00 |  | 50d | start no earlier than 2012-04-27 08:00 | 甘志杰 [50%] | 4h | RM项目1.0- | RM项目1.0 | 237-建立基线 |  |  |  |  |
| 238 | 5.3.1.3 | 审计基线 | 1d? | 2012-04-27 09:00 | 2012-04-27 18:00 |  | 50d | start no earlier than 2012-04-27 08:00 | 甘志杰 [50%] | 4h | RM项目1.0- | RM项目1.0 | 238-审计基线 |  |  |  |  |
| 239 | 5.3.1.4 | 配置项与基线跟踪 | 1d? | 2012-04-27 09:00 | 2012-04-27 18:00 |  | 50d | start no earlier than 2012-04-27 08:00 | 甘志杰 [50%] | 4h | RM项目1.0- | RM项目1.0 | 239-配置项与基线跟踪 |  |  |  |  |
| 240 | 5.3.2 | **迭代开发基线** | 44d? | 2012-05-02 09:00 A | 2012-06-27 18:00 | 44d? | 4d |  |  | 68h | RM项目1.0- | RM项目1.0 | 240-迭代开发基线 |  |  |  |  |
| 241 | 5.3.2.1 | **第1次迭代** | 9.5d | 2012-05-21 09:00 A | 2012-05-31 14:00 | 9.5d | 24.5d |  |  | 12h | RM项目1.0- | RM项目1.0 | 241-第1次迭代 | ܁Y | ܁[ |  | ܁@ |
| 242 | 5.3.2.1.1 | 建立测试版本 | 0.5d | 2012-05-21 09:00 | 2012-05-21 14:00 |  | 33.5d | start no earlier than 2012-05-21 08:00 | 甘志杰 | 4h | RM项目1.0- | RM项目1.0 | 242-建立测试版本 | ܁Y | ܁[ |  |  |
| 243 | 5.3.2.1.2 | 建立迭代版本 | 0.5d | 2012-05-25 09:00 | 2012-05-25 14:00 |  | 29.5d | start no earlier than 2012-05-25 08:00 | 甘志杰 | 4h | RM项目1.0- | RM项目1.0 | 243-建立迭代版本 | ܁Y | ܁[ |  |  |
| 244 | 5.3.2.1.3 | 建立产品版本 | 0.5d | 2012-05-31 08:00 A | 2012-05-31 14:00 | 0.5d | 24.5d | start no earlier than 2010-07-27 08:00 | 甘志杰 | 4h | RM项目1.0- | RM项目1.0 | 244-建立产品版本 | ܁Y | ܁[ |  |  |
| 245 | 5.3.2.2 | **第2次迭代** | 14d? | 2012-06-08 09:00 | 2012-06-27 18:00 |  | 4d |  |  | 24h | RM项目1.0- | RM项目1.0 | 245-第2次迭代 |  |  |  | ܁@ |
| 246 | 5.3.2.2.1 | 建立测试版本 | 1d? | 2012-06-08 09:00 | 2012-06-08 18:00 |  | 17d | start no earlier than 2012-06-08 08:00 | 甘志杰 | 8h | RM项目1.0- | RM项目1.0 | 246-建立测试版本 |  |  |  |  |
| 247 | 5.3.2.2.2 | 建立迭代版本 | 1d? | 2012-06-22 09:00 | 2012-06-22 18:00 |  | 7d | start no earlier than 2012-06-22 08:00 | 甘志杰 | 8h | RM项目1.0- | RM项目1.0 | 247-建立迭代版本 |  |  |  |  |
| 248 | 5.3.2.2.3 | 建立产品版本 | 1d? | 2012-06-27 09:00 | 2012-06-27 18:00 |  | 4d | start no earlier than 2012-06-27 08:00 | 甘志杰 | 8h | RM项目1.0- | RM项目1.0 | 248-建立产品版本 |  |  |  |  |
| 249 | 5.3.2.3 | 配置审计 | 1d? | 2012-05-02 09:00 | 2012-05-02 18:00 |  | 47d | start no earlier than 2012-05-02 08:00 | 甘志杰 | 8h | RM项目1.0- | RM项目1.0 | 249-配置审计 |  |  |  |  |
| 250 | 5.3.2.4 | 建立基线 | 1d? | 2012-05-02 09:00 | 2012-05-02 18:00 |  | 47d | start no earlier than 2012-05-02 08:00 | 甘志杰 | 8h | RM项目1.0- | RM项目1.0 | 250-建立基线 |  |  |  |  |
| 251 | 5.3.2.5 | 审计基线 | 1d? | 2012-05-02 09:00 | 2012-05-02 18:00 |  | 47d | start no earlier than 2012-05-02 08:00 | 甘志杰 | 8h | RM项目1.0- | RM项目1.0 | 251-审计基线 |  |  |  |  |
| 252 | 5.3.2.6 | 配置项与基线跟踪 | 1d? | 2012-05-02 09:00 | 2012-05-02 18:00 |  | 47d | start no earlier than 2012-05-02 08:00 | 甘志杰 | 8h | RM项目1.0- | RM项目1.0 | 252-配置项与基线跟踪 |  |  |  |  |

| ID | WBS | Task | Type | Duration | Start | Finish | Complete | Remaining | Total slack | Constraint | Resources | Work | Actual work | 配置项名称 | 项目标题 | 任务 | 新产品可裁剪 | 产品升级可裁剪 | 是否工作包 |
| --- | --- | --- | --- | --- | --- | --- | --- | --- | --- | --- | --- | --- | --- | --- | --- | --- | --- | --- | --- |
| 253 | 5.3.3 | **发布基线** |  | 1d? | 2012-05-02 09:00 | 2012-05-02 18:00 |  |  | 47d |  |  | 32h |  | RM项目1.0- | RM项目1.0 | 253-发布基线 |  |  |  |
| 254 | 5.3.3.1 | 配置审计 |  | 1d? | 2012-05-02 09:00 | 2012-05-02 18:00 |  |  | 47d | start no earlier than 2012-05-02 08:00 | 甘志杰 | 8h |  | RM项目1.0- | RM项目1.0 | 254-配置审计 |  |  |  |
| 255 | 5.3.3.2 | 建立基线 |  | 1d? | 2012-05-02 09:00 | 2012-05-02 18:00 |  |  | 47d | start no earlier than 2012-05-02 08:00 | 甘志杰 | 8h |  | RM项目1.0- | RM项目1.0 | 255-建立基线 |  |  |  |
| 256 | 5.3.3.3 | 审计基线 |  | 1d? | 2012-05-02 09:00 | 2012-05-02 18:00 |  |  | 47d | start no earlier than 2012-05-02 08:00 | 甘志杰 | 8h |  | RM项目1.0- | RM项目1.0 | 256-审计基线 |  |  |  |
| 257 | 5.3.3.4 | 配置项与基线跟踪 |  | 1d? | 2012-05-02 09:00 | 2012-05-02 18:00 |  |  | 47d | start no earlier than 2012-05-02 08:00 | 甘志杰 | 8h |  | RM项目1.0- | RM项目1.0 | 257-配置项与基线跟踪 |  |  |  |
| 258 | 6 | **质量保证** |  | 57d? | 2012-04-17 09:00 A | 2012-06-29 18:00 | 2% | 55.59d? | 2d |  |  | 72.04h | 4.04h | RM项目1.0- | RM项目1.0 | 258-质量保证 | ܁D | ܁G |  |
| 259 | 6.1 | **立项阶段** |  | 17.88d? | 2012-04-17 09:00 A | 2012-05-10 17:00 | 4% | 17.07d? | 41.12d |  |  | 20.04h | 0.04h | RM项目1.0- | RM项目1.0 | 259-立项阶段 |  |  |  |
| 260 | 6.1.1 | QA辅导 |  | 2.88d | 2012-04-17 09:00 | 2012-04-19 17:00 |  |  | 56.12d | finish no earlier than 2012-04-19 17:00 |  |  |  | RM项目1.0- | RM项目1.0 | 260-QA辅导 |  |  |  |
| 261 | 6.1.2 | **QA检查** |  | 11d | 2012-04-19 17:00 A | 2012-05-04 17:00 | 5% | 10.41d | 45.12d |  |  | 16.04h | 0.04h | RM项目1.0- | RM项目1.0 | 261-QA检查 |  |  |  |
| 262 | 6.1.2.1 | 立项阶段流程检查 |  | 6d | 2012-04-19 17:00 | 2012-04-27 17:00 |  |  | 50.12d | finish no earlier than 2012-04-27 17:00 |  | 4h |  | RM项目1.0- | RM项目1.0 | 262-立项阶段流程检查 |  |  |  |
| 263 | 6.1.2.2 | 客户需求分析评审检查 |  | 6.12d | 2012-04-19 17:00 A | 2012-04-27 18:00 |  | 6.12d | 50d | finish no earlier than 2012-04-28 17:00 |  | 2h |  | RM项目1.0- | RM项目1.0 | 263-客户需求分析评审检查 | ܁D | ܁F |  |
| 264 | 6.1.2.3 | 市场可行性分析评审检查 |  | 7d | 2012-04-19 17:00 | 2012-04-30 17:00 |  |  | 49.12d | start no earlier than 2012-04-19 17:00 |  | 2h |  | RM项目1.0- | RM项目1.0 | 264-市场可行性分析评审检查 |  |  |  |
| 265 | 6.1.2.4 | 技术可行性分析评审检查 |  | 7d | 2012-04-19 17:00 | 2012-04-30 17:00 |  |  | 49.12d | start no earlier than 2012-04-19 17:00 |  | 2h |  | RM项目1.0- | RM项目1.0 | 265-技术可行性分析评审检查 |  |  |  |
| 266 | 6.1.2.5 | 项目立项报告评审检查 |  | 7d | 2012-04-19 17:00 | 2012-04-30 17:00 |  |  | 49.12d | start no earlier than 2012-04-19 17:00 |  | 2h |  | RM项目1.0- | RM项目1.0 | 266-项目立项报告评审检查 |  |  |  |
| 267 | 6.1.2.6 | 检查结果反馈、确认 |  | 0.25d | 2012-05-03 08:00 A | 2012-05-03 11:00 |  | 0.25d | 46.75d | finish no earlier than 2010-07-15 17:00 |  | 4h |  | RM项目1.0- | RM项目1.0 | 267-检查结果反馈、确认 | ܁D | ܁F |  |
| 268 | 6.1.2.7 | 不符合项跟踪、验证 |  | 1.88d | 2012-05-03 08:00 A | 2012-05-04 17:00 A | 100% |  |  | finish no earlier than 2012-05-03 08:00 |  | 0.04h | 0.04h | RM项目1.0- | RM项目1.0 | 268-不符合项跟踪、验证 | ܁D | ܁F |  |
| 269 | 6.1.3 | 立项基线配置检查 |  | 1.88d? | 2012-05-03 09:00 | 2012-05-04 17:00 |  |  | 45.12d | start no earlier than 2012-05-03 08:00 |  |  |  | RM项目1.0- | RM项目1.0 | 269-立项基线配置检查 |  |  |  |
| 270 | 6.1.4 | QA工作报告编制 |  | 1.88d | 2012-05-09 09:00 | 2012-05-10 17:00 |  |  | 41.12d | start no earlier than 2012-05-09 08:00 |  | 4h |  | RM项目1.0- | RM项目1.0 | 270-QA工作报告编制 |  |  | ܁5 |
| 271 | 6.2 | **迭代开发** |  | 47.88d | 2012-04-26 09:00 A | 2012-06-27 17:00 | 2% | 47.13d | 4.12d |  |  | 52h | 4h | RM项目1.0- | RM项目1.0 | 271-迭代开发 |  |  |  |
| 272 | 6.2.1 | **第1迭代** |  | 47.88d | 2012-04-26 09:00 A | 2012-06-27 17:00 | 1% | 47.27d | 4.12d |  |  | 48h | 4h | RM项目1.0- | RM项目1.0 | 272-第1迭代 |  |  |  |
| 273 | 6.2.1.1 | 编制《QA工作计划》 |  | 2d | 2012-04-27 08:00 A | 2012-04-30 18:00 |  | 2d | 49d | finish no earlier than 2012-04-28 17:00 |  | 4h |  | RM项目1.0- | RM项目1.0 | 273-编制《QA工作计划》 | ܁D | ܁F | ܁5 |
| 274 | 6.2.1.2 | 评审《QA工作计划》 |  | 0.5d | 2012-04-28 08:00 A | 2012-04-30 14:00 | 25% | 0.38d | 49.5d | start no earlier than 2010-07-16 08:00 |  | 4h | 1h | RM项目1.0- | RM项目1.0 | 274-评审《QA工作计划》 | ܁D | ܁F |  |
| 275 | 6.2.1.3 | 辅助项目经理进行项目裁剪、估算、计划、评审、配置等 | milestone | 0d | 2012-04-28 08:00 A | 2012-04-28 08:00 A | 100% |  |  | finish no earlier than 2012-04-28 08:00 |  |  |  | RM项目1.0- | RM项目1.0 | 275-辅助项目经理进行项目裁剪、估算、计划、评审、配置等 | ܁D | ܁F |  |
| 276 | 6.2.1.4 | QA辅导 |  | 5.88d | 2012-04-27 09:00 | 2012-05-04 17:00 |  |  | 45.12d | finish no earlier than 2012-05-04 17:00 |  | 4h |  | RM项目1.0- | RM项目1.0 | 276-QA辅导 |  |  |  |

| ID | WBS | Task | Type | Duration | Start | Finish | Complete | Remaining | Total slack | Constraint | Work | Actual work | 配置项名称 | 项目标题 | 任务 | 新产品可裁剪 | 产品升级可裁剪 | 是否工作包 |
| --- | --- | --- | --- | --- | --- | --- | --- | --- | --- | --- | --- | --- | --- | --- | --- | --- | --- | --- |
| 277 | 6.2.1.5 | **QA检查** |  | 27.5d | 2012-04-26 09:00 A | 2012-05-31 14:00 | 11% | 24.55d | 24.5d |  | 28h | 3h | RM项目1.0- | RM项目1.0 | 277-QA检查 |  |  |  |
| 278 | 6.2.1.5.1 | 迭代开发流程检查 |  | 0.5d | 2012-04-26 09:00 | 2012-04-26 14:00 |  |  | 51.5d | start no earlier than 2012-04-26 09:00 | 4h |  | RM项目1.0- | RM项目1.0 | 278-迭代开发流程检查 |  |  |  |
| 279 | 6.2.1.5.2 | 用户故事评审检查 |  | 0.5d | 2012-04-26 09:00 | 2012-04-26 14:00 |  |  | 51.5d | start no earlier than 2012-04-26 08:00 | 4h |  | RM项目1.0- | RM项目1.0 | 279-用户故事评审检查 |  |  |  |
| 280 | 6.2.1.5.3 | 概要设计评审检查 | milestone | 0d | 2012-05-03 08:00 A | 2012-05-03 08:00 A | 100% |  |  | finish no earlier than 2012-04-26 09:00 |  |  | RM项目1.0- | RM项目1.0 | 280-概要设计评审检查 | ܁D | ܁F |  |
| 281 | 6.2.1.5.4 | 测试方案评审检查 |  | 0.5d | 2012-05-09 09:00 | 2012-05-09 14:00 |  |  | 42.5d | start no earlier than 2012-05-09 08:30 | 4h |  | RM项目1.0- | RM项目1.0 | 281-测试方案评审检查 |  |  |  |
| 282 | 6.2.1.5.5 | 编码活动检查 |  | 0.5d | 2012-05-03 08:00 A | 2012-05-03 14:00 | 25% | 0.38d | 46.5d | finish no earlier than 2010-09-14 17:00 | 4h | 1h | RM项目1.0- | RM项目1.0 | 282-编码活动检查 | ܁D | ܁F |  |
| 283 | 6.2.1.5.6 | 测试用例评审检查 |  | 0.5d | 2012-05-09 08:30 A | 2012-05-09 14:00 | 50% | 0.25d | 42.5d |  | 4h | 2h | RM项目1.0- | RM项目1.0 | 283-测试用例评审检查 | ܁D | ܁F |  |
| 284 | 6.2.1.5.7 | 测试报告评审检查 |  | 0.5d | 2012-05-31 09:00 | 2012-05-31 14:00 |  |  | 24.5d | start no earlier than 2012-05-31 08:00 | 4h |  | RM项目1.0- | RM项目1.0 | 284-测试报告评审检查 |  |  |  |
| 285 | 6.2.1.5.8 | 检查结果反馈、确认 |  | 0.25d | 2012-05-31 09:00 A | 2012-05-31 11:00 |  | 0.25d | 24.75d | finish no earlier than 2010-09-14 17:00 | 2h |  | RM项目1.0- | RM项目1.0 | 285-检查结果反馈、确认 | ܁D | ܁F |  |
| 286 | 6.2.1.5.9 | 不符合项跟踪、验证 |  | 0.25d | 2012-05-31 09:00 A | 2012-05-31 11:00 |  | 0.25d | 24.75d | start no earlier than 2010-09-15 08:00 | 2h |  | RM项目1.0- | RM项目1.0 | 286-不符合项跟踪、验证 | ܁D | ܁F |  |
| 287 | 6.2.1.6 | 迭代配置检查 |  | 20.88d | 2012-05-31 09:00 | 2012-06-27 17:00 |  |  | 4.12d | start no earlier than 2012-05-31 09:00 | 4h |  | RM项目1.0- | RM项目1.0 | 287-迭代配置检查 |  |  |  |
| 288 | 6.2.1.7 | QA工作报告编制 |  | 6.88d | 2012-05-25 08:00 A | 2012-06-01 17:00 |  | 6.88d | 23.12d | finish no earlier than 2012-06-01 17:00 | 4h |  | RM项目1.0- | RM项目1.0 | 288-QA工作报告编制 | ܁D | ܁F | ܁5 |
| 289 | 6.2.2 | **第2迭代** |  | 43.88d | 2012-05-02 09:00 A | 2012-06-27 17:00 | 2% | 43.03d | 4.12d |  | 4h |  | RM项目1.0- | RM项目1.0 | 289-第2迭代 |  |  |  |
| 290 | 6.2.2.1 | 编制《QA工作计划》 |  | 0.5d | 2012-05-18 08:00 A | 2012-05-18 14:00 |  | 0.5d | 34.5d | start no earlier than 2010-07-16 08:00 |  |  | RM项目1.0- | RM项目1.0 | 290-编制《QA工作计划》 | ܁D | ܁F | ܁5 |
| 291 | 6.2.2.2 | 评审《QA工作计划》 |  | 0.5d | 2012-05-21 08:00 A | 2012-05-21 14:00 | 25% | 0.38d | 33.5d | start no earlier than 2010-07-16 08:00 |  |  | RM项目1.0- | RM项目1.0 | 291-评审《QA工作计划》 | ܁D | ܁F |  |
| 292 | 6.2.2.3 | 辅助项目经理进行项目裁剪、估算、计划、评审、配置等 |  | 0.25d | 2012-05-21 08:00 A | 2012-05-21 11:00 |  | 0.25d | 33.75d | start no earlier than 2010-07-16 08:00 |  |  | RM项目1.0- | RM项目1.0 | 292-辅助项目经理进行项目裁剪、估算、计划、评审、配置等 | ܁D | ܁F |  |
| 293 | 6.2.2.4 | QA辅导 |  | 3.88d | 2012-05-21 09:00 | 2012-05-24 17:00 |  |  | 30.12d | finish no earlier than 2012-05-24 17:00 |  |  | RM项目1.0- | RM项目1.0 | 293-QA辅导 |  |  |  |
| 294 | 6.2.2.5 | **QA检查** |  | 42.5d | 2012-05-02 09:00 A | 2012-06-26 14:00 | 3% | 41.32d | 5.5d |  |  |  | RM项目1.0- | RM项目1.0 | 294-QA检查 |  |  |  |
| 295 | 6.2.2.5.1 | 迭代开发流程检查 |  | 0.5d | 2012-05-02 09:00 | 2012-05-02 14:00 |  |  | 47.5d | start no earlier than 2012-05-02 08:00 |  |  | RM项目1.0- | RM项目1.0 | 295-迭代开发流程检查 |  |  |  |
| 296 | 6.2.2.5.2 | 用户故事评审检查 |  | 0.5d | 2012-05-03 09:00 | 2012-05-03 14:00 |  |  | 46.5d | start no earlier than 2012-05-03 08:00 |  |  | RM项目1.0- | RM项目1.0 | 296-用户故事评审检查 |  |  |  |
| 297 | 6.2.2.5.3 | 概要设计评审检查 |  | 0.5d | 2012-05-04 08:00 A | 2012-05-04 14:00 | 25% | 0.38d | 45.5d | finish no earlier than 2010-09-14 17:00 |  |  | RM项目1.0- | RM项目1.0 | 297-概要设计评审检查 | ܁D | ܁F |  |
| 298 | 6.2.2.5.4 | 测试方案评审检查 |  | 0.5d | 2012-05-07 09:00 | 2012-05-07 14:00 |  |  | 44.5d | start no earlier than 2012-05-07 08:00 |  |  | RM项目1.0- | RM项目1.0 | 298-测试方案评审检查 |  |  |  |
| 299 | 6.2.2.5.5 | 编码活动检查 |  | 0.5d | 2012-05-08 08:00 A | 2012-05-08 14:00 | 25% | 0.38d | 43.5d | finish no earlier than 2010-09-14 17:00 |  |  | RM项目1.0- | RM项目1.0 | 299-编码活动检查 | ܁D | ܁F |  |
| 300 | 6.2.2.5.6 | 测试用例评审检查 |  | 0.5d | 2012-05-09 08:00 A | 2012-05-09 14:00 | 50% | 0.25d | 42.5d |  |  |  | RM项目1.0- | RM项目1.0 | 300-测试用例评审检查 | ܁D | ܁F |  |
| 301 | 6.2.2.5.7 | 测试报告评审检查 |  | 14.5d | 2012-06-06 09:00 | 2012-06-26 14:00 |  |  | 5.5d | start no earlier than 2012-06-06 08:30 |  |  | RM项目1.0- | RM项目1.0 | 301-测试报告评审检查 |  |  |  |
| 302 | 6.2.2.5.8 | 检查结果反馈、确认 |  | 0.25d | 2012-06-14 08:30 A | 2012-06-14 11:00 |  | 0.25d | 13.75d | finish no earlier than 2012-06-26 11:00 |  |  | RM项目1.0- | RM项目1.0 | 302-检查结果反馈、确认 | ܁D | ܁F |  |
| 303 | 6.2.2.5.9 | 不符合项跟踪、验证 |  | 0.25d | 2012-06-14 08:30 A | 2012-06-14 11:00 |  | 0.25d | 13.75d | finish no earlier than 2012-06-26 11:00 |  |  | RM项目1.0- | RM项目1.0 | 303-不符合项跟踪、验证 | ܁D | ܁F |  |
| 304 | 6.2.2.6 | 迭代配置检查 |  | 8.88d | 2012-06-15 09:00 | 2012-06-27 17:00 |  |  | 4.12d | start no earlier than 2012-06-15 08:30 | 4h |  | RM项目1.0- | RM项目1.0 | 304-迭代配置检查 |  |  |  |
| 305 | 6.2.2.7 | QA工作报告编制 |  | 0.5d | 2012-06-20 08:00 A | 2012-06-20 14:00 |  | 0.5d | 9.5d | finish no earlier than 2012-06-20 14:00 |  |  | RM项目1.0- | RM项目1.0 | 305-QA工作报告编制 | ܁D | ܁F | ܁5 |

| ID | WBS | Task | Duration | Start | Finish | Predecessors | Remaining | Total slack | Free slack | Constraint | 配置项名称 | 项目标题 | 任务 | 是否工作包 | 新产品可裁剪 | 产品升级可裁剪 |
| --- | --- | --- | --- | --- | --- | --- | --- | --- | --- | --- | --- | --- | --- | --- | --- | --- |
| 306 | 6.3 | **验收发布阶段** | 6d? | 2012-06-22 09:00 A | 2012-06-29 18:00 |  | 6d? | 2d |  |  | RM项目1.0- | RM项目1.0 | 306-验收发布阶段 |  |  |  |
| 307 | 6.3.1 | QA计划维护调整 | 0.5d | 2012-06-22 09:00 | 2012-06-22 14:00 |  |  | 7d | 2.88d | start no earlier than 2012-06-22 08:00 | RM项目1.0- | RM项目1.0 | 307-QA计划维护调整 |  |  |  |
| 308 | 6.3.2 | QA辅导 | 0.5d | 2012-06-27 13:00 | 2012-06-27 17:00 | 307 |  | 4.12d |  | finish no earlier than 2012-06-27 17:00 | RM项目1.0- | RM项目1.0 | 308-QA辅导 |  |  |  |
| 309 | 6.3.3 | **QA检查** | 5.5d | 2012-06-22 09:00 | 2012-06-29 14:00 |  |  | 2.5d |  |  | RM项目1.0- | RM项目1.0 | 309-QA检查 |  |  |  |
| 310 | 6.3.3.1 | 验收发布阶段流程检查 | 0.5d | 2012-06-22 09:00 | 2012-06-22 14:00 |  |  | 7.5d |  | start no earlier than 2012-06-22 09:00 | RM项目1.0- | RM项目1.0 | 310-验收发布阶段流程检查 |  |  |  |
| 311 | 6.3.3.2 | 用户文档评审检查 | 0.5d | 2012-06-22 09:00 | 2012-06-22 14:00 |  |  | 7.5d |  | start no earlier than 2012-06-22 09:00 | RM项目1.0- | RM项目1.0 | 311-用户文档评审检查 |  |  |  |
| 312 | 6.3.3.3 | 客户培训活动检查 | 0.5d | 2012-06-26 09:00 | 2012-06-26 14:00 |  |  | 5.5d |  | start no earlier than 2012-06-26 08:00 | RM项目1.0- | RM项目1.0 | 312-客户培训活动检查 |  |  |  |
| 313 | 6.3.3.4 | 试运行活动检查 | 0.5d | 2012-06-26 09:00 | 2012-06-26 14:00 |  |  | 5.5d |  | start no earlier than 2012-06-26 09:00 | RM项目1.0- | RM项目1.0 | 313-试运行活动检查 |  |  |  |
| 314 | 6.3.3.5 | 验收测试活动检查 | 0.5d | 2012-06-26 14:00 | 2012-06-26 18:00 | 315 |  | 4.5d | 0d | start no earlier than 2012-06-26 09:00 | RM项目1.0- | RM项目1.0 | 314-验收测试活动检查 |  |  |  |
| 315 | 6.3.3.6 | 缺陷处理检查 | 0.5d | 2012-06-26 09:00 | 2012-06-26 14:00 |  |  | 4.5d | 0d | start no earlier than 2012-06-26 09:00 | RM项目1.0- | RM项目1.0 | 315-缺陷处理检查 |  |  |  |
| 316 | 6.3.3.7 | 验收报告检查 | 0.5d | 2012-06-27 09:00 | 2012-06-27 14:00 | 314 |  | 4.5d |  | start no earlier than 2012-06-26 09:00 | RM项目1.0- | RM项目1.0 | 316-验收报告检查 |  |  |  |
| 317 | 6.3.3.8 | 系统发布活动检查 | 0.5d | 2012-06-26 09:00 | 2012-06-26 14:00 |  |  | 5.5d |  | start no earlier than 2012-06-26 09:00 | RM项目1.0- | RM项目1.0 | 317-系统发布活动检查 |  |  |  |
| 318 | 6.3.3.9 | 检查结果反馈、确认 | 0.5d | 2012-06-29 09:00 | 2012-06-29 14:00 |  |  | 2.5d |  | start no earlier than 2012-06-29 08:00 | RM项目1.0- | RM项目1.0 | 318-检查结果反馈、确认 |  |  |  |
| 319 | 6.3.3.10 | 不符合项跟踪、验证 | 0.5d | 2012-06-29 09:00 | 2012-06-29 14:00 |  |  | 2.5d |  | start no earlier than 2012-06-29 09:00 | RM项目1.0- | RM项目1.0 | 319-不符合项跟踪、验证 |  |  |  |
| 320 | 6.3.4 | 发布基线配置检查 | 1d? | 2012-06-29 09:00 | 2012-06-29 18:00 |  |  | 2d |  | start no earlier than 2012-06-29 09:00 | RM项目1.0- | RM项目1.0 | 320-发布基线配置检查 |  |  |  |
| 321 | 6.3.5 | QA工作报告编制 | 0.5d | 2012-06-29 09:00 A | 2012-06-29 14:00 |  | 0.5d | 2.5d |  | finish no earlier than 2012-03-22 18:00 | RM项目1.0- | RM项目1.0 | 321-QA工作报告编制 | ܁5 | ܁D | ܁F |
